# TORRE SIERRA V2

How a schedule from Primavera P6 changed from version to version. A marks actual dates.

## Version 1 (data date 2026-07-16, saved 2026-09-02, file torre_sierra_v2.xer)

Note of the change: Initial release DCMA ESM Manager v0.3.2

| ID | WBS | Task | Duration | Start | Finish | Predecessors | Complete | Total float | Constraint |
| --- | --- | --- | --- | --- | --- | --- | --- | --- | --- |
|  | 00HIT | **00. Hitos** |  | 2025-01-13 | 2028-04-24 |  |  |  |  |
| A1000 |  | Inicio Proyecto | 0d | 2025-01-13 A | 2025-01-13 A |  | 100% |  | start on or after 2025-01-13 |
| A1040 |  | Inicio Exc. & Relleno | 0d | 2025-01-13 A | 2025-01-13 A | A1000 SS | 100% |  |  |
| A1060 |  | Inicio Pilotaje | 0d | 2025-01-27 A | 2025-01-27 A | A1040 SS+10d | 100% |  |  |
| A1070 |  | Fin Pilotaje | 0d | 2025-07-17 A | 2025-07-17 A | A1970 FF | 100% |  |  |
| A1010 |  | 20% Avance | 0d | 2025-08-12 A | 2025-08-12 A | A1970 SS+130d | 100% |  |  |
| A1080 |  | Inicio Cimentacion | 0d | 2025-08-27 A | 2025-08-27 A | A1060 SS+140d | 100% |  |  |
| A1090 |  | Fin Cimentacion | 0d | 2025-09-25 A | 2025-09-25 A | A2040 FF | 100% |  |  |
| A1100 |  | Inicio Estructura | 0d | 2025-09-25 A | 2025-09-25 A | A1090 | 100% |  |  |
| A1050 |  | Fin Exc. & Relleno | 0d | 2026-02-12 A | 2026-02-12 A | A1960 FF | 100% |  |  |
| A1160 |  | Inicio Apartamento | 0d | 2026-05-08 A | 2026-05-08 A | A2130 | 100% |  | mandatory start 2026-05-08 |
| A1170 |  | Inicio Obra Gris | 0d | 2026-05-08 A | 2026-05-08 A | A1160 SS | 100% |  |  |
| A1030 |  | UMO Fin | 0d | 2026-07-17 | 2026-07-17 |  |  | 409d |  |
| A1400 |  | Inicio Fachada | 0d | 2026-07-17 | 2026-07-17 | A2190 |  | 0d |  |
| A1540 |  | Inicio Punto Fijo | 0d | 2026-07-17 | 2026-07-17 | A2160 |  | 19.4d |  |
| A1550 |  | Inicio Punto Fijo Obra Gris | 0d | 2026-07-17 | 2026-07-17 | A1540 SS |  | 19.4d |  |
| A1190 |  | Inicio Estuco y Pintura-01 | 0d | 2026-08-04 | 2026-08-04 | A14920 |  | 31.93d |  |
| A1230 |  | Inicio Cielo Raso | 0d | 2026-09-03 | 2026-09-03 | A3370 |  | 31.93d |  |
| A19590 |  | Inicio Dinteles | 0d | 2026-09-14 | 2026-09-14 | A18120 SS |  | 223.93d |  |
| A1250 |  | Inicio Laminado Pintura Cielo Raso | 0d | 2026-10-06 | 2026-10-06 | A18150 |  | 31.93d |  |
| A1310 |  | Inicio Estuco y Pintura-02 | 0d | 2026-11-09 | 2026-11-09 | A4800 FS-20d |  | 31.93d |  |
| A19790 |  | Inicio Ventaneria | 0d | 2026-11-18 | 2026-11-18 | A5710 |  | 31.93d |  |
| A1330 |  | Inicio Inst. elec-comun | 0d | 2026-12-10 | 2026-12-10 | A6580 FS-5d |  | 267.93d |  |
| A19970 |  | Inicio Carp. Madera | 0d | 2026-12-10 | 2026-12-10 | A6580 FS-5d |  | 168.93d |  |
| A1110 |  | Fin Estructura | 0d | 2027-01-26 | 2027-01-26 | A2350 FF, A2340 FF |  | 49.9d |  |
| A1120 |  | Inicio Cubierta Estructura | 0d | 2027-01-26 | 2027-01-26 | A1110 |  | 49.9d |  |
| A1740 |  | Inicio CTO | 0d | 2027-01-26 | 2027-01-26 | A1110 |  | 281.9d |  |
| A1290 |  | Inicio Ceramica y Enchapes | 0d | 2027-01-27 | 2027-01-27 | A19650 |  | 31.93d |  |
| A1210 |  | Inicio Instalacion Soportes | 0d | 2027-01-28 | 2027-01-28 | A19370 |  | 223.93d |  |
| A1750 |  | Fin CTO | 0d | 2027-02-09 | 2027-02-09 | A14200 FF |  | 281.9d |  |
| A1020 |  | 70% Avance | 0d | 2027-02-15 | 2027-02-15 | A3830, A2330 |  | 277.93d |  |
| A1130 |  | Fin Cubierta Estructura | 0d | 2027-02-25 | 2027-02-25 | A2380 FF |  | 49.9d |  |
| A1140 |  | Inicio Cubierta Acabados | 0d | 2027-02-25 | 2027-02-25 | A1130 |  | 183.9d |  |
| A20730 |  | Inicio Mesones | 0d | 2027-04-01 | 2027-04-01 | A19900 FS-6d |  | 168.93d |  |
| A1700 |  | Inicio Foso | 0d | 2027-04-01 | 2027-04-01 | A1130 FS+20d |  | 49.9d |  |
| A1370 |  | Inicio Barandas Divisiones Banos y Espejos | 0d | 2027-04-07 | 2027-04-07 | A20710 |  | 168.93d |  |
| A19600 |  | Fin Dinteles | 0d | 2027-04-26 | 2027-04-26 | A19560 FF |  | 232.93d |  |
| A1220 |  | Fin Instalacion Soportes | 0d | 2027-05-07 | 2027-05-07 | A15160 FF |  | 223.93d |  |
| A1350 |  | Inicio Dotacion | 0d | 2027-05-20 | 2027-05-20 | A21020 |  | 168.93d |  |
| A22030 |  | Inicio Estuco y Pintura-03 | 0d | 2027-06-09 | 2027-06-09 | A21460 FS-10d |  | 168.93d |  |
| A22090 |  | Inicio Detallado y Aseo Apartamentos | 0d | 2027-06-15 | 2027-06-15 | A21890 |  | 168.93d |  |
| A1240 |  | Fin Cielo Raso | 0d | 2027-06-23 | 2027-06-23 | A15210 |  | 193.93d |  |
| A1260 |  | Fin Laminado Pintura Cielo Raso | 0d | 2027-06-23 | 2027-06-23 | A15210 FF |  | 193.93d |  |
| A1180 |  | Fin Obra Gris | 0d | 2027-06-25 | 2027-06-25 | A18110, A1030 FF |  | 191.7d |  |
| A1150 |  | Fin Cubierta Acabados | 0d | 2027-07-08 | 2027-07-08 | A2460 FF |  | 183.9d |  |
| A1200 |  | Fin Estuco y Pintura-01 | 0d | 2027-07-12 | 2027-07-12 | A15140 FF |  | 181.33d |  |
| A1300 |  | Fin Ceramica y Enchapes | 0d | 2027-08-03 | 2027-08-03 | A15250 FF, A15290 FF, A15240 FF, A15270 FF, A15260 FF, A15280 FF |  | 166.93d |  |
| A19800 |  | Fin Ventaneria | 0d | 2027-08-03 | 2027-08-03 | A15300 FF |  | 166.93d |  |
| A1320 |  | Fin Estuco y Pintura-02 | 0d | 2027-08-17 | 2027-08-17 | A19780, A6940 FF |  | 157.93d |  |
| A1340 |  | Fin Inst. elec-comun | 0d | 2027-09-07 | 2027-09-07 | A7310, A7350, A15310, A7550, A7390, A7110 SS, A7430, A7470, A7110, A7150, A7070, A7230, A7190, A7270, A7510 |  | 142.93d |  |
| A19980 |  | Fin Carp. Madera | 0d | 2027-10-26 | 2027-10-26 | A20700 FF |  | 108.93d |  |
| A20740 |  | Fin Mesones | 0d | 2027-11-03 | 2027-11-03 | A20820, A20780, A20760, A20720, A20890, A20950, A21010 FF, A20930, A20910, A20870, A20850, A20800, A20970, A20990 |  | 103.93d |  |
| A1710 |  | Fin Foso | 0d | 2027-11-24 | 2027-11-24 | A14100 FF |  | 49.9d |  |
| A1720 |  | Inicio Instalacion Ascensor | 0d | 2027-11-24 | 2027-11-24 | A1710 |  | 49.9d |  |
| A1380 |  | Fin Barandas Divisiones Banos y Espejos | 0d | 2027-11-29 | 2027-11-29 | A21250, A21240, A21210, A21220, A21090, A21100, A21390, A21400, A21180, A21190, A21160, A21150, A21060, A21070, A21330, A21340, A21310, A21300, A21360, A21370, A21280, A21270, A21030, A21120, A21130, A21040, A21430 FF, A21420 FF |  | 86.93d |  |
| A1360 |  | Fin Dotacion | 0d | 2028-01-27 | 2028-01-27 | A21880 |  | 56.93d |  |
| A1390 |  | Fin Apartamento | 0d | 2028-01-27 | 2028-01-27 | A1300, A1380, A1360, A1340, A1320, A1240, A1260, A1220, A1200, A1180 |  | 56.93d |  |
| A1730 |  | Fin Instalacion Ascensor | 0d | 2028-02-07 | 2028-02-07 | A14180 FF |  | 49.9d |  |
| A22040 |  | Fin Estuco y Pintura-03 | 0d | 2028-02-10 | 2028-02-10 | A22020 FF, A22000, A21940, A21970, A21900, A21910, A22010, A21960, A21930, A21950, A21990, A21920, A21980, A21890 |  | 46.93d |  |
| A1530 |  | Fin Fachada | 0d | 2028-02-18 | 2028-02-18 | A23820 FF, A23180 FF+25d |  | 0d |  |
| A1760 |  | Inicio Entregas Calidad | 0d | 2028-02-21 | 2028-02-21 | A1530, A1010, A1020 |  | 40d |  |
| A22100 |  | Fin Detallado y Aseo Apartamentos | 0d | 2028-02-28 | 2028-02-28 | A22360 FF, A22340, A22240, A22300, A22140, A22120, A22260, A22220, A22160, A22200, A22180, A22080, A22320, A22280 |  | 34.93d |  |
| A1770 |  | Entrega Calidad Piso 1 | 0d | 2028-03-06 | 2028-03-06 | A14400 SS |  | 30d |  |
| A1780 |  | Entrega Calidad Piso 2 | 0d | 2028-03-06 | 2028-03-06 | A1770 |  | 30d |  |
| A1790 |  | Entrega Calidad Piso 3 | 0d | 2028-03-10 | 2028-03-10 | A14260 FF |  | 25d |  |
| A1800 |  | Entrega Calidad Piso 4 | 0d | 2028-03-17 | 2028-03-17 | A1790, A14280 FF |  | 20d |  |
| A1560 |  | Fin Punto Fijo Obra Gris | 0d | 2028-03-21 | 2028-03-21 | A27650 |  | 19.4d |  |
| A1690 |  | Fin Punto Fijo | 0d | 2028-03-21 | 2028-03-21 | A1560 |  | 19.4d |  |
| A1810 |  | Entrega Calidad Piso 5 | 0d | 2028-03-27 | 2028-03-27 | A1800, A14300 FF |  | 15d |  |
| A1820 |  | Entrega Calidad Piso 6 | 0d | 2028-03-30 | 2028-03-30 | A14320 FF, A1810 |  | 12d |  |

| ID | WBS | Task | Duration | Start | Finish | Predecessors | Complete | Total float | Constraint |
| --- | --- | --- | --- | --- | --- | --- | --- | --- | --- |
| A1830 |  | Entrega Calidad Piso 7 | 0d | 2028-04-05 | 2028-04-05 | A14340 FF, A1820 |  | 8d |  |
| A1840 |  | Entrega Calidad Piso 8 | 0d | 2028-04-05 | 2028-04-05 | A14360 FF, A1830 |  | 8d |  |
| A1850 |  | Entrega Calidad Piso 9 | 0d | 2028-04-05 | 2028-04-05 | A14380 FF, A1840 |  | 8d |  |
| A1860 |  | Entrega Calidad Piso 10 | 0d | 2028-04-05 | 2028-04-05 | A14400 FF, A1850 |  | 8d |  |
| A1870 |  | Entrega Calidad Piso 11 | 0d | 2028-04-05 | 2028-04-05 | A14420 FF, A1860 |  | 8d |  |
| A1880 |  | Entrega Calidad Piso 12 | 0d | 2028-04-05 | 2028-04-05 | A14440 FF, A1870 |  | 8d |  |
| A1890 |  | Entrega Calidad Piso 13 | 0d | 2028-04-05 | 2028-04-05 | A14460 FF, A1880 |  | 8d |  |
| A1900 |  | Entrega Calidad Piso 14 | 0d | 2028-04-05 | 2028-04-05 | A14480 FF, A1890 |  | 8d |  |
| A1910 |  | Entrega Calidad Piso 15 | 0d | 2028-04-24 | 2028-04-24 | A14500 FF, A1900 |  | 0d |  |
| A1920 |  | Entrega Calidad Piso 16 | 0d | 2028-04-24 | 2028-04-24 | A1910, A14520 FF |  | 0d |  |
| A1930 |  | Fin Entrega Calidad | 0d | 2028-04-24 | 2028-04-24 | A1690, A1730, A1390, A1920 |  | 0d |  |
| A1940 |  | Fin Proyecto | 0d | 2028-04-24 | 2028-04-24 | A1150 FF, A22100 FF, A1930 FF, A1750 FF |  | 0d |  |
|  | 01EXC_REL | **01. Exc. & Relleno** |  | 2025-01-13 | 2025-02-11 |  |  |  |  |
| A1950 |  | Conformacion mecanica terreno | 11d | 2025-01-13 A | 2025-01-27 A | A1040 SS | 100% |  |  |
| A1960 |  | Capa N° -Relleno Seleccionado (Aprobada) | 11d | 2025-01-28 A | 2025-02-11 A | A1950 | 100% |  |  |
|  | 02PIL | **02. Pilotaje** |  | 2025-01-27 | 2025-07-16 |  |  |  |  |
| A1970 |  | Ejecución del Pilote | 113d | 2025-01-27 A | 2025-07-16 A | A1060 SS | 100% |  |  |
|  | 05CIM | **03. Cimentacion** |  | 2025-08-27 | 2025-09-24 |  |  |  |  |
| A1980 |  | Descabece pilotes | 4d | 2025-08-27 A | 2025-09-01 A | A1080 SS | 100% |  |  |
| A1990 |  | Amarre placa inferior | 3d | 2025-09-02 A | 2025-09-04 A | A1980 | 100% |  |  |
| A2000 |  | Amarre acero vigas y arranques | 3d | 2025-09-05 A | 2025-09-09 A | A1990 | 100% |  |  |
| A2010 |  | Fundida placa inferior | 3d | 2025-09-10 A | 2025-09-12 A | A2000 | 100% |  |  |
| A2020 |  | Inst. Caseton | 3d | 2025-09-15 A | 2025-09-17 A | A2010 | 100% |  |  |
| A2030 |  | Amarre acero placa contrapiso | 3d | 2025-09-18 A | 2025-09-22 A | A2020 | 100% |  |  |
| A2040 |  | Fundida vigas y placa contrapiso | 2d | 2025-09-23 A | 2025-09-24 A | A2030 | 100% |  |  |
|  | 07EST | **04. Estructura** |  | 2025-09-25 | 2027-01-26 |  |  |  |  |
|  | P01 | **Sotano 2** |  | 2025-09-25 | 2025-11-07 |  |  |  |  |
| A2050 |  | Fundida de placa | 20d | 2025-09-25 A | 2025-10-23 A | A1100 SS | 100% |  |  |
| A14690 |  | Fundida de muros | 10d | 2025-10-09 A | 2025-10-23 A | A2050 SS+10d | 100% |  |  |
| A14700 |  | Fundida de muros | 10d | 2025-10-24 A | 2025-11-07 A | A2050, A14690 SS+10d | 100% |  |  |
|  | P02 | **Sotano 1** |  | 2025-10-24 | 2025-12-01 |  |  |  |  |
| A2060 |  | Fundida de placa | 15d | 2025-10-24 A | 2025-11-14 A | A2050, A14700 SS | 100% |  |  |
| A2070 |  | Fundida de muros | 15d | 2025-11-10 A | 2025-12-01 A | A14700, A2060 SS+5d | 100% |  |  |
|  | P03 | **Piso 03** |  | 2026-01-21 | 2026-02-17 |  |  |  |  |
| A2080 |  | Fundida de placa | 15d | 2026-01-21 A | 2026-02-10 A | A2060, A2070 SS+5d | 100% |  | mandatory start 2026-01-21 |
| A2090 |  | Fundida de muros | 15d | 2026-01-28 A | 2026-02-17 A | A2070, A2080 SS+5d | 100% |  |  |
|  | P04 | **Piso 04** |  | 2026-02-11 | 2026-03-10 |  |  |  |  |
| A2100 |  | Fundida de placa | 15d | 2026-02-11 A | 2026-03-03 A | A2080, A2090 SS+5d | 100% |  |  |
| A2110 |  | Fundida de muros | 15d | 2026-02-18 A | 2026-03-10 A | A2090, A2100 SS+5d | 100% |  |  |
|  | P05 | **Piso 05** |  | 2026-04-09 | 2026-05-07 |  |  |  |  |
| A2120 |  | Fundida de placa | 15d | 2026-04-09 A | 2026-04-29 A | A2110 SS+5d, A2100 | 100% |  |  |
| A2130 |  | Fundida de muros | 15d | 2026-04-16 A | 2026-05-07 A | A2110, A2120 SS+5d | 100% |  |  |
|  | P06 | **Piso 06** |  | 2026-04-30 | 2026-05-20 |  |  |  |  |
| A2140 |  | Fundida de placa | 15d | 2026-04-30 A | 2026-05-20 A | A2130 SS+5d, A2120 | 100% |  |  |
| A2150 |  | Fundida de muros | 15d | 2026-05-08 A | 2026-05-19 A | A2130, A2140 SS+5d | 100% |  |  |
|  | P07 | **Piso 07** |  | 2026-05-12 | 2026-06-12 |  |  |  |  |
| A2160 |  | Fundida de placa | 15d | 2026-05-12 A | 2026-06-05 A | A2140, A2150 SS+5d | 100% |  | mandatory start 2026-05-25 |
| A2170 |  | Fundida de muros | 15d | 2026-05-19 A | 2026-06-12 A | A2150, A2160 SS+5d | 100% |  | mandatory start 2026-06-01 |
|  | P08 | **Piso 08** |  | 2026-06-01 | 2026-07-17 |  |  |  |  |
| A2180 |  | Fundida de placa | 15d | 2026-06-01 A | 2026-06-20 A | A2160, A2170 SS+5d | 100% |  |  |
| A2190 |  | Fundida de muros | 15d | 2026-06-10 A | 2026-07-17 | A2180 SS+5d, A2170 | 100% | 0d |  |
|  | P09 | **Piso 09** |  | 2026-06-23 | 2026-07-27 |  |  |  |  |
| A2200 |  | Fundida de placa | 15d | 2026-06-23 A | 2026-07-17 | A2190 SS+5d, A2180 | 100% | 49.9d |  |
| A2210 |  | Fundida de muros | 15d | 2026-07-02 A | 2026-07-27 | A2200 SS+5d, A2190 | 66% | 49.9d |  |
|  | P10 | **Piso 10** |  | 2026-07-09 | 2026-08-19 |  |  |  |  |
| A2220 |  | Fundida de placa | 15d | 2026-07-09 A | 2026-08-03 | A2210 SS+5d, A2200 | 33% | 52.95d |  |
| A2230 |  | Fundida de muros | 15d | 2026-07-27 | 2026-08-19 | A2220 SS+5d, A2210 |  | 49.9d |  |
|  | P11 | **Piso 11** |  | 2026-08-03 | 2026-09-09 |  |  |  |  |
| A2240 |  | Fundida de placa | 15d | 2026-08-03 | 2026-08-26 | A2230 SS+5d, A2220 |  | 52.9d |  |
| A2250 |  | Fundida de muros | 15d | 2026-08-19 | 2026-09-09 | A2240 SS+5d, A2230 |  | 49.9d |  |
|  | P12 | **Piso 12** |  | 2026-08-26 | 2026-09-30 |  |  |  |  |
| A2260 |  | Fundida de placa | 15d | 2026-08-26 | 2026-09-16 | A2250 SS+5d, A2240 |  | 52.9d |  |
| A2270 |  | Fundida de muros | 15d | 2026-09-09 | 2026-09-30 | A2250, A2260 SS+5d |  | 49.9d |  |
|  | P13 | **Piso 13** |  | 2026-09-16 | 2026-10-22 |  |  |  |  |
| A2280 |  | Fundida de placa | 15d | 2026-09-16 | 2026-10-07 | A2260, A2270 SS+5d |  | 52.9d |  |
| A2290 |  | Fundida de muros | 15d | 2026-09-30 | 2026-10-22 | A2280 SS+5d, A2270 |  | 49.9d |  |
|  | P14 | **Piso 14** |  | 2026-10-07 | 2026-11-13 |  |  |  |  |
| A2300 |  | Fundida de placa | 15d | 2026-10-07 | 2026-10-29 | A2280, A2290 SS+5d |  | 52.9d |  |
| A2310 |  | Fundida de muros | 15d | 2026-10-22 | 2026-11-13 | A2290, A2300 SS+5d |  | 49.9d |  |
|  | P15 | **Piso 15** |  | 2026-10-29 | 2026-12-07 |  |  |  |  |

| ID | WBS | Task | Duration | Start | Finish | Predecessors | Complete | Total float |
| --- | --- | --- | --- | --- | --- | --- | --- | --- |
| A2320 |  | Fundida de placa | 15d | 2026-10-29 | 2026-11-23 | A2300, A2310 SS+5d |  | 52.9d |
| A2330 |  | Fundida de muros | 15d | 2026-11-13 | 2026-12-07 | A2310, A2320 SS+5d |  | 49.9d |
|  | P16 | **Piso 16** |  | 2026-11-23 | 2027-01-26 |  |  |  |
| A14710 |  | Fundida de placa | 12d | 2026-11-23 | 2026-12-10 | A2320, A2330 SS+5d |  | 52.9d |
| A14720 |  | Fundida de muros | 12d | 2026-12-07 | 2027-01-12 | A2330, A14710 SS+5d |  | 49.9d |
| A2340 |  | Fundida de placa | 12d | 2026-12-15 | 2027-01-19 | A14720 SS+5d, A14710 |  | 49.9d |
| A2350 |  | Fundida de muros | 12d | 2026-12-22 | 2027-01-26 | A14720 SS+5d, A2340 SS+5d |  | 49.9d |
|  | 08CUB | **05. Cubierta** |  | 2027-01-26 | 2027-07-08 |  |  |  |
|  | 01CubEst | **01. Cubierta Estructura** |  | 2027-01-26 | 2027-02-25 |  |  |  |
| A2360 |  | Amarre y cama Placa | 15d | 2027-01-26 | 2027-02-16 | A1120 SS |  | 49.9d |
| A2370 |  | Fundida Placa | 15d | 2027-01-28 | 2027-02-18 | A2360 SS+2d |  | 49.9d |
| A2380 |  | Fundida sobrerrecodido ascensores (si aplica) | 5d | 2027-02-18 | 2027-02-25 | A2370 |  | 49.9d |
|  | 02CubAca | **02. Cubierta Acabados** |  | 2027-02-25 | 2027-07-08 |  |  |  |
| A2390 |  | Muros de Antepecho, ductos y cuarto Maquinas | 15d | 2027-02-25 | 2027-03-18 | A1140 SS |  | 183.9d |
| A2400 |  | Inst. ductos ventilacion | 5d | 2027-03-18 | 2027-04-01 | A2390 |  | 183.9d |
| A2410 |  | Panete de muros ductos (Si Aplica) | 15d | 2027-04-01 | 2027-04-22 | A2400 |  | 183.9d |
| A2420 |  | Resanes de cubierta | 15d | 2027-04-22 | 2027-05-14 | A2410 |  | 183.9d |
| A2430 |  | Apantallamiento | 8d | 2027-05-14 | 2027-05-26 | A2420 |  | 183.9d |
| A2440 |  | Impermeabilizacion y prueba estanqueidad | 4d | 2027-05-26 | 2027-06-02 | A2430 |  | 183.9d |
| A2450 |  | Cargue de piso | 18d | 2027-06-02 | 2027-06-29 | A2440 |  | 183.9d |
| A2460 |  | Pintura de muros | 6d | 2027-06-29 | 2027-07-08 | A2450 |  | 183.9d |
|  | 09APT | **06. Apartamentos** |  | 2026-05-15 | 2028-02-28 |  |  |  |
|  | ObrGris | **Obra Gris** |  | 2026-05-15 | 2027-06-25 |  |  |  |
|  | P03 | **Piso 03** |  | 2026-05-15 | 2026-09-30 |  |  |  |
| A16200 |  | Mamposteria Interna | 15d | 2026-05-15 A | 2026-08-05 | A14920 | 95% | 378.08d |
| A2620 |  | Descolg. Prolong. Inst. Electricas | 10d | 2026-06-04 A | 2026-07-17 | A1170 SS | 97% | 31.93d |
| A16220 |  | Pañete Interno y Resanes | 15d | 2026-06-10 A | 2026-08-10 | A16200 FS-2d | 70% | 378.08d |
| A2630 |  | Descolg. Prolong. Inst. hidrosanitarias | 8d | 2026-06-16 A | 2026-07-17 | A2620 SS+6d | 90% | 31.93d |
| A2640 |  | Descolg. Prolong. Inst. Comunicaciones | 8d | 2026-06-24 A | 2026-07-17 | A2630 SS+6d | 99% | 31.93d |
| A14920 |  | Descolg. Prolong. Inst. RCI | 15d | 2026-06-26 A | 2026-08-04 | A2660 SS+6d | 22% | 31.93d |
| A2650 |  | Descolg. Prolong. Inst. Sanitarias | 8d | 2026-07-03 A | 2026-07-22 | A2640 SS+6d | 67% | 31.93d |
| A2660 |  | Descolg. Prolong. HVAC y gas | 8d | 2026-07-06 A | 2026-07-28 | A2650 SS+6d | 20% | 31.93d |
| A16230 |  | Poyos Cocina y Labores | 8d | 2026-08-03 | 2026-08-14 | A16220 FS-4d |  | 378.08d |
| A16210 |  | Sobre Muros | 4d | 2026-08-05 | 2026-08-12 | A16200 |  | 392.58d |
| A16240 |  | Viga Baranda | 10d | 2026-08-10 | 2026-08-25 | A16230 FS-4d |  | 378.08d |
| A16250 |  | Dintel descolgado | 10d | 2026-08-12 | 2026-08-27 | A16240 FS-8d |  | 378.08d |
| A16260 |  | Impermeabilizacion Zonas Humedas | 8d | 2026-08-14 | 2026-08-27 | A16250 FS-8d |  | 378.08d |
| A16280 |  | Afinado de Pisos | 8d | 2026-08-21 | 2026-09-02 | A16260 FS-4d |  | 378.08d |
| A19090 |  | Dinteles Ventana | 4d | 2026-09-14 | 2026-09-18 | A19590 SS |  | 223.93d |
| A19100 |  | Dinteles Puerta Ventana | 4d | 2026-09-18 | 2026-09-24 | A19090 |  | 223.93d |
| A19110 |  | Dintel Balcon | 4d | 2026-09-24 | 2026-09-30 | A19100 |  | 223.93d |
|  | P04 | **Piso 04** |  | 2026-06-15 | 2026-10-22 |  |  |  |
| A16290 |  | Descolg. Prolong. Inst. Electricas | 10d | 2026-06-15 A | 2026-07-27 | A2620 | 50% | 191.7d |
| A16300 |  | Descolg. Prolong. Inst. hidrosanitarias | 8d | 2026-06-15 A | 2026-07-27 | A16290 SS+6d | 31% | 343.7d |
| A16310 |  | Descolg. Prolong. Inst. Comunicaciones | 8d | 2026-06-15 A | 2026-07-24 | A16300 SS+6d | 50% | 343.7d |
| A16320 |  | Descolg. Prolong. Inst. Sanitarias | 8d | 2026-06-16 A | 2026-07-23 | A16310 SS+6d | 61% | 343.7d |
| A16330 |  | Descolg. Prolong. HVAC y gas | 8d | 2026-07-17 | 2026-07-30 | A16320 SS+6d |  | 343.7d |
| A16340 |  | Descolg. Prolong. Inst. RCI | 15d | 2026-07-28 | 2026-08-20 | A16330 SS+6d |  | 343.7d |
| A16350 |  | Mamposteria Interna | 15d | 2026-08-20 | 2026-09-10 | A16340 |  | 343.7d |
| A16370 |  | Pañete Interno y Resanes | 15d | 2026-09-08 | 2026-09-29 | A16350 FS-2d |  | 343.7d |
| A16360 |  | Sobre Muros | 4d | 2026-09-10 | 2026-09-16 | A16350 |  | 368.7d |
| A16380 |  | Poyos Cocina y Labores | 8d | 2026-09-23 | 2026-10-05 | A16370 FS-4d |  | 343.7d |
| A16390 |  | Viga Baranda | 10d | 2026-09-29 | 2026-10-14 | A16380 FS-4d |  | 343.7d |
| A19160 |  | Dinteles Ventana | 4d | 2026-09-30 | 2026-10-06 | A19110 |  | 223.93d |
| A16400 |  | Dintel descolgado | 10d | 2026-10-01 | 2026-10-16 | A16390 FS-8d |  | 343.7d |
| A16410 |  | Impermeabilizacion Zonas Humedas | 8d | 2026-10-05 | 2026-10-16 | A16400 FS-8d |  | 343.7d |
| A19170 |  | Dinteles Puerta Ventana | 4d | 2026-10-06 | 2026-10-13 | A19160 |  | 223.93d |
| A16420 |  | Afinado de Pisos | 8d | 2026-10-09 | 2026-10-22 | A16410 FS-4d |  | 343.7d |
| A19180 |  | Dintel Balcon | 4d | 2026-10-13 | 2026-10-19 | A19170 |  | 223.93d |
|  | P05 | **Piso 05** |  | 2026-06-17 | 2026-12-16 |  |  |  |
| A16470 |  | Descolg. Prolong. Inst. Sanitarias | 12d | 2026-06-17 A | 2026-07-31 | A16460 SS+6d | 61% | 307.7d |
| A16450 |  | Descolg. Prolong. Inst. hidrosanitarias | 12d | 2026-06-17 A | 2026-08-06 | A16440 SS+6d | 31% | 307.7d |
| A16460 |  | Descolg. Prolong. Inst. Comunicaciones | 12d | 2026-07-02 A | 2026-08-04 | A16450 SS+6d | 50% | 307.7d |
| A16440 |  | Descolg. Prolong. Inst. Electricas | 10d | 2026-07-06 A | 2026-08-03 | A16290 | 50% | 191.7d |
| A16480 |  | Descolg. Prolong. HVAC y gas | 12d | 2026-07-27 | 2026-08-13 | A16470 SS+6d |  | 307.7d |
| A16490 |  | Descolg. Prolong. Inst. RCI | 20d | 2026-08-04 | 2026-09-03 | A16480 SS+6d |  | 307.7d |
| A16500 |  | Mamposteria Interna | 20d | 2026-09-03 | 2026-10-01 | A16490 |  | 307.7d |
| A16520 |  | Pañete Interno y Resanes | 20d | 2026-09-29 | 2026-10-28 | A16500 FS-2d |  | 307.7d |
| A16510 |  | Sobre Muros | 4d | 2026-10-01 | 2026-10-07 | A16500 |  | 353.7d |
| A19220 |  | Dinteles Ventana | 4d | 2026-10-19 | 2026-10-23 | A19180 |  | 223.93d |

| ID | WBS | Task | Duration | Start | Finish | Predecessors | Total float |
| --- | --- | --- | --- | --- | --- | --- | --- |
| A16530 |  | Poyos Cocina y Labores | 8d | 2026-10-22 | 2026-11-04 | A16520 FS-4d | 307.7d |
| A19210 |  | Dinteles Puerta Ventana | 4d | 2026-10-23 | 2026-10-29 | A19220 | 223.93d |
| A16540 |  | Viga Baranda | 16d | 2026-10-28 | 2026-11-23 | A16530 FS-4d | 307.7d |
| A19200 |  | Dintel Balcon | 4d | 2026-10-29 | 2026-11-05 | A19210 | 223.93d |
| A16550 |  | Dintel descolgado | 16d | 2026-11-10 | 2026-12-03 | A16540 FS-8d | 307.7d |
| A16560 |  | Impermeabilizacion Zonas Humedas | 8d | 2026-11-23 | 2026-12-03 | A16550 FS-8d | 307.7d |
| A16570 |  | Afinado de Pisos | 12d | 2026-11-27 | 2026-12-16 | A16560 FS-4d | 307.7d |
|  | P06 | **Piso 06** |  | 2026-08-03 | 2027-02-12 |  |  |
| A16580 |  | Descolg. Prolong. Inst. Electricas | 10d | 2026-08-03 | 2026-08-19 | A16440 | 191.7d |
| A16590 |  | Descolg. Prolong. Inst. hidrosanitarias | 12d | 2026-08-12 | 2026-08-31 | A16580 SS+6d | 278.7d |
| A16600 |  | Descolg. Prolong. Inst. Comunicaciones | 12d | 2026-08-21 | 2026-09-08 | A16590 SS+6d | 278.7d |
| A16610 |  | Descolg. Prolong. Inst. Sanitarias | 12d | 2026-08-31 | 2026-09-16 | A16600 SS+6d | 278.7d |
| A16620 |  | Descolg. Prolong. HVAC y gas | 12d | 2026-09-08 | 2026-09-24 | A16610 SS+6d | 278.7d |
| A16630 |  | Descolg. Prolong. Inst. RCI | 20d | 2026-09-16 | 2026-10-15 | A16620 SS+6d | 278.7d |
| A16640 |  | Mamposteria Interna | 20d | 2026-10-15 | 2026-11-13 | A16630 | 278.7d |
| A19270 |  | Dinteles Ventana | 4d | 2026-11-05 | 2026-11-11 | A19200 | 223.93d |
| A19260 |  | Dinteles Puerta Ventana | 4d | 2026-11-11 | 2026-11-18 | A19270 | 223.93d |
| A16660 |  | Pañete Interno y Resanes | 20d | 2026-11-11 | 2026-12-11 | A16640 FS-2d | 278.7d |
| A16650 |  | Sobre Muros | 4d | 2026-11-13 | 2026-11-20 | A16640 | 324.7d |
| A19250 |  | Dintel Balcon | 4d | 2026-11-18 | 2026-11-24 | A19260 | 223.93d |
| A16670 |  | Poyos Cocina y Labores | 8d | 2026-12-04 | 2026-12-17 | A16660 FS-4d | 278.7d |
| A16680 |  | Viga Baranda | 16d | 2026-12-11 | 2027-01-21 | A16670 FS-4d | 278.7d |
| A16690 |  | Dintel descolgado | 16d | 2026-12-23 | 2027-02-02 | A16680 FS-8d | 278.7d |
| A16700 |  | Impermeabilizacion Zonas Humedas | 8d | 2027-01-21 | 2027-02-02 | A16690 FS-8d | 278.7d |
| A16710 |  | Afinado de Pisos | 12d | 2027-01-27 | 2027-02-12 | A16700 FS-4d | 278.7d |
|  | P07 | **Piso 07** |  | 2026-08-19 | 2027-02-26 |  |  |
| A16720 |  | Descolg. Prolong. Inst. Electricas | 10d | 2026-08-19 | 2026-09-02 | A16580 | 191.7d |
| A16730 |  | Descolg. Prolong. Inst. hidrosanitarias | 12d | 2026-08-27 | 2026-09-14 | A16720 SS+6d | 268.7d |
| A16740 |  | Descolg. Prolong. Inst. Comunicaciones | 12d | 2026-09-04 | 2026-09-22 | A16730 SS+6d | 268.7d |
| A16750 |  | Descolg. Prolong. Inst. Sanitarias | 12d | 2026-09-14 | 2026-09-30 | A16740 SS+6d | 268.7d |
| A16760 |  | Descolg. Prolong. HVAC y gas | 12d | 2026-09-22 | 2026-10-08 | A16750 SS+6d | 268.7d |
| A16770 |  | Descolg. Prolong. Inst. RCI | 20d | 2026-09-30 | 2026-10-29 | A16760 SS+6d | 268.7d |
| A16780 |  | Mamposteria Interna | 20d | 2026-10-29 | 2026-11-30 | A16770 | 268.7d |
| A19300 |  | Dinteles Ventana | 4d | 2026-11-24 | 2026-11-30 | A19250 | 223.93d |
| A16800 |  | Pañete Interno y Resanes | 20d | 2026-11-26 | 2027-01-13 | A16780 FS-2d | 268.7d |
| A19290 |  | Dinteles Puerta Ventana | 4d | 2026-11-30 | 2026-12-04 | A19300 | 223.93d |
| A16790 |  | Sobre Muros | 4d | 2026-11-30 | 2026-12-04 | A16780 | 314.7d |
| A19280 |  | Dintel Balcon | 4d | 2026-12-04 | 2026-12-11 | A19290 | 223.93d |
| A16810 |  | Poyos Cocina y Labores | 8d | 2026-12-21 | 2027-01-19 | A16800 FS-4d | 268.7d |
| A16820 |  | Viga Baranda | 16d | 2027-01-13 | 2027-02-04 | A16810 FS-4d | 268.7d |
| A16830 |  | Dintel descolgado | 16d | 2027-01-25 | 2027-02-16 | A16820 FS-8d | 268.7d |
| A16840 |  | Impermeabilizacion Zonas Humedas | 8d | 2027-02-04 | 2027-02-16 | A16830 FS-8d | 268.7d |
| A16850 |  | Afinado de Pisos | 12d | 2027-02-10 | 2027-02-26 | A16840 FS-4d | 268.7d |
|  | P08 | **Piso 08** |  | 2026-09-02 | 2027-03-12 |  |  |
| A16860 |  | Descolg. Prolong. Inst. Electricas | 10d | 2026-09-02 | 2026-09-16 | A16720 | 191.7d |
| A16870 |  | Descolg. Prolong. Inst. hidrosanitarias | 12d | 2026-09-10 | 2026-09-28 | A16860 SS+6d | 258.7d |
| A16880 |  | Descolg. Prolong. Inst. Comunicaciones | 12d | 2026-09-18 | 2026-10-06 | A16870 SS+6d | 258.7d |
| A16890 |  | Descolg. Prolong. Inst. Sanitarias | 12d | 2026-09-28 | 2026-10-15 | A16880 SS+6d | 258.7d |
| A16900 |  | Descolg. Prolong. HVAC y gas | 12d | 2026-10-06 | 2026-10-23 | A16890 SS+6d | 258.7d |
| A16910 |  | Descolg. Prolong. Inst. RCI | 20d | 2026-10-15 | 2026-11-13 | A16900 SS+6d | 258.7d |
| A16920 |  | Mamposteria Interna | 20d | 2026-11-13 | 2026-12-15 | A16910 | 258.7d |
| A19330 |  | Dinteles Ventana | 4d | 2026-12-11 | 2026-12-17 | A19280 | 223.93d |
| A16940 |  | Pañete Interno y Resanes | 20d | 2026-12-11 | 2027-01-27 | A16920 FS-2d | 258.7d |
| A16930 |  | Sobre Muros | 4d | 2026-12-15 | 2026-12-21 | A16920 | 304.7d |
| A19320 |  | Dinteles Puerta Ventana | 4d | 2026-12-17 | 2026-12-23 | A19330 | 223.93d |
| A19310 |  | Dintel Balcon | 4d | 2026-12-23 | 2027-01-15 | A19320 | 223.93d |
| A16950 |  | Poyos Cocina y Labores | 8d | 2027-01-21 | 2027-02-02 | A16940 FS-4d | 258.7d |
| A16960 |  | Viga Baranda | 16d | 2027-01-27 | 2027-02-18 | A16950 FS-4d | 258.7d |
| A16970 |  | Dintel descolgado | 16d | 2027-02-08 | 2027-03-02 | A16960 FS-8d | 258.7d |
| A16980 |  | Impermeabilizacion Zonas Humedas | 8d | 2027-02-18 | 2027-03-02 | A16970 FS-8d | 258.7d |
| A16990 |  | Afinado de Pisos | 12d | 2027-02-24 | 2027-03-12 | A16980 FS-4d | 258.7d |
|  | P09 | **Piso 09** |  | 2026-09-16 | 2027-03-09 |  |  |
| A17000 |  | Descolg. Prolong. Inst. Electricas | 10d | 2026-09-16 | 2026-09-30 | A16860 | 191.7d |
| A17010 |  | Descolg. Prolong. Inst. hidrosanitarias | 11d | 2026-09-24 | 2026-10-09 | A17000 SS+6d | 261.7d |
| A17020 |  | Descolg. Prolong. Inst. Comunicaciones | 11d | 2026-10-02 | 2026-10-20 | A17010 SS+6d | 261.7d |
| A17030 |  | Descolg. Prolong. Inst. Sanitarias | 11d | 2026-10-13 | 2026-10-28 | A17020 SS+6d | 261.7d |
| A17040 |  | Descolg. Prolong. HVAC y gas | 11d | 2026-10-21 | 2026-11-06 | A17030 SS+6d | 261.7d |
| A17050 |  | Descolg. Prolong. Inst. RCI | 18d | 2026-10-29 | 2026-11-26 | A17040 SS+6d | 261.7d |
| A17060 |  | Mamposteria Interna | 18d | 2026-11-26 | 2026-12-23 | A17050 | 261.7d |
| A17080 |  | Pañete Interno y Resanes | 18d | 2026-12-21 | 2027-02-02 | A17060 FS-2d | 261.7d |

| ID | WBS | Task | Duration | Start | Finish | Predecessors | Total float |
| --- | --- | --- | --- | --- | --- | --- | --- |
| A17070 |  | Sobre Muros | 3d | 2026-12-23 | 2027-01-14 | A17060 | 299.7d |
| A19390 |  | Dinteles Ventana | 3d | 2027-01-15 | 2027-01-20 | A19310 | 223.93d |
| A19380 |  | Dinteles Puerta Ventana | 3d | 2027-01-20 | 2027-01-25 | A19390 | 223.93d |
| A19370 |  | Dintel Balcon | 3d | 2027-01-25 | 2027-01-28 | A19380 | 223.93d |
| A17090 |  | Poyos Cocina y Labores | 7d | 2027-01-27 | 2027-02-05 | A17080 FS-4d | 261.7d |
| A17100 |  | Viga Baranda | 14d | 2027-02-01 | 2027-02-19 | A17090 FS-4d | 261.7d |
| A17110 |  | Dintel descolgado | 14d | 2027-02-09 | 2027-03-01 | A17100 FS-8d | 261.7d |
| A17120 |  | Impermeabilizacion Zonas Humedas | 7d | 2027-02-17 | 2027-02-26 | A17110 FS-8d | 261.7d |
| A17130 |  | Afinado de Pisos | 11d | 2027-02-22 | 2027-03-09 | A17120 FS-4d | 261.7d |
|  | P10 | **Piso 10** |  | 2026-09-30 | 2027-03-30 |  |  |
| A17140 |  | Descolg. Prolong. Inst. Electricas | 10d | 2026-09-30 | 2026-10-15 | A17000 | 191.7d |
| A17150 |  | Descolg. Prolong. Inst. hidrosanitarias | 11d | 2026-10-08 | 2026-10-26 | A17140 SS+6d | 251.7d |
| A17160 |  | Descolg. Prolong. Inst. Comunicaciones | 11d | 2026-10-19 | 2026-11-04 | A17150 SS+6d | 251.7d |
| A17170 |  | Descolg. Prolong. Inst. Sanitarias | 11d | 2026-10-27 | 2026-11-12 | A17160 SS+6d | 251.7d |
| A17180 |  | Descolg. Prolong. HVAC y gas | 11d | 2026-11-05 | 2026-11-23 | A17170 SS+6d | 251.7d |
| A17190 |  | Descolg. Prolong. Inst. RCI | 18d | 2026-11-13 | 2026-12-11 | A17180 SS+6d | 251.7d |
| A17200 |  | Mamposteria Interna | 18d | 2026-12-11 | 2027-01-25 | A17190 | 251.7d |
| A17220 |  | Pañete Interno y Resanes | 18d | 2027-01-21 | 2027-02-16 | A17200 FS-2d | 251.7d |
| A17210 |  | Sobre Muros | 3d | 2027-01-25 | 2027-01-28 | A17200 | 289.7d |
| A19360 |  | Dinteles Ventana | 3d | 2027-01-28 | 2027-02-02 | A19370 | 232.93d |
| A19350 |  | Dinteles Puerta Ventana | 3d | 2027-02-02 | 2027-02-05 | A19360 | 232.93d |
| A19340 |  | Dintel Balcon | 3d | 2027-02-05 | 2027-02-10 | A19350 | 232.93d |
| A17230 |  | Poyos Cocina y Labores | 7d | 2027-02-10 | 2027-02-19 | A17220 FS-4d | 251.7d |
| A17240 |  | Viga Baranda | 14d | 2027-02-15 | 2027-03-05 | A17230 FS-4d | 251.7d |
| A17250 |  | Dintel descolgado | 14d | 2027-02-23 | 2027-03-15 | A17240 FS-8d | 251.7d |
| A17260 |  | Impermeabilizacion Zonas Humedas | 7d | 2027-03-03 | 2027-03-12 | A17250 FS-8d | 251.7d |
| A17270 |  | Afinado de Pisos | 11d | 2027-03-08 | 2027-03-30 | A17260 FS-4d | 251.7d |
|  | P11 | **Piso 11** |  | 2026-10-29 | 2027-04-12 |  |  |
| A17280 |  | Descolg. Prolong. Inst. Electricas | 10d | 2026-10-29 | 2026-11-13 | A17140 FS+10d | 191.7d |
| A17290 |  | Descolg. Prolong. Inst. hidrosanitarias | 11d | 2026-11-09 | 2026-11-25 | A17280 SS+6d | 242.7d |
| A17300 |  | Descolg. Prolong. Inst. Comunicaciones | 11d | 2026-11-13 | 2026-12-01 | A17290 SS+4d | 242.7d |
| A17310 |  | Descolg. Prolong. Inst. Sanitarias | 11d | 2026-11-20 | 2026-12-07 | A17300 SS+4d | 242.7d |
| A17320 |  | Descolg. Prolong. HVAC y gas | 11d | 2026-11-26 | 2026-12-14 | A17310 SS+4d | 242.7d |
| A17330 |  | Descolg. Prolong. Inst. RCI | 16d | 2026-12-03 | 2027-01-14 | A17320 SS+5d | 242.7d |
| A17340 |  | Mamposteria Interna | 18d | 2027-01-14 | 2027-02-09 | A17330 | 242.7d |
| A17360 |  | Pañete Interno y Resanes | 18d | 2027-02-05 | 2027-03-03 | A17340 FS-2d | 242.7d |
| A17350 |  | Sobre Muros | 3d | 2027-02-09 | 2027-02-12 | A17340 | 278.7d |
| A19420 |  | Dinteles Ventana | 3d | 2027-02-10 | 2027-02-15 | A19340 | 232.93d |
| A19410 |  | Dinteles Puerta Ventana | 3d | 2027-02-15 | 2027-02-18 | A19420 | 232.93d |
| A19400 |  | Dintel Balcon | 3d | 2027-02-18 | 2027-02-23 | A19410 | 232.93d |
| A17370 |  | Poyos Cocina y Labores | 6d | 2027-02-25 | 2027-03-05 | A17360 FS-4d | 242.7d |
| A17380 |  | Viga Baranda | 14d | 2027-03-01 | 2027-03-19 | A17370 FS-4d | 242.7d |
| A17390 |  | Dintel descolgado | 14d | 2027-03-09 | 2027-04-05 | A17380 FS-8d | 242.7d |
| A17400 |  | Impermeabilizacion Zonas Humedas | 6d | 2027-03-17 | 2027-04-01 | A17390 FS-8d | 242.7d |
| A17410 |  | Afinado de Pisos | 11d | 2027-03-19 | 2027-04-12 | A17400 FS-4d | 242.7d |
|  | P12 | **Piso 12** |  | 2026-11-13 | 2027-04-23 |  |  |
| A17420 |  | Descolg. Prolong. Inst. Electricas | 10d | 2026-11-13 | 2026-11-30 | A17280 | 191.7d |
| A17430 |  | Descolg. Prolong. Inst. hidrosanitarias | 9d | 2026-11-24 | 2026-12-07 | A17420 SS+6d | 233.7d |
| A17440 |  | Descolg. Prolong. Inst. Comunicaciones | 9d | 2026-12-02 | 2026-12-16 | A17430 SS+6d | 233.7d |
| A17450 |  | Descolg. Prolong. Inst. Sanitarias | 9d | 2026-12-11 | 2027-01-12 | A17440 SS+6d | 233.7d |
| A17460 |  | Descolg. Prolong. HVAC y gas | 9d | 2026-12-21 | 2027-01-20 | A17450 SS+6d | 233.7d |
| A17470 |  | Descolg. Prolong. Inst. RCI | 16d | 2027-01-15 | 2027-02-08 | A17460 SS+6d | 233.7d |
| A17480 |  | Mamposteria Interna | 16d | 2027-02-08 | 2027-03-02 | A17470 | 233.7d |
| A19460 |  | Dinteles Ventana | 3d | 2027-02-23 | 2027-02-26 | A19400 | 232.93d |
| A19450 |  | Dinteles Puerta Ventana | 3d | 2027-02-26 | 2027-03-03 | A19460 | 232.93d |
| A17500 |  | Pañete Interno y Resanes | 16d | 2027-02-26 | 2027-03-29 | A17480 FS-2d | 233.7d |
| A17490 |  | Sobre Muros | 3d | 2027-03-02 | 2027-03-05 | A17480 | 263.7d |
| A19440 |  | Dintel Balcon | 3d | 2027-03-03 | 2027-03-08 | A19450 | 232.93d |
| A17510 |  | Poyos Cocina y Labores | 6d | 2027-03-16 | 2027-03-31 | A17500 FS-4d | 233.7d |
| A17520 |  | Viga Baranda | 13d | 2027-03-18 | 2027-04-13 | A17510 FS-4d | 233.7d |
| A17530 |  | Dintel descolgado | 13d | 2027-04-01 | 2027-04-20 | A17520 FS-8d | 233.7d |
| A17540 |  | Impermeabilizacion Zonas Humedas | 6d | 2027-04-08 | 2027-04-16 | A17530 FS-8d | 233.7d |
| A17550 |  | Afinado de Pisos | 9d | 2027-04-12 | 2027-04-23 | A17540 FS-4d | 233.7d |
|  | P13 | **Piso 13** |  | 2026-11-30 | 2027-05-05 |  |  |
| A17560 |  | Descolg. Prolong. Inst. Electricas | 10d | 2026-11-30 | 2026-12-15 | A17420 | 191.7d |
| A17570 |  | Descolg. Prolong. Inst. hidrosanitarias | 9d | 2026-12-09 | 2026-12-22 | A17560 SS+6d | 225.7d |
| A17580 |  | Descolg. Prolong. Inst. Comunicaciones | 9d | 2026-12-17 | 2027-01-18 | A17570 SS+6d | 225.7d |
| A17590 |  | Descolg. Prolong. Inst. Sanitarias | 9d | 2027-01-13 | 2027-01-26 | A17580 SS+6d | 225.7d |
| A17600 |  | Descolg. Prolong. HVAC y gas | 9d | 2027-01-21 | 2027-02-03 | A17590 SS+6d | 225.7d |
| A17610 |  | Descolg. Prolong. Inst. RCI | 15d | 2027-01-29 | 2027-02-19 | A17600 SS+6d | 225.7d |

| ID | WBS | Task | Duration | Start | Finish | Predecessors | Total float |
| --- | --- | --- | --- | --- | --- | --- | --- |
| A17620 |  | Mamposteria Interna | 18d | 2027-02-19 | 2027-03-17 | A17610 | 225.7d |
| A19520 |  | Dinteles Ventana | 3d | 2027-03-08 | 2027-03-11 | A19440 | 232.93d |
| A19510 |  | Dinteles Puerta Ventana | 3d | 2027-03-11 | 2027-03-16 | A19520 | 232.93d |
| A17640 |  | Pañete Interno y Resanes | 15d | 2027-03-15 | 2027-04-12 | A17620 FS-2d | 225.7d |
| A19500 |  | Dintel Balcon | 3d | 2027-03-16 | 2027-03-19 | A19510 | 232.93d |
| A17630 |  | Sobre Muros | 3d | 2027-03-17 | 2027-03-29 | A17620 | 252.7d |
| A17650 |  | Poyos Cocina y Labores | 6d | 2027-04-06 | 2027-04-14 | A17640 FS-4d | 225.7d |
| A17660 |  | Viga Baranda | 12d | 2027-04-08 | 2027-04-26 | A17650 FS-4d | 225.7d |
| A17670 |  | Dintel descolgado | 12d | 2027-04-14 | 2027-04-30 | A17660 FS-8d | 225.7d |
| A17680 |  | Impermeabilizacion Zonas Humedas | 6d | 2027-04-20 | 2027-04-28 | A17670 FS-8d | 225.7d |
| A17690 |  | Afinado de Pisos | 9d | 2027-04-22 | 2027-05-05 | A17680 FS-4d | 225.7d |
|  | P14 | **Piso 14** |  | 2026-12-15 | 2027-05-20 |  |  |
| A17700 |  | Descolg. Prolong. Inst. Electricas | 10d | 2026-12-15 | 2027-01-15 | A17560 | 191.7d |
| A17710 |  | Descolg. Prolong. Inst. hidrosanitarias | 9d | 2026-12-23 | 2027-01-22 | A17700 SS+6d | 215.7d |
| A17720 |  | Descolg. Prolong. Inst. Comunicaciones | 9d | 2027-01-19 | 2027-02-01 | A17710 SS+6d | 215.7d |
| A17730 |  | Descolg. Prolong. Inst. Sanitarias | 9d | 2027-01-27 | 2027-02-09 | A17720 SS+6d | 215.7d |
| A17740 |  | Descolg. Prolong. HVAC y gas | 9d | 2027-02-04 | 2027-02-17 | A17730 SS+6d | 215.7d |
| A17750 |  | Descolg. Prolong. Inst. RCI | 15d | 2027-02-12 | 2027-03-05 | A17740 SS+6d | 215.7d |
| A17760 |  | Mamposteria Interna | 18d | 2027-03-05 | 2027-04-07 | A17750 | 215.7d |
| A19490 |  | Dinteles Ventana | 3d | 2027-03-19 | 2027-03-31 | A19500 | 232.93d |
| A19480 |  | Dinteles Puerta Ventana | 3d | 2027-03-31 | 2027-04-05 | A19490 | 232.93d |
| A19470 |  | Dintel Balcon | 3d | 2027-04-05 | 2027-04-08 | A19480 | 232.93d |
| A17780 |  | Pañete Interno y Resanes | 15d | 2027-04-05 | 2027-04-26 | A17760 FS-2d | 215.7d |
| A17770 |  | Sobre Muros | 3d | 2027-04-07 | 2027-04-12 | A17760 | 242.7d |
| A17790 |  | Poyos Cocina y Labores | 6d | 2027-04-20 | 2027-04-28 | A17780 FS-4d | 215.7d |
| A17800 |  | Viga Baranda | 12d | 2027-04-22 | 2027-05-11 | A17790 FS-4d | 215.7d |
| A17810 |  | Dintel descolgado | 12d | 2027-04-28 | 2027-05-17 | A17800 FS-8d | 215.7d |
| A17820 |  | Impermeabilizacion Zonas Humedas | 6d | 2027-05-04 | 2027-05-13 | A17810 FS-8d | 215.7d |
| A17830 |  | Afinado de Pisos | 9d | 2027-05-06 | 2027-05-20 | A17820 FS-4d | 215.7d |
|  | P15 | **Piso 15** |  | 2027-01-29 | 2027-05-26 |  |  |
| A17840 |  | Descolg. Prolong. Inst. Electricas | 10d | 2027-01-29 | 2027-02-12 | A17700 FS+10d | 191.7d |
| A17850 |  | Descolg. Prolong. Inst. hidrosanitarias | 8d | 2027-02-08 | 2027-02-18 | A17840 SS+6d | 211.7d |
| A17860 |  | Descolg. Prolong. Inst. Comunicaciones | 8d | 2027-02-16 | 2027-02-26 | A17850 SS+6d | 211.7d |
| A17870 |  | Descolg. Prolong. Inst. Sanitarias | 8d | 2027-02-24 | 2027-03-08 | A17860 SS+6d | 211.7d |
| A17880 |  | Descolg. Prolong. HVAC y gas | 8d | 2027-03-04 | 2027-03-16 | A17870 SS+6d | 211.7d |
| A17890 |  | Descolg. Prolong. Inst. RCI | 13d | 2027-03-12 | 2027-04-07 | A17880 SS+6d | 211.7d |
| A17900 |  | Mamposteria Interna | 13d | 2027-04-07 | 2027-04-26 | A17890 | 211.7d |
| A19550 |  | Dinteles Ventana | 2d | 2027-04-08 | 2027-04-12 | A19470 | 232.93d |
| A19540 |  | Dinteles Puerta Ventana | 2d | 2027-04-12 | 2027-04-14 | A19550 | 232.93d |
| A19530 |  | Dintel Balcon | 2d | 2027-04-14 | 2027-04-16 | A19540 | 232.93d |
| A17920 |  | Pañete Interno y Resanes | 13d | 2027-04-22 | 2027-05-12 | A17900 FS-2d | 211.7d |
| A17910 |  | Sobre Muros | 2d | 2027-04-26 | 2027-04-28 | A17900 | 230.7d |
| A17930 |  | Poyos Cocina y Labores | 5d | 2027-05-05 | 2027-05-13 | A17920 FS-4d | 211.7d |
| A17940 |  | Viga Baranda | 10d | 2027-05-06 | 2027-05-21 | A17930 FS-4d | 211.7d |
| A17950 |  | Dintel descolgado | 10d | 2027-05-11 | 2027-05-25 | A17940 FS-8d | 211.7d |
| A17960 |  | Impermeabilizacion Zonas Humedas | 5d | 2027-05-13 | 2027-05-20 | A17950 FS-8d | 211.7d |
| A17970 |  | Afinado de Pisos | 8d | 2027-05-14 | 2027-05-26 | A17960 FS-4d | 211.7d |
|  | P16 | **Piso 16** |  | 2027-02-26 | 2027-06-25 |  |  |
| A17980 |  | Descolg. Prolong. Inst. Electricas | 10d | 2027-02-26 | 2027-03-12 | A17840 FS+10d | 191.7d |
| A17990 |  | Descolg. Prolong. Inst. hidrosanitarias | 8d | 2027-03-08 | 2027-03-18 | A17980 SS+6d | 191.7d |
| A18000 |  | Descolg. Prolong. Inst. Comunicaciones | 8d | 2027-03-16 | 2027-04-02 | A17990 SS+6d | 191.7d |
| A18010 |  | Descolg. Prolong. Inst. Sanitarias | 8d | 2027-03-31 | 2027-04-12 | A18000 SS+6d | 191.7d |
| A18020 |  | Descolg. Prolong. HVAC y gas | 8d | 2027-04-08 | 2027-04-20 | A18010 SS+6d | 191.7d |
| A19580 |  | Dinteles Ventana | 2d | 2027-04-16 | 2027-04-20 | A19530 | 232.93d |
| A18030 |  | Descolg. Prolong. Inst. RCI | 13d | 2027-04-16 | 2027-05-05 | A18020 SS+6d | 191.7d |
| A19570 |  | Dinteles Puerta Ventana | 2d | 2027-04-20 | 2027-04-22 | A19580 | 232.93d |
| A19560 |  | Dintel Balcon | 2d | 2027-04-22 | 2027-04-26 | A19570 | 232.93d |
| A18040 |  | Mamposteria Interna | 13d | 2027-05-05 | 2027-05-25 | A18030 | 191.7d |
| A18060 |  | Pañete Interno y Resanes | 13d | 2027-05-21 | 2027-06-11 | A18040 FS-2d | 191.7d |
| A18050 |  | Sobre Muros | 2d | 2027-05-25 | 2027-05-27 | A18040 | 210.7d |
| A18070 |  | Poyos Cocina y Labores | 5d | 2027-06-04 | 2027-06-14 | A18060 FS-4d | 191.7d |
| A18080 |  | Viga Baranda | 10d | 2027-06-08 | 2027-06-22 | A18070 FS-4d | 191.7d |
| A18090 |  | Dintel descolgado | 10d | 2027-06-10 | 2027-06-24 | A18080 FS-8d | 191.7d |
| A18100 |  | Impermeabilizacion Zonas Humedas | 5d | 2027-06-14 | 2027-06-21 | A18090 FS-8d | 191.7d |
| A18110 |  | Afinado de Pisos | 8d | 2027-06-15 | 2027-06-25 | A18100 FS-4d | 191.7d |
|  | Est_Pin01 | **Estuco y Pintura-01** |  | 2026-08-04 | 2027-07-12 |  |  |
|  | P03 | **Piso 03** |  | 2026-08-04 | 2026-09-03 |  |  |
| A3360 |  | Estuco | 18d | 2026-08-04 | 2026-09-01 | A1190 SS | 31.93d |
| A3370 |  | Primera mano de pintura | 18d | 2026-08-06 | 2026-09-03 | A3360 SS+2d | 31.93d |
|  | P04 | **Piso 04** |  | 2026-09-01 | 2026-09-29 |  |  |

| ID | WBS | Task | Duration | Start | Finish | Predecessors | Complete | Total float |
| --- | --- | --- | --- | --- | --- | --- | --- | --- |
| A3390 |  | Estuco | 18d | 2026-09-01 | 2026-09-25 | A3360 |  | 181.33d |
| A3400 |  | Primera mano de pintura | 18d | 2026-09-03 | 2026-09-29 | A3390 SS+2d |  | 359.33d |
|  | P05 | **Piso 05** |  | 2026-09-25 | 2026-10-26 |  |  |  |
| A3420 |  | Estuco | 18d | 2026-09-25 | 2026-10-22 | A3390 |  | 181.33d |
| A3430 |  | Primera mano de pintura | 18d | 2026-09-29 | 2026-10-26 | A3420 SS+2d |  | 341.33d |
|  | P06 | **Piso 06** |  | 2026-10-22 | 2026-11-23 |  |  |  |
| A3450 |  | Estuco | 18d | 2026-10-22 | 2026-11-19 | A3420 |  | 181.33d |
| A3460 |  | Primera mano de pintura | 18d | 2026-10-26 | 2026-11-23 | A3450 SS+2d |  | 323.33d |
|  | P07 | **Piso 07** |  | 2026-11-19 | 2026-12-18 |  |  |  |
| A3480 |  | Estuco | 18d | 2026-11-19 | 2026-12-16 | A3450 |  | 181.33d |
| A3490 |  | Primera mano de pintura | 18d | 2026-11-23 | 2026-12-18 | A3480 SS+2d |  | 305.33d |
|  | P08 | **Piso 08** |  | 2026-12-16 | 2027-02-01 |  |  |  |
| A3510 |  | Estuco | 18d | 2026-12-16 | 2027-01-28 | A3480 |  | 181.33d |
| A3520 |  | Primera mano de pintura | 18d | 2026-12-18 | 2027-02-01 | A3510 SS+2d |  | 287.33d |
|  | P09 | **Piso 09** |  | 2027-01-28 | 2027-02-23 |  |  |  |
| A3540 |  | Estuco | 16d | 2027-01-28 | 2027-02-19 | A3510 |  | 181.33d |
| A3550 |  | Primera mano de pintura | 16d | 2027-02-01 | 2027-02-23 | A3540 SS+2d |  | 271.33d |
|  | P10 | **Piso 10** |  | 2027-02-19 | 2027-03-17 |  |  |  |
| A3570 |  | Estuco | 16d | 2027-02-19 | 2027-03-15 | A3540 |  | 181.33d |
| A3580 |  | Primera mano de pintura | 16d | 2027-02-23 | 2027-03-17 | A3570 SS+2d |  | 255.33d |
|  | P11 | **Piso 11** |  | 2027-03-15 | 2027-04-13 |  |  |  |
| A3600 |  | Estuco | 14d | 2027-03-15 | 2027-04-09 | A3570 |  | 181.33d |
| A3610 |  | Primera mano de pintura | 14d | 2027-03-17 | 2027-04-13 | A3600 SS+2d |  | 241.33d |
|  | P12 | **Piso 12** |  | 2027-04-09 | 2027-05-03 |  |  |  |
| A3630 |  | Estuco | 14d | 2027-04-09 | 2027-04-29 | A3600 |  | 181.33d |
| A3640 |  | Primera mano de pintura | 14d | 2027-04-13 | 2027-05-03 | A3630 SS+2d |  | 227.33d |
|  | P13 | **Piso 13** |  | 2027-04-29 | 2027-05-21 |  |  |  |
| A3660 |  | Estuco | 14d | 2027-04-29 | 2027-05-20 | A3630 |  | 181.33d |
| A3670 |  | Primera mano de pintura | 13d | 2027-05-03 | 2027-05-21 | A3660 SS+2d |  | 214.33d |
|  | P14 | **Piso 14** |  | 2027-05-13 | 2027-06-04 |  |  |  |
| A3690 |  | Estuco | 13d | 2027-05-13 | 2027-06-02 | A3660 FS-5d |  | 181.33d |
| A3700 |  | Primera mano de pintura | 13d | 2027-05-17 | 2027-06-04 | A3690 SS+2d |  | 205.33d |
|  | P15 | **Piso 15** |  | 2027-06-02 | 2027-06-23 |  |  |  |
| A3720 |  | Estuco | 12d | 2027-06-02 | 2027-06-21 | A3690 |  | 181.33d |
| A3730 |  | Primera mano de pintura | 12d | 2027-06-04 | 2027-06-23 | A3720 SS+2d |  | 193.33d |
|  | P16 | **Piso 16** |  | 2027-06-21 | 2027-07-12 |  |  |  |
| A15130 |  | Estuco | 12d | 2027-06-21 | 2027-07-08 | A3720 |  | 181.33d |
| A15140 |  | Primera mano de pintura | 12d | 2027-06-23 | 2027-07-12 | A15130 SS+2d |  | 181.33d |
|  | Cie_Ras | **Cielo Raso** |  | 2026-07-14 | 2027-06-23 |  |  |  |
|  | Est_Cielo Raso | **Estructura Cielo Raso** |  | 2026-07-14 | 2027-03-04 |  |  |  |
|  | P03 | **Piso 03** |  | 2026-07-14 | 2026-10-19 |  |  |  |
| A18120 |  | Estructura Cocina y labores | 4d | 2026-07-14 A | 2026-09-17 | A4190 | 20% | 31.93d |
| A4190 |  | Estructura Baños | 8d | 2026-07-14 A | 2026-09-14 | A1230 SS | 20% | 31.93d |
| A18130 |  | Estructura Hall de acceso | 4d | 2026-07-15 A | 2026-09-22 | A18120 | 20% | 31.93d |
| A18140 |  | Estructura Alcobas | 8d | 2026-07-15 A | 2026-09-30 | A18130 | 20% | 31.93d |
| A18150 |  | Estructura Salon Comedor | 4d | 2026-07-15 A | 2026-10-06 | A18140 | 20% | 31.93d |
| A18160 |  | Estructura Balcon | 4d | 2026-10-06 | 2026-10-13 | A18150 |  | 346.93d |
| A18170 |  | Estructura Sobre Muros concreto | 8d | 2026-10-06 | 2026-10-19 | A18160 FS-4d |  | 346.93d |
|  | P04 | **Piso 04** |  | 2026-09-14 | 2026-11-05 |  |  |  |
| A18180 |  | Estructura Baños | 8d | 2026-09-14 | 2026-09-24 | A4190 |  | 264.93d |
| A18190 |  | Estructura Cocina y labores | 4d | 2026-09-24 | 2026-09-30 | A18180 |  | 334.93d |
| A18200 |  | Estructura Hall de acceso | 4d | 2026-09-30 | 2026-10-06 | A18190 |  | 334.93d |
| A18210 |  | Estructura Alcobas | 8d | 2026-10-06 | 2026-10-19 | A18200 |  | 334.93d |
| A18220 |  | Estructura Salon Comedor | 4d | 2026-10-19 | 2026-10-23 | A18210 |  | 334.93d |
| A18230 |  | Estructura Balcon | 4d | 2026-10-23 | 2026-10-29 | A18220 |  | 334.93d |
| A18240 |  | Estructura Sobre Muros concreto | 8d | 2026-10-23 | 2026-11-05 | A18230 FS-4d |  | 334.93d |
|  | P05 | **Piso 05** |  | 2026-09-24 | 2026-11-18 |  |  |  |
| A18250 |  | Estructura Baños | 8d | 2026-09-24 | 2026-10-06 | A18180 |  | 264.93d |
| A18260 |  | Estructura Cocina y labores | 4d | 2026-10-06 | 2026-10-13 | A18250 |  | 326.93d |
| A18270 |  | Estructura Hall de acceso | 4d | 2026-10-13 | 2026-10-19 | A18260 |  | 326.93d |
| A18280 |  | Estructura Alcobas | 8d | 2026-10-19 | 2026-10-29 | A18270 |  | 326.93d |
| A18290 |  | Estructura Salon Comedor | 4d | 2026-10-29 | 2026-11-05 | A18280 |  | 326.93d |
| A18300 |  | Estructura Balcon | 4d | 2026-11-05 | 2026-11-11 | A18290 |  | 326.93d |
| A18310 |  | Estructura Sobre Muros concreto | 8d | 2026-11-05 | 2026-11-18 | A18300 FS-4d |  | 326.93d |
|  | P06 | **Piso 06** |  | 2026-10-06 | 2026-11-30 |  |  |  |
| A18320 |  | Estructura Baños | 8d | 2026-10-06 | 2026-10-19 | A18250 |  | 264.93d |
| A18330 |  | Estructura Cocina y labores | 4d | 2026-10-19 | 2026-10-23 | A18320 |  | 318.93d |
| A18340 |  | Estructura Hall de acceso | 4d | 2026-10-23 | 2026-10-29 | A18330 |  | 318.93d |
| A18350 |  | Estructura Alcobas | 8d | 2026-10-29 | 2026-11-11 | A18340 |  | 318.93d |
| A18360 |  | Estructura Salon Comedor | 4d | 2026-11-11 | 2026-11-18 | A18350 |  | 318.93d |

| ID | WBS | Task | Duration | Start | Finish | Predecessors | Total float |
| --- | --- | --- | --- | --- | --- | --- | --- |
| A18370 |  | Estructura Balcon | 4d | 2026-11-18 | 2026-11-24 | A18360 | 318.93d |
| A18380 |  | Estructura Sobre Muros concreto | 8d | 2026-11-18 | 2026-11-30 | A18370 FS-4d | 318.93d |
|  | P07 | **Piso 07** |  | 2026-10-19 | 2026-12-11 |  |  |
| A18390 |  | Estructura Baños | 8d | 2026-10-19 | 2026-10-29 | A18320 | 264.93d |
| A18400 |  | Estructura Cocina y labores | 4d | 2026-10-29 | 2026-11-05 | A18390 | 310.93d |
| A18410 |  | Estructura Hall de acceso | 4d | 2026-11-05 | 2026-11-11 | A18400 | 310.93d |
| A18420 |  | Estructura Alcobas | 8d | 2026-11-11 | 2026-11-24 | A18410 | 310.93d |
| A18430 |  | Estructura Salon Comedor | 4d | 2026-11-24 | 2026-11-30 | A18420 | 310.93d |
| A18440 |  | Estructura Balcon | 4d | 2026-11-30 | 2026-12-04 | A18430 | 310.93d |
| A18450 |  | Estructura Sobre Muros concreto | 8d | 2026-11-30 | 2026-12-11 | A18440 FS-4d | 310.93d |
|  | P08 | **Piso 08** |  | 2026-10-29 | 2026-12-23 |  |  |
| A18460 |  | Estructura Baños | 8d | 2026-10-29 | 2026-11-11 | A18390 | 264.93d |
| A18470 |  | Estructura Cocina y labores | 4d | 2026-11-11 | 2026-11-18 | A18460 | 302.93d |
| A18480 |  | Estructura Hall de acceso | 4d | 2026-11-18 | 2026-11-24 | A18470 | 302.93d |
| A18490 |  | Estructura Alcobas | 8d | 2026-11-24 | 2026-12-04 | A18480 | 302.93d |
| A18500 |  | Estructura Salon Comedor | 4d | 2026-12-04 | 2026-12-11 | A18490 | 302.93d |
| A18510 |  | Estructura Balcon | 4d | 2026-12-11 | 2026-12-17 | A18500 | 302.93d |
| A18520 |  | Estructura Sobre Muros concreto | 8d | 2026-12-11 | 2026-12-23 | A18510 FS-4d | 302.93d |
|  | P09 | **Piso 09** |  | 2026-11-11 | 2027-01-12 |  |  |
| A18530 |  | Estructura Baños | 7d | 2026-11-11 | 2026-11-23 | A18460 | 264.93d |
| A18540 |  | Estructura Cocina y labores | 3d | 2026-11-23 | 2026-11-26 | A18530 | 301.93d |
| A18550 |  | Estructura Hall de acceso | 3d | 2026-11-26 | 2026-12-01 | A18540 | 301.93d |
| A18560 |  | Estructura Alcobas | 7d | 2026-12-01 | 2026-12-11 | A18550 | 301.93d |
| A18570 |  | Estructura Salon Comedor | 3d | 2026-12-11 | 2026-12-16 | A18560 | 301.93d |
| A18590 |  | Estructura Sobre Muros concreto | 7d | 2026-12-15 | 2027-01-12 | A18580 FS-4d | 301.93d |
| A18580 |  | Estructura Balcon | 3d | 2026-12-16 | 2026-12-21 | A18570 | 301.93d |
|  | P10 | **Piso 10** |  | 2026-11-23 | 2027-01-21 |  |  |
| A18600 |  | Estructura Baños | 7d | 2026-11-23 | 2026-12-02 | A18530 | 264.93d |
| A18610 |  | Estructura Cocina y labores | 3d | 2026-12-02 | 2026-12-07 | A18600 | 294.93d |
| A18620 |  | Estructura Hall de acceso | 3d | 2026-12-07 | 2026-12-11 | A18610 | 294.93d |
| A18630 |  | Estructura Alcobas | 7d | 2026-12-11 | 2026-12-22 | A18620 | 294.93d |
| A18640 |  | Estructura Salon Comedor | 3d | 2026-12-22 | 2027-01-13 | A18630 | 294.93d |
| A18660 |  | Estructura Sobre Muros concreto | 7d | 2027-01-12 | 2027-01-21 | A18650 FS-4d | 294.93d |
| A18650 |  | Estructura Balcon | 3d | 2027-01-13 | 2027-01-18 | A18640 | 294.93d |
|  | P11 | **Piso 11** |  | 2026-12-02 | 2027-01-28 |  |  |
| A18670 |  | Estructura Baños | 6d | 2026-12-02 | 2026-12-11 | A18600 | 264.93d |
| A18680 |  | Estructura Cocina y labores | 3d | 2026-12-11 | 2026-12-16 | A18670 | 289.93d |
| A18690 |  | Estructura Hall de acceso | 3d | 2026-12-16 | 2026-12-21 | A18680 | 289.93d |
| A18700 |  | Estructura Alcobas | 6d | 2026-12-21 | 2027-01-15 | A18690 | 289.93d |
| A18710 |  | Estructura Salon Comedor | 3d | 2027-01-15 | 2027-01-20 | A18700 | 289.93d |
| A18720 |  | Estructura Balcon | 3d | 2027-01-20 | 2027-01-25 | A18710 | 289.93d |
| A18730 |  | Estructura Sobre Muros concreto | 6d | 2027-01-20 | 2027-01-28 | A18720 FS-3d | 289.93d |
|  | P12 | **Piso 12** |  | 2026-12-11 | 2027-02-05 |  |  |
| A18740 |  | Estructura Baños | 6d | 2026-12-11 | 2026-12-21 | A18670 | 264.93d |
| A18750 |  | Estructura Cocina y labores | 3d | 2026-12-21 | 2027-01-12 | A18740 | 283.93d |
| A18760 |  | Estructura Hall de acceso | 3d | 2027-01-12 | 2027-01-15 | A18750 | 283.93d |
| A18770 |  | Estructura Alcobas | 6d | 2027-01-15 | 2027-01-25 | A18760 | 283.93d |
| A18780 |  | Estructura Salon Comedor | 3d | 2027-01-25 | 2027-01-28 | A18770 | 283.93d |
| A18790 |  | Estructura Balcon | 3d | 2027-01-28 | 2027-02-02 | A18780 | 283.93d |
| A18800 |  | Estructura Sobre Muros concreto | 6d | 2027-01-28 | 2027-02-05 | A18790 FS-3d | 283.93d |
|  | P13 | **Piso 13** |  | 2026-12-21 | 2027-02-15 |  |  |
| A18810 |  | Estructura Baños | 6d | 2026-12-21 | 2027-01-15 | A18740 | 264.93d |
| A18820 |  | Estructura Cocina y labores | 3d | 2027-01-15 | 2027-01-20 | A18810 | 277.93d |
| A18830 |  | Estructura Hall de acceso | 3d | 2027-01-20 | 2027-01-25 | A18820 | 277.93d |
| A18840 |  | Estructura Alcobas | 6d | 2027-01-25 | 2027-02-02 | A18830 | 277.93d |
| A18850 |  | Estructura Salon Comedor | 3d | 2027-02-02 | 2027-02-05 | A18840 | 277.93d |
| A18860 |  | Estructura Balcon | 3d | 2027-02-05 | 2027-02-10 | A18850 | 277.93d |
| A18870 |  | Estructura Sobre Muros concreto | 6d | 2027-02-05 | 2027-02-15 | A18860 FS-3d | 277.93d |
|  | P14 | **Piso 14** |  | 2027-01-15 | 2027-02-23 |  |  |
| A18880 |  | Estructura Baños | 6d | 2027-01-15 | 2027-01-25 | A18810 | 264.93d |
| A18890 |  | Estructura Cocina y labores | 3d | 2027-01-25 | 2027-01-28 | A18880 | 271.93d |
| A18900 |  | Estructura Hall de acceso | 3d | 2027-01-28 | 2027-02-02 | A18890 | 271.93d |
| A18910 |  | Estructura Alcobas | 6d | 2027-02-02 | 2027-02-10 | A18900 | 271.93d |
| A18920 |  | Estructura Salon Comedor | 3d | 2027-02-10 | 2027-02-15 | A18910 | 271.93d |
| A18930 |  | Estructura Balcon | 3d | 2027-02-15 | 2027-02-18 | A18920 | 271.93d |
| A18940 |  | Estructura Sobre Muros concreto | 6d | 2027-02-15 | 2027-02-23 | A18930 FS-3d | 271.93d |
|  | P15 | **Piso 15** |  | 2027-01-25 | 2027-02-25 |  |  |
| A18950 |  | Estructura Baños | 5d | 2027-01-25 | 2027-02-01 | A18880 | 264.93d |
| A18960 |  | Estructura Cocina y labores | 2d | 2027-02-01 | 2027-02-03 | A18950 | 269.93d |
| A18970 |  | Estructura Hall de acceso | 2d | 2027-02-03 | 2027-02-05 | A18960 | 269.93d |

| ID | WBS | Task | Duration | Start | Finish | Predecessors | Total float |
| --- | --- | --- | --- | --- | --- | --- | --- |
| A18980 |  | Estructura Alcobas | 5d | 2027-02-05 | 2027-02-12 | A18970 | 269.93d |
| A18990 |  | Estructura Salon Comedor | 2d | 2027-02-12 | 2027-02-16 | A18980 | 269.93d |
| A19000 |  | Estructura Balcon | 2d | 2027-02-16 | 2027-02-18 | A18990 | 269.93d |
| A19010 |  | Estructura Sobre Muros concreto | 5d | 2027-02-18 | 2027-02-25 | A19000 | 269.93d |
|  | P16 | **Piso 16** |  | 2027-02-01 | 2027-03-04 |  |  |
| A19020 |  | Estructura Baños | 5d | 2027-02-01 | 2027-02-08 | A18950 | 264.93d |
| A19030 |  | Estructura Cocina y labores | 2d | 2027-02-08 | 2027-02-10 | A19020 | 264.93d |
| A19040 |  | Estructura Hall de acceso | 2d | 2027-02-10 | 2027-02-12 | A19030 | 264.93d |
| A19050 |  | Estructura Alcobas | 5d | 2027-02-12 | 2027-02-19 | A19040 | 264.93d |
| A19060 |  | Estructura Salon Comedor | 2d | 2027-02-19 | 2027-02-23 | A19050 | 264.93d |
| A19070 |  | Estructura Balcon | 2d | 2027-02-23 | 2027-02-25 | A19060 | 264.93d |
| A19080 |  | Estructura Sobre Muros concreto | 5d | 2027-02-25 | 2027-03-04 | A19070 | 264.93d |
|  | Inst Soportes | **Inst Soportes** |  | 2027-01-28 | 2027-05-07 |  |  |
|  | P03 | **Piso 03** |  | 2027-01-28 | 2027-02-05 |  |  |
| A3810 |  | Ventiladores | 6d | 2027-01-28 | 2027-02-05 | A1210 SS | 223.93d |
| A3820 |  | Campana | 6d | 2027-01-28 | 2027-02-05 | A3810 SS | 223.93d |
|  | P04 | **Piso 04** |  | 2027-02-05 | 2027-02-15 |  |  |
| A3830 |  | Ventiladores | 6d | 2027-02-05 | 2027-02-15 | A3820 | 223.93d |
| A3840 |  | Campana | 6d | 2027-02-05 | 2027-02-15 | A3830 SS | 223.93d |
|  | P05 | **Piso 05** |  | 2027-02-15 | 2027-02-23 |  |  |
| A3850 |  | Campana | 6d | 2027-02-15 | 2027-02-23 | A3840 | 223.93d |
| A3860 |  | Ventiladores | 6d | 2027-02-15 | 2027-02-23 | A3850 SS | 223.93d |
|  | P06 | **Piso 06** |  | 2027-02-23 | 2027-03-03 |  |  |
| A3870 |  | Ventiladores | 6d | 2027-02-23 | 2027-03-03 | A3860 | 223.93d |
| A3880 |  | Campana | 6d | 2027-02-23 | 2027-03-03 | A3870 SS | 223.93d |
|  | P07 | **Piso 07** |  | 2027-03-03 | 2027-03-11 |  |  |
| A3890 |  | Ventiladores | 6d | 2027-03-03 | 2027-03-11 | A3880 | 223.93d |
| A3900 |  | Campana | 6d | 2027-03-03 | 2027-03-11 | A3890 SS | 223.93d |
|  | P08 | **Piso 08** |  | 2027-03-11 | 2027-03-19 |  |  |
| A3910 |  | Ventiladores | 6d | 2027-03-11 | 2027-03-19 | A3900 | 223.93d |
| A3920 |  | Campana | 6d | 2027-03-11 | 2027-03-19 | A3910 SS | 223.93d |
|  | P09 | **Piso 09** |  | 2027-03-19 | 2027-04-01 |  |  |
| A3930 |  | Ventiladores | 4d | 2027-03-19 | 2027-04-01 | A3920 | 223.93d |
| A3940 |  | Campana | 4d | 2027-03-19 | 2027-04-01 | A3930 SS | 223.93d |
|  | P10 | **Piso 10** |  | 2027-04-01 | 2027-04-07 |  |  |
| A3950 |  | Ventiladores | 4d | 2027-04-01 | 2027-04-07 | A3940 | 223.93d |
| A3960 |  | Campana | 4d | 2027-04-01 | 2027-04-07 | A3950 SS | 223.93d |
|  | P11 | **Piso 11** |  | 2027-04-07 | 2027-04-13 |  |  |
| A3970 |  | Campana | 4d | 2027-04-07 | 2027-04-13 | A3960 | 223.93d |
| A3980 |  | Ventiladores | 4d | 2027-04-07 | 2027-04-13 | A3970 SS | 223.93d |
|  | P12 | **Piso 12** |  | 2027-04-13 | 2027-04-19 |  |  |
| A3990 |  | Ventiladores | 4d | 2027-04-13 | 2027-04-19 | A3980 | 223.93d |
| A4000 |  | Campana | 4d | 2027-04-13 | 2027-04-19 | A3990 SS | 223.93d |
|  | P13 | **Piso 13** |  | 2027-04-19 | 2027-04-23 |  |  |
| A4010 |  | Ventiladores | 4d | 2027-04-19 | 2027-04-23 | A4000 | 223.93d |
| A4020 |  | Campana | 4d | 2027-04-19 | 2027-04-23 | A4010 SS | 223.93d |
|  | P14 | **Piso 14** |  | 2027-04-23 | 2027-04-29 |  |  |
| A4030 |  | Ventiladores | 4d | 2027-04-23 | 2027-04-29 | A4020 | 223.93d |
| A4040 |  | Campana | 4d | 2027-04-23 | 2027-04-29 | A4030 SS | 223.93d |
|  | P15 | **Piso 15** |  | 2027-04-29 | 2027-05-04 |  |  |
| A4050 |  | Ventiladores | 3d | 2027-04-29 | 2027-05-04 | A4040 | 223.93d |
| A4060 |  | Campana | 3d | 2027-04-29 | 2027-05-04 | A4050 SS | 223.93d |
|  | P16 | **Piso 16** |  | 2027-05-04 | 2027-05-07 |  |  |
| A15150 |  | Campana | 3d | 2027-05-04 | 2027-05-07 | A4060 | 223.93d |
| A15160 |  | Ventiladores | 3d | 2027-05-04 | 2027-05-07 | A15150 SS | 223.93d |
|  | Laminado Pintura Cielo Raso | **Laminado Pintura Cielo Raso** |  | 2026-10-06 | 2027-06-23 |  |  |
|  | P03 | **Piso 03** |  | 2026-10-06 | 2026-12-09 |  |  |
| A4800 |  | Instalacion Lamina y Pintura | 42d | 2026-10-06 | 2026-12-09 | A1250 SS | 31.93d |
|  | P04 | **Piso 04** |  | 2026-10-21 | 2026-12-23 |  |  |
| A4830 |  | Instalacion Lamina y Pintura | 42d | 2026-10-21 | 2026-12-23 | A4800 SS+10d | 193.93d |
|  | P05 | **Piso 05** |  | 2026-11-05 | 2027-01-25 |  |  |
| A4860 |  | Instalacion Lamina y Pintura | 42d | 2026-11-05 | 2027-01-25 | A4830 SS+10d | 193.93d |
|  | P06 | **Piso 06** |  | 2026-11-20 | 2027-02-08 |  |  |
| A4890 |  | Instalacion Lamina y Pintura | 42d | 2026-11-20 | 2027-02-08 | A4860 SS+10d | 193.93d |
|  | P07 | **Piso 07** |  | 2026-12-04 | 2027-02-22 |  |  |
| A4920 |  | Instalacion Lamina y Pintura | 42d | 2026-12-04 | 2027-02-22 | A4890 SS+10d | 193.93d |
|  | P08 | **Piso 08** |  | 2026-12-21 | 2027-03-08 |  |  |
| A4950 |  | Instalacion Lamina y Pintura | 42d | 2026-12-21 | 2027-03-08 | A4920 SS+10d | 193.93d |
|  | P09 | **Piso 09** |  | 2027-02-04 | 2027-03-29 |  |  |
| A4980 |  | Instalacion Lamina y Pintura | 32d | 2027-02-04 | 2027-03-29 | A4950 SS+20d | 193.93d |

| ID | WBS | Task | Duration | Start | Finish | Predecessors | Total float |
| --- | --- | --- | --- | --- | --- | --- | --- |
|  | P10 | **Piso 10** |  | 2027-02-18 | 2027-04-12 |  |  |
| A5010 |  | Instalacion Lamina y Pintura | 32d | 2027-02-18 | 2027-04-12 | A4980 SS+10d | 193.93d |
|  | P11 | **Piso 11** |  | 2027-03-04 | 2027-04-26 |  |  |
| A5040 |  | Instalacion Lamina y Pintura | 32d | 2027-03-04 | 2027-04-26 | A5010 SS+10d | 193.93d |
|  | P12 | **Piso 12** |  | 2027-03-18 | 2027-05-11 |  |  |
| A5070 |  | Instalacion Lamina y Pintura | 32d | 2027-03-18 | 2027-05-11 | A5040 SS+10d | 193.93d |
|  | P13 | **Piso 13** |  | 2027-04-08 | 2027-05-25 |  |  |
| A5100 |  | Instalacion Lamina y Pintura | 32d | 2027-04-08 | 2027-05-25 | A5070 SS+10d | 193.93d |
|  | P14 | **Piso 14** |  | 2027-04-22 | 2027-06-10 |  |  |
| A5130 |  | Instalacion Lamina y Pintura | 32d | 2027-04-22 | 2027-06-10 | A5100 SS+10d | 193.93d |
|  | P15 | **Piso 15** |  | 2027-05-06 | 2027-06-09 |  |  |
| A5160 |  | Instalacion Lamina y Pintura | 21d | 2027-05-06 | 2027-06-09 | A5130 SS+10d | 193.93d |
|  | P16 | **Piso 16** |  | 2027-05-21 | 2027-06-23 |  |  |
| A15210 |  | Instalacion Lamina y Pintura | 21d | 2027-05-21 | 2027-06-23 | A5160 SS+10d | 193.93d |
|  | Estuco y Pintura-02 | **Estuco y Pintura-02** |  | 2026-11-09 | 2027-08-17 |  |  |
|  | P03 | **Piso 03** |  | 2026-11-09 | 2026-11-30 |  |  |
| A19630 |  | Segunda Mano de pintura | 14d | 2026-11-09 | 2026-11-30 | A1310 | 31.93d |
|  | P04 | **Piso 04** |  | 2026-11-30 | 2026-12-21 |  |  |
| A19640 |  | Segunda Mano de pintura | 14d | 2026-11-30 | 2026-12-21 | A19630 | 31.93d |
|  | P05 | **Piso 05** |  | 2026-12-21 | 2027-01-27 |  |  |
| A19650 |  | Segunda Mano de pintura | 14d | 2026-12-21 | 2027-01-27 | A19640 | 31.93d |
|  | P06 | **Piso 06** |  | 2027-01-27 | 2027-02-16 |  |  |
| A19670 |  | Segunda Mano de pintura | 14d | 2027-01-27 | 2027-02-16 | A19650 | 157.93d |
|  | P07 | **Piso 07** |  | 2027-02-16 | 2027-03-08 |  |  |
| A19680 |  | Segunda Mano de pintura | 14d | 2027-02-16 | 2027-03-08 | A19670 | 157.93d |
|  | P08 | **Piso 08** |  | 2027-03-08 | 2027-04-02 |  |  |
| A19690 |  | Segunda Mano de pintura | 14d | 2027-03-08 | 2027-04-02 | A19680 | 157.93d |
|  | P09 | **Piso 09** |  | 2027-04-02 | 2027-04-20 |  |  |
| A19700 |  | Segunda Mano de pintura | 12d | 2027-04-02 | 2027-04-20 | A19690 | 157.93d |
|  | P10 | **Piso 10** |  | 2027-04-20 | 2027-05-06 |  |  |
| A19710 |  | Segunda Mano de pintura | 12d | 2027-04-20 | 2027-05-06 | A19700 | 157.93d |
|  | P11 | **Piso 11** |  | 2027-05-06 | 2027-05-24 |  |  |
| A19720 |  | Segunda Mano de pintura | 11d | 2027-05-06 | 2027-05-24 | A19710 | 157.93d |
|  | P12 | **Piso 12** |  | 2027-05-24 | 2027-06-10 |  |  |
| A19730 |  | Segunda Mano de pintura | 11d | 2027-05-24 | 2027-06-10 | A19720 | 157.93d |
|  | P13 | **Piso 13** |  | 2027-06-10 | 2027-06-25 |  |  |
| A19750 |  | Segunda Mano de pintura | 11d | 2027-06-10 | 2027-06-25 | A19730 | 157.93d |
|  | P14 | **Piso 14** |  | 2027-06-25 | 2027-07-13 |  |  |
| A19760 |  | Segunda Mano de pintura | 11d | 2027-06-25 | 2027-07-13 | A19750 | 157.93d |
|  | P15 | **Piso 15** |  | 2027-07-13 | 2027-07-27 |  |  |
| A19770 |  | Segunda Mano de pintura | 9d | 2027-07-13 | 2027-07-27 | A19760 | 157.93d |
|  | P16 | **Piso 16** |  | 2027-08-03 | 2027-08-17 |  |  |
| A19780 |  | Segunda Mano de pintura | 9d | 2027-08-03 | 2027-08-17 | A19770 FS+5d | 157.93d |
|  | Ceramica y Enchapes | **Ceramica y Enchapes** |  | 2026-10-13 | 2027-08-03 |  |  |
|  | P03 | **Piso 03** |  | 2026-10-13 | 2026-12-04 |  |  |
| A5690 |  | Muros y piso de Baño | 12d | 2026-10-13 | 2026-10-29 | A1290 SS-60d | 31.93d |
| A5700 |  | Piso de Alcobas | 8d | 2026-10-29 | 2026-11-11 | A5690 | 31.93d |
| A5710 |  | Piso Sala | 4d | 2026-11-11 | 2026-11-18 | A5700 | 31.93d |
| A5720 |  | Piso cocina y labores | 4d | 2026-11-18 | 2026-11-24 | A5710 | 264.93d |
| A5730 |  | Piso Balcon | 4d | 2026-11-24 | 2026-11-30 | A5720 | 264.93d |
| A5740 |  | Salpicadero Lavadero | 4d | 2026-11-30 | 2026-12-04 | A5730 | 264.93d |
|  | P04 | **Piso 04** |  | 2026-11-30 | 2027-02-08 |  |  |
| A5750 |  | Muros y piso de Baño | 12d | 2026-11-30 | 2026-12-17 | A5690 FS+20d | 166.93d |
| A5760 |  | Piso de Alcobas | 8d | 2026-12-17 | 2027-01-15 | A5700, A5750 | 201.93d |
| A5770 |  | Piso Sala | 4d | 2027-01-15 | 2027-01-21 | A5710, A5760 | 236.93d |
| A5780 |  | Piso cocina y labores | 4d | 2027-01-21 | 2027-01-27 | A5770, A5720 | 236.93d |
| A5790 |  | Piso Balcon | 4d | 2027-01-27 | 2027-02-02 | A5730, A5780 | 236.93d |
| A5800 |  | Salpicadero Lavadero | 4d | 2027-02-02 | 2027-02-08 | A5740, A5790 | 236.93d |
|  | P05 | **Piso 05** |  | 2026-12-17 | 2027-02-24 |  |  |
| A5810 |  | Muros y piso de Baño | 12d | 2026-12-17 | 2027-01-21 | A5750 | 166.93d |
| A5820 |  | Piso de Alcobas | 8d | 2027-01-21 | 2027-02-02 | A5810, A5760 | 197.93d |
| A5830 |  | Piso Sala | 4d | 2027-02-02 | 2027-02-08 | A5820, A5770 | 228.93d |
| A5840 |  | Piso cocina y labores | 4d | 2027-02-08 | 2027-02-12 | A5830, A5780 | 228.93d |
| A5850 |  | Piso Balcon | 4d | 2027-02-12 | 2027-02-18 | A5840, A5790 | 228.93d |
| A5860 |  | Salpicadero Lavadero | 4d | 2027-02-18 | 2027-02-24 | A5850, A5800 | 228.93d |
|  | P06 | **Piso 06** |  | 2027-01-21 | 2027-03-12 |  |  |
| A5870 |  | Muros y piso de Baño | 12d | 2027-01-21 | 2027-02-08 | A5810 | 166.93d |
| A5880 |  | Piso de Alcobas | 8d | 2027-02-08 | 2027-02-18 | A5870, A5820 | 193.93d |
| A5890 |  | Piso Sala | 4d | 2027-02-18 | 2027-02-24 | A5880, A5830 | 220.93d |
| A5900 |  | Piso cocina y labores | 4d | 2027-02-24 | 2027-03-02 | A5840, A5890 | 220.93d |

| ID | WBS | Task | Duration | Start | Finish | Predecessors | Total float |
| --- | --- | --- | --- | --- | --- | --- | --- |
| A5910 |  | Piso Balcon | 4d | 2027-03-02 | 2027-03-08 | A5900, A5850 | 220.93d |
| A5920 |  | Salpicadero Lavadero | 4d | 2027-03-08 | 2027-03-12 | A5860, A5910 | 220.93d |
|  | P07 | **Piso 07** |  | 2027-02-08 | 2027-04-06 |  |  |
| A5930 |  | Muros y piso de Baño | 12d | 2027-02-08 | 2027-02-24 | A5870 | 166.93d |
| A5940 |  | Piso de Alcobas | 8d | 2027-02-24 | 2027-03-08 | A5880, A5930 | 189.93d |
| A5950 |  | Piso Sala | 4d | 2027-03-08 | 2027-03-12 | A5890, A5940 | 212.93d |
| A5960 |  | Piso cocina y labores | 4d | 2027-03-12 | 2027-03-18 | A5900, A5950 | 212.93d |
| A5970 |  | Piso Balcon | 4d | 2027-03-18 | 2027-03-31 | A5910, A5960 | 212.93d |
| A5980 |  | Salpicadero Lavadero | 4d | 2027-03-31 | 2027-04-06 | A5920, A5970 | 212.93d |
|  | P08 | **Piso 08** |  | 2027-02-24 | 2027-04-22 |  |  |
| A5990 |  | Muros y piso de Baño | 12d | 2027-02-24 | 2027-03-12 | A5930 | 166.93d |
| A6000 |  | Piso de Alcobas | 8d | 2027-03-12 | 2027-03-31 | A5990, A5940 | 185.93d |
| A6010 |  | Piso Sala | 4d | 2027-03-31 | 2027-04-06 | A6000, A5950 | 204.93d |
| A6020 |  | Piso cocina y labores | 4d | 2027-04-06 | 2027-04-12 | A6010, A5960 | 204.93d |
| A6030 |  | Piso Balcon | 4d | 2027-04-12 | 2027-04-16 | A6020, A5970 | 204.93d |
| A6040 |  | Salpicadero Lavadero | 4d | 2027-04-16 | 2027-04-22 | A5980, A6030 | 204.93d |
|  | P09 | **Piso 09** |  | 2027-03-12 | 2027-04-29 |  |  |
| A6050 |  | Muros y piso de Baño | 10d | 2027-03-12 | 2027-04-02 | A5990 | 166.93d |
| A6060 |  | Piso de Alcobas | 7d | 2027-04-02 | 2027-04-13 | A6000, A6050 | 183.93d |
| A6070 |  | Piso Sala | 3d | 2027-04-13 | 2027-04-16 | A6010, A6060 | 202.93d |
| A6080 |  | Piso cocina y labores | 3d | 2027-04-16 | 2027-04-21 | A6020, A6070 | 202.93d |
| A6090 |  | Piso Balcon | 3d | 2027-04-21 | 2027-04-26 | A6030, A6080 | 202.93d |
| A6100 |  | Salpicadero Lavadero | 3d | 2027-04-26 | 2027-04-29 | A6040, A6090 | 202.93d |
|  | P10 | **Piso 10** |  | 2027-04-02 | 2027-05-14 |  |  |
| A6110 |  | Muros y piso de Baño | 10d | 2027-04-02 | 2027-04-16 | A6050 | 166.93d |
| A6120 |  | Piso de Alcobas | 7d | 2027-04-16 | 2027-04-27 | A6110, A6060 | 180.93d |
| A6130 |  | Piso Sala | 3d | 2027-04-27 | 2027-04-30 | A6070, A6120 | 195.93d |
| A6140 |  | Piso cocina y labores | 3d | 2027-04-30 | 2027-05-05 | A6080, A6130 | 195.93d |
| A6150 |  | Piso Balcon | 3d | 2027-05-05 | 2027-05-11 | A6140, A6090 | 195.93d |
| A6160 |  | Salpicadero Lavadero | 3d | 2027-05-11 | 2027-05-14 | A6150, A6100 | 195.93d |
|  | P11 | **Piso 11** |  | 2027-04-16 | 2027-05-26 |  |  |
| A6170 |  | Muros y piso de Baño | 9d | 2027-04-16 | 2027-04-29 | A6110 | 166.93d |
| A6180 |  | Piso de Alcobas | 6d | 2027-04-29 | 2027-05-07 | A6170, A6120 | 178.93d |
| A6190 |  | Piso Sala | 3d | 2027-05-07 | 2027-05-13 | A6180, A6130 | 190.93d |
| A6200 |  | Piso cocina y labores | 3d | 2027-05-13 | 2027-05-18 | A6190, A6140 | 190.93d |
| A6210 |  | Piso Balcon | 3d | 2027-05-18 | 2027-05-21 | A6200, A6150 | 190.93d |
| A6220 |  | Salpicadero Lavadero | 3d | 2027-05-21 | 2027-05-26 | A6210, A6160 | 190.93d |
|  | P12 | **Piso 12** |  | 2027-04-29 | 2027-06-10 |  |  |
| A6230 |  | Muros y piso de Baño | 9d | 2027-04-29 | 2027-05-13 | A6170 | 166.93d |
| A6240 |  | Piso de Alcobas | 6d | 2027-05-13 | 2027-05-21 | A6230, A6180 | 175.93d |
| A6250 |  | Piso Sala | 3d | 2027-05-21 | 2027-05-26 | A6240, A6190 | 184.93d |
| A6260 |  | Piso cocina y labores | 3d | 2027-05-26 | 2027-06-01 | A6250, A6200 | 184.93d |
| A6270 |  | Piso Balcon | 3d | 2027-06-01 | 2027-06-04 | A6260, A6210 | 184.93d |
| A6280 |  | Salpicadero Lavadero | 3d | 2027-06-04 | 2027-06-10 | A6270, A6220 | 184.93d |
|  | P13 | **Piso 13** |  | 2027-05-13 | 2027-06-23 |  |  |
| A6290 |  | Muros y piso de Baño | 9d | 2027-05-13 | 2027-05-26 | A6230 | 166.93d |
| A6300 |  | Piso de Alcobas | 6d | 2027-05-26 | 2027-06-04 | A6240, A6290 | 172.93d |
| A6310 |  | Piso Sala | 3d | 2027-06-04 | 2027-06-10 | A6250, A6300 | 178.93d |
| A6320 |  | Piso cocina y labores | 3d | 2027-06-10 | 2027-06-15 | A6260, A6310 | 178.93d |
| A6330 |  | Piso Balcon | 3d | 2027-06-15 | 2027-06-18 | A6270, A6320 | 178.93d |
| A6340 |  | Salpicadero Lavadero | 3d | 2027-06-18 | 2027-06-23 | A6280, A6330 | 178.93d |
|  | P14 | **Piso 14** |  | 2027-05-26 | 2027-07-06 |  |  |
| A6350 |  | Muros y piso de Baño | 8d | 2027-05-26 | 2027-06-09 | A6290 | 166.93d |
| A6360 |  | Piso de Alcobas | 6d | 2027-06-09 | 2027-06-17 | A6350, A6300 | 170.93d |
| A6370 |  | Piso Sala | 3d | 2027-06-17 | 2027-06-22 | A6360, A6310 | 173.93d |
| A6380 |  | Piso cocina y labores | 3d | 2027-06-22 | 2027-06-25 | A6370, A6320 | 173.93d |
| A6390 |  | Piso Balcon | 3d | 2027-06-25 | 2027-06-30 | A6380, A6330 | 173.93d |
| A6400 |  | Salpicadero Lavadero | 3d | 2027-06-30 | 2027-07-06 | A6340, A6390 | 173.93d |
|  | P15 | **Piso 15** |  | 2027-06-09 | 2027-07-16 |  |  |
| A6410 |  | Muros y piso de Baño | 8d | 2027-06-09 | 2027-06-21 | A6350 | 166.93d |
| A6420 |  | Piso de Alcobas | 6d | 2027-06-21 | 2027-06-29 | A6410, A6360 | 168.93d |
| A6430 |  | Piso Sala | 3d | 2027-06-29 | 2027-07-02 | A6420, A6370 | 168.93d |
| A6440 |  | Piso cocina y labores | 3d | 2027-07-02 | 2027-07-08 | A6430, A6380 | 168.93d |
| A6450 |  | Piso Balcon | 3d | 2027-07-08 | 2027-07-13 | A6390, A6440 | 168.93d |
| A6460 |  | Salpicadero Lavadero | 3d | 2027-07-13 | 2027-07-16 | A6450, A6400 | 168.93d |
|  | P16 | **Piso 16** |  | 2027-06-21 | 2027-08-03 |  |  |
| A15240 |  | Muros y piso de Baño | 8d | 2027-06-21 | 2027-07-01 | A6410 | 166.93d |
| A15250 |  | Piso de Alcobas | 6d | 2027-07-01 | 2027-07-12 | A15240, A6420 | 166.93d |
| A15260 |  | Piso Sala | 3d | 2027-07-12 | 2027-07-15 | A6430, A15250 | 166.93d |
| A15270 |  | Piso cocina y labores | 3d | 2027-07-15 | 2027-07-21 | A6440, A15260 | 166.93d |

| ID | WBS | Task | Duration | Start | Finish | Predecessors | Total float |
| --- | --- | --- | --- | --- | --- | --- | --- |
| A15280 |  | Piso Balcon y Terraza | 6d | 2027-07-21 | 2027-07-29 | A6460, A15270 | 166.93d |
| A15290 |  | Salpicadero Lavadero | 3d | 2027-07-29 | 2027-08-03 | A15280, A6450 | 166.93d |
|  | Inst. Ventaneria | **Inst. Ventaneria** |  | 2026-11-18 | 2027-08-03 |  |  |
|  | P03 | **Piso 03** |  | 2026-11-18 | 2026-12-17 |  |  |
| A6560 |  | Inst. Puertas Ventanas | 8d | 2026-11-18 | 2026-11-30 | A19790 SS | 31.93d |
| A6580 |  | Inst. Ventanas | 12d | 2026-11-30 | 2026-12-17 | A6560 | 31.93d |
|  | P04 | **Piso 04** |  | 2026-11-30 | 2027-01-21 |  |  |
| A6590 |  | Inst. Puertas Ventanas | 8d | 2026-11-30 | 2026-12-11 | A6560 | 35.93d |
| A6610 |  | Inst. Ventanas | 12d | 2026-12-17 | 2027-01-21 | A6590, A6580 | 31.93d |
|  | P05 | **Piso 05** |  | 2026-12-11 | 2027-02-08 |  |  |
| A6620 |  | Inst. Puertas Ventanas | 8d | 2026-12-11 | 2026-12-23 | A6590 | 39.93d |
| A6640 |  | Inst. Ventanas | 12d | 2027-01-21 | 2027-02-08 | A6620, A6610 | 31.93d |
|  | P06 | **Piso 06** |  | 2026-12-23 | 2027-02-24 |  |  |
| A6650 |  | Inst. Puertas Ventanas | 8d | 2026-12-23 | 2027-01-21 | A6620 | 43.93d |
| A6670 |  | Inst. Ventanas | 12d | 2027-02-08 | 2027-02-24 | A6640, A6650 | 31.93d |
|  | P07 | **Piso 07** |  | 2027-01-21 | 2027-03-12 |  |  |
| A6680 |  | Inst. Puertas Ventanas | 8d | 2027-01-21 | 2027-02-02 | A6650 | 47.93d |
| A6700 |  | Inst. Ventanas | 12d | 2027-02-24 | 2027-03-12 | A6680, A6670 | 31.93d |
|  | P08 | **Piso 08** |  | 2027-02-02 | 2027-04-06 |  |  |
| A6710 |  | Inst. Puertas Ventanas | 8d | 2027-02-02 | 2027-02-12 | A6680 | 51.93d |
| A6730 |  | Inst. Ventanas | 12d | 2027-03-12 | 2027-04-06 | A6710, A6700 | 31.93d |
|  | P09 | **Piso 09** |  | 2027-02-12 | 2027-04-20 |  |  |
| A6740 |  | Inst. Puertas Ventanas | 6d | 2027-02-12 | 2027-02-22 | A6710 | 57.93d |
| A6760 |  | Inst. Ventanas | 10d | 2027-04-06 | 2027-04-20 | A6730, A6740 | 31.93d |
|  | P10 | **Piso 10** |  | 2027-02-22 | 2027-05-04 |  |  |
| A6770 |  | Inst. Puertas Ventanas | 6d | 2027-02-22 | 2027-03-02 | A6740 | 61.93d |
| A6790 |  | Inst. Ventanas | 10d | 2027-04-20 | 2027-05-04 | A6770, A6760 | 31.93d |
|  | P11 | **Piso 11** |  | 2027-03-02 | 2027-05-19 |  |  |
| A6800 |  | Inst. Puertas Ventanas | 6d | 2027-03-02 | 2027-03-10 | A6770 | 65.93d |
| A6820 |  | Inst. Ventanas | 10d | 2027-05-04 | 2027-05-19 | A6800, A6790 | 31.93d |
|  | P12 | **Piso 12** |  | 2027-03-10 | 2027-06-03 |  |  |
| A6830 |  | Inst. Puertas Ventanas | 6d | 2027-03-10 | 2027-03-18 | A6800 | 72.93d |
| A6850 |  | Inst. Ventanas | 10d | 2027-05-19 | 2027-06-03 | A6830, A6820 | 34.93d |
|  | P13 | **Piso 13** |  | 2027-03-18 | 2027-06-18 |  |  |
| A6860 |  | Inst. Puertas Ventanas | 6d | 2027-03-18 | 2027-04-02 | A6830 | 76.93d |
| A6880 |  | Inst. Ventanas | 10d | 2027-06-03 | 2027-06-18 | A6860, A6850 | 34.93d |
|  | P14 | **Piso 14** |  | 2027-04-02 | 2027-07-02 |  |  |
| A6890 |  | Inst. Puertas Ventanas | 6d | 2027-04-02 | 2027-04-12 | A6860 | 80.93d |
| A6910 |  | Inst. Ventanas | 10d | 2027-06-18 | 2027-07-02 | A6880, A6890 | 34.93d |
|  | P15 | **Piso 15** |  | 2027-04-12 | 2027-07-19 |  |  |
| A6920 |  | Inst. Puertas Ventanas | 6d | 2027-04-12 | 2027-04-20 | A6890 | 84.93d |
| A6940 |  | Inst. Ventanas | 10d | 2027-07-02 | 2027-07-19 | A6920, A6910 | 34.93d |
|  | P16 | **Piso 16** |  | 2027-04-20 | 2027-08-03 |  |  |
| A15060 |  | Inst. Puertas Ventanas | 6d | 2027-04-20 | 2027-04-28 | A6920 | 88.93d |
| A15300 |  | Inst. Ventanas | 10d | 2027-07-19 | 2027-08-03 | A6940, A15060 | 34.93d |
|  | Cableado | **Cableado** |  | 2026-12-10 | 2027-09-07 |  |  |
|  | P03 | **Piso 03** |  | 2026-12-10 | 2027-03-01 |  |  |
| A7070 |  | Inst. elec-comun | 44d | 2026-12-10 | 2027-03-01 | A1330 SS | 267.93d |
|  | P04 | **Piso 04** |  | 2027-01-14 | 2027-03-17 |  |  |
| A7110 |  | Inst. elec-comun | 44d | 2027-01-14 | 2027-03-17 | A6610 FS-5d | 255.93d |
|  | P05 | **Piso 05** |  | 2027-02-01 | 2027-04-09 |  |  |
| A7150 |  | Inst. elec-comun | 44d | 2027-02-01 | 2027-04-09 | A6640 FS-5d | 243.93d |
|  | P06 | **Piso 06** |  | 2027-02-17 | 2027-04-27 |  |  |
| A7190 |  | Inst. elec-comun | 44d | 2027-02-17 | 2027-04-27 | A6670 FS-5d | 231.93d |
|  | P07 | **Piso 07** |  | 2027-03-05 | 2027-05-14 |  |  |
| A7230 |  | Inst. elec-comun | 44d | 2027-03-05 | 2027-05-14 | A6700 FS-5d | 219.93d |
|  | P08 | **Piso 08** |  | 2027-03-30 | 2027-06-02 |  |  |
| A7270 |  | Inst. elec-comun | 44d | 2027-03-30 | 2027-06-02 | A6730 FS-5d | 207.93d |
|  | P09 | **Piso 09** |  | 2027-04-13 | 2027-06-11 |  |  |
| A7310 |  | Inst. elec-comun | 40d | 2027-04-13 | 2027-06-11 | A6760 FS-5d | 201.93d |
|  | P10 | **Piso 10** |  | 2027-04-27 | 2027-06-25 |  |  |
| A7350 |  | Inst. elec-comun | 40d | 2027-04-27 | 2027-06-25 | A6790 FS-5d | 191.93d |
|  | P11 | **Piso 11** |  | 2027-05-12 | 2027-07-06 |  |  |
| A7390 |  | Inst. elec-comun | 36d | 2027-05-12 | 2027-07-06 | A6820 FS-5d | 185.93d |
|  | P12 | **Piso 12** |  | 2027-05-26 | 2027-07-21 |  |  |
| A7430 |  | Inst. elec-comun | 36d | 2027-05-26 | 2027-07-21 | A6850 FS-5d | 175.93d |
|  | P13 | **Piso 13** |  | 2027-06-11 | 2027-07-30 |  |  |
| A7470 |  | Inst. elec-comun | 33d | 2027-06-11 | 2027-07-30 | A6880 FS-5d | 168.93d |
|  | P14 | **Piso 14** |  | 2027-06-25 | 2027-08-13 |  |  |
| A7510 |  | Inst. elec-comun | 33d | 2027-06-25 | 2027-08-13 | A6910 FS-5d | 158.93d |

| ID | WBS | Task | Duration | Start | Finish | Predecessors | Total float |
| --- | --- | --- | --- | --- | --- | --- | --- |
|  | P15 | **Piso 15** |  | 2027-07-12 | 2027-08-24 |  |  |
| A7550 |  | Inst. elec-comun | 29d | 2027-07-12 | 2027-08-24 | A6940 FS-5d | 152.93d |
|  | P16 | **Piso 16** |  | 2027-07-27 | 2027-09-07 |  |  |
| A15310 |  | Inst. elec-comun | 29d | 2027-07-27 | 2027-09-07 | A15300 FS-5d | 142.93d |
|  | Carpinteria Madera | **Carpinteria Madera** |  | 2027-01-26 | 2027-10-26 |  |  |
|  | P03 | **Piso 03** |  | 2027-01-26 | 2027-04-09 |  |  |
| A19850 |  | Muebles de cocina | 4d | 2027-01-26 | 2027-02-01 | A19970 SS+20d | 168.93d |
| A19860 |  | Mueble lavadero | 4d | 2027-02-01 | 2027-02-05 | A19850 | 168.93d |
| A19870 |  | Muebles de baño | 16d | 2027-02-05 | 2027-03-01 | A19860 | 168.93d |
| A19880 |  | Closets | 4d | 2027-03-01 | 2027-03-05 | A19870 | 168.93d |
| A19890 |  | Muebles de lino | 8d | 2027-03-05 | 2027-03-17 | A19880 | 168.93d |
| A19900 |  | Puertas | 12d | 2027-03-17 | 2027-04-09 | A19890 | 168.93d |
|  | P04 | **Piso 04** |  | 2027-03-04 | 2027-05-19 |  |  |
| A19910 |  | Muebles de cocina | 4d | 2027-03-04 | 2027-03-10 | A6610 FS+30d | 125.93d |
| A19920 |  | Mueble lavadero | 4d | 2027-03-10 | 2027-03-16 | A19910 | 125.93d |
| A19930 |  | Muebles de baño | 16d | 2027-03-16 | 2027-04-14 | A19920 | 125.93d |
| A19940 |  | Closets | 4d | 2027-04-14 | 2027-04-20 | A19930 | 125.93d |
| A19950 |  | Muebles de lino | 8d | 2027-04-20 | 2027-04-30 | A19940 | 125.93d |
| A19960 |  | Puertas | 12d | 2027-04-30 | 2027-05-19 | A19950 | 125.93d |
|  | P05 | **Piso 05** |  | 2027-03-29 | 2027-06-08 |  |  |
| A19990 |  | Muebles de cocina | 4d | 2027-03-29 | 2027-04-02 | A6640 FS+30d | 108.93d |
| A20000 |  | Mueble lavadero | 4d | 2027-04-02 | 2027-04-08 | A19990 | 108.93d |
| A20010 |  | Muebles de baño | 16d | 2027-04-08 | 2027-04-30 | A20000 | 108.93d |
| A20020 |  | Closets | 4d | 2027-04-30 | 2027-05-06 | A20010 | 108.93d |
| A20030 |  | Muebles de lino | 8d | 2027-05-06 | 2027-05-19 | A20020 | 108.93d |
| A20040 |  | Puertas | 12d | 2027-05-19 | 2027-06-08 | A20030 | 108.93d |
|  | P06 | **Piso 06** |  | 2027-04-14 | 2027-06-24 |  |  |
| A20050 |  | Muebles de cocina | 4d | 2027-04-14 | 2027-04-20 | A6670 FS+30d | 93.93d |
| A20060 |  | Mueble lavadero | 4d | 2027-04-20 | 2027-04-26 | A20050 | 93.93d |
| A20070 |  | Muebles de baño | 16d | 2027-04-26 | 2027-05-19 | A20060 | 93.93d |
| A20080 |  | Closets | 4d | 2027-05-19 | 2027-05-25 | A20070 | 93.93d |
| A20090 |  | Muebles de lino | 8d | 2027-05-25 | 2027-06-08 | A20080 | 93.93d |
| A20100 |  | Puertas | 12d | 2027-06-08 | 2027-06-24 | A20090 | 93.93d |
|  | P07 | **Piso 07** |  | 2027-04-30 | 2027-07-13 |  |  |
| A20110 |  | Muebles de cocina | 4d | 2027-04-30 | 2027-05-06 | A6700 FS+30d | 77.93d |
| A20120 |  | Mueble lavadero | 4d | 2027-05-06 | 2027-05-13 | A20110 | 77.93d |
| A20130 |  | Muebles de baño | 16d | 2027-05-13 | 2027-06-08 | A20120 | 77.93d |
| A20140 |  | Closets | 4d | 2027-06-08 | 2027-06-14 | A20130 | 77.93d |
| A20150 |  | Muebles de lino | 8d | 2027-06-14 | 2027-06-24 | A20140 | 77.93d |
| A20160 |  | Puertas | 12d | 2027-06-24 | 2027-07-13 | A20150 | 77.93d |
|  | P08 | **Piso 08** |  | 2027-05-19 | 2027-07-30 |  |  |
| A20170 |  | Muebles de cocina | 4d | 2027-05-19 | 2027-05-25 | A6730 FS+30d | 67.93d |
| A20180 |  | Mueble lavadero | 4d | 2027-05-25 | 2027-06-01 | A20170 | 67.93d |
| A20190 |  | Muebles de baño | 16d | 2027-06-01 | 2027-06-24 | A20180 | 67.93d |
| A20200 |  | Closets | 4d | 2027-06-24 | 2027-06-30 | A20190 | 67.93d |
| A20210 |  | Muebles de lino | 8d | 2027-06-30 | 2027-07-13 | A20200 | 67.93d |
| A20220 |  | Puertas | 12d | 2027-07-13 | 2027-07-30 | A20210 | 67.93d |
|  | P09 | **Piso 09** |  | 2027-06-03 | 2027-08-03 |  |  |
| A20230 |  | Muebles de cocina | 3d | 2027-06-03 | 2027-06-09 | A6760 FS+30d | 64.93d |
| A20240 |  | Mueble lavadero | 3d | 2027-06-09 | 2027-06-14 | A20230 | 64.93d |
| A20250 |  | Muebles de baño | 14d | 2027-06-14 | 2027-07-02 | A20240 | 64.93d |
| A20260 |  | Closets | 3d | 2027-07-02 | 2027-07-08 | A20250 | 64.93d |
| A20270 |  | Muebles de lino | 7d | 2027-07-08 | 2027-07-19 | A20260 | 64.93d |
| A20280 |  | Puertas | 10d | 2027-07-19 | 2027-08-03 | A20270 | 64.93d |
|  | P10 | **Piso 10** |  | 2027-06-18 | 2027-08-18 |  |  |
| A20290 |  | Muebles de cocina | 3d | 2027-06-18 | 2027-06-23 | A6790 FS+30d | 59.93d |
| A20300 |  | Mueble lavadero | 3d | 2027-06-23 | 2027-06-28 | A20290 | 59.93d |
| A20310 |  | Muebles de baño | 14d | 2027-06-28 | 2027-07-19 | A20300 | 59.93d |
| A20320 |  | Closets | 3d | 2027-07-19 | 2027-07-23 | A20310 | 59.93d |
| A20330 |  | Muebles de lino | 7d | 2027-07-23 | 2027-08-03 | A20320 | 59.93d |
| A20340 |  | Puertas | 10d | 2027-08-03 | 2027-08-18 | A20330 | 59.93d |
|  | P11 | **Piso 11** |  | 2027-07-02 | 2027-08-27 |  |  |
| A20350 |  | Muebles de cocina | 3d | 2027-07-02 | 2027-07-08 | A6820 FS+30d | 31.93d |
| A20360 |  | Mueble lavadero | 3d | 2027-07-08 | 2027-07-13 | A20350 | 31.93d |
| A20370 |  | Muebles de baño | 13d | 2027-07-13 | 2027-08-02 | A20360 | 31.93d |
| A20380 |  | Closets | 3d | 2027-08-02 | 2027-08-05 | A20370 | 31.93d |
| A20390 |  | Muebles de lino | 6d | 2027-08-05 | 2027-08-13 | A20380 | 31.93d |
| A20400 |  | Puertas | 9d | 2027-08-13 | 2027-08-27 | A20390 | 31.93d |
|  | P12 | **Piso 12** |  | 2027-07-19 | 2027-09-10 |  |  |
| A20410 |  | Muebles de cocina | 3d | 2027-07-19 | 2027-07-23 | A6850 FS+30d | 66.93d |

| ID | WBS | Task | Duration | Start | Finish | Predecessors | Total float |
| --- | --- | --- | --- | --- | --- | --- | --- |
| A20420 |  | Mueble lavadero | 3d | 2027-07-23 | 2027-07-28 | A20410 | 66.93d |
| A20430 |  | Muebles de baño | 13d | 2027-07-28 | 2027-08-17 | A20420 | 66.93d |
| A20440 |  | Closets | 3d | 2027-08-17 | 2027-08-20 | A20430 | 66.93d |
| A20450 |  | Muebles de lino | 6d | 2027-08-20 | 2027-08-30 | A20440 | 66.93d |
| A20460 |  | Puertas | 9d | 2027-08-30 | 2027-09-10 | A20450 | 66.93d |
|  | P13 | **Piso 13** |  | 2027-08-03 | 2027-09-22 |  |  |
| A20470 |  | Muebles de cocina | 3d | 2027-08-03 | 2027-08-06 | A6880 FS+30d | 55.93d |
| A20480 |  | Mueble lavadero | 3d | 2027-08-06 | 2027-08-11 | A20470 | 55.93d |
| A20490 |  | Muebles de baño | 12d | 2027-08-11 | 2027-08-30 | A20480 | 55.93d |
| A20500 |  | Closets | 3d | 2027-08-30 | 2027-09-02 | A20490 | 55.93d |
| A20510 |  | Muebles de lino | 6d | 2027-09-02 | 2027-09-10 | A20500 | 55.93d |
| A20520 |  | Puertas | 8d | 2027-09-10 | 2027-09-22 | A20510 | 55.93d |
|  | P14 | **Piso 14** |  | 2027-08-18 | 2027-10-06 |  |  |
| A20530 |  | Muebles de cocina | 3d | 2027-08-18 | 2027-08-23 | A6910 FS+30d | 50.93d |
| A20540 |  | Mueble lavadero | 3d | 2027-08-23 | 2027-08-26 | A20530 | 50.93d |
| A20550 |  | Muebles de baño | 12d | 2027-08-26 | 2027-09-13 | A20540 | 50.93d |
| A20560 |  | Closets | 3d | 2027-09-13 | 2027-09-16 | A20550 | 50.93d |
| A20570 |  | Muebles de lino | 6d | 2027-09-16 | 2027-09-24 | A20560 | 50.93d |
| A20580 |  | Puertas | 8d | 2027-09-24 | 2027-10-06 | A20570 | 50.93d |
|  | P15 | **Piso 15** |  | 2027-09-01 | 2027-10-11 |  |  |
| A20590 |  | Muebles de cocina | 2d | 2027-09-01 | 2027-09-03 | A6940 FS+30d | 39.93d |
| A20600 |  | Mueble lavadero | 2d | 2027-09-03 | 2027-09-07 | A20590 | 39.93d |
| A20610 |  | Muebles de baño | 10d | 2027-09-07 | 2027-09-21 | A20600 | 39.93d |
| A20620 |  | Closets | 2d | 2027-09-21 | 2027-09-23 | A20610 | 39.93d |
| A20630 |  | Muebles de lino | 5d | 2027-09-23 | 2027-09-30 | A20620 | 39.93d |
| A20640 |  | Puertas | 7d | 2027-09-30 | 2027-10-11 | A20630 | 39.93d |
|  | P16 | **Piso 16** |  | 2027-09-15 | 2027-10-26 |  |  |
| A20650 |  | Muebles de cocina | 2d | 2027-09-15 | 2027-09-17 | A15300 FS+30d | 34.93d |
| A20660 |  | Mueble lavadero | 2d | 2027-09-17 | 2027-09-21 | A20650 | 34.93d |
| A20670 |  | Muebles de baño | 10d | 2027-09-21 | 2027-10-05 | A20660 | 34.93d |
| A20680 |  | Closets | 2d | 2027-10-05 | 2027-10-07 | A20670 | 34.93d |
| A20690 |  | Muebles de lino | 5d | 2027-10-07 | 2027-10-14 | A20680 | 34.93d |
| A20700 |  | Puertas | 7d | 2027-10-14 | 2027-10-26 | A20690 | 34.93d |
|  | Mesones | **Mesones** |  | 2027-04-01 | 2027-11-03 |  |  |
|  | P03 | **Piso 03** |  | 2027-04-01 | 2027-04-27 |  |  |
| A20710 |  | Mesones de baño | 4d | 2027-04-01 | 2027-04-07 | A20730 | 168.93d |
| A20720 |  | Mesones de cocina | 16d | 2027-04-05 | 2027-04-27 | A20710 FS-2d | 231.93d |
|  | P04 | **Piso 04** |  | 2027-05-12 | 2027-06-09 |  |  |
| A20750 |  | Mesones de baño | 4d | 2027-05-12 | 2027-05-18 | A19960 FS-5d | 125.93d |
| A20760 |  | Mesones de cocina | 16d | 2027-05-14 | 2027-06-09 | A20750 FS-2d | 203.93d |
|  | P05 | **Piso 05** |  | 2027-05-28 | 2027-06-25 |  |  |
| A20770 |  | Mesones de baño | 4d | 2027-05-28 | 2027-06-04 | A20040 FS-5d | 108.93d |
| A20780 |  | Mesones de cocina | 16d | 2027-06-02 | 2027-06-25 | A20770 FS-2d | 191.93d |
|  | P06 | **Piso 06** |  | 2027-06-17 | 2027-07-14 |  |  |
| A20790 |  | Mesones de baño | 4d | 2027-06-17 | 2027-06-23 | A20100 FS-5d | 93.93d |
| A20800 |  | Mesones de cocina | 16d | 2027-06-21 | 2027-07-14 | A20790 FS-2d | 179.93d |
|  | P07 | **Piso 07** |  | 2027-07-06 | 2027-08-02 |  |  |
| A20810 |  | Mesones de baño | 4d | 2027-07-06 | 2027-07-12 | A20160 FS-5d | 77.93d |
| A20820 |  | Mesones de cocina | 16d | 2027-07-08 | 2027-08-02 | A20810 FS-2d | 167.93d |
|  | P08 | **Piso 08** |  | 2027-07-23 | 2027-08-19 |  |  |
| A20840 |  | Mesones de baño | 4d | 2027-07-23 | 2027-07-29 | A20220 FS-5d | 67.93d |
| A20850 |  | Mesones de cocina | 16d | 2027-07-27 | 2027-08-19 | A20840 FS-2d | 155.93d |
|  | P09 | **Piso 09** |  | 2027-07-27 | 2027-08-18 |  |  |
| A20860 |  | Mesones de baño | 3d | 2027-07-27 | 2027-07-30 | A20280 FS-5d | 64.93d |
| A20870 |  | Mesones de cocina | 14d | 2027-07-28 | 2027-08-18 | A20860 FS-2d | 156.93d |
|  | P10 | **Piso 10** |  | 2027-08-10 | 2027-09-01 |  |  |
| A20880 |  | Mesones de baño | 3d | 2027-08-10 | 2027-08-13 | A20340 FS-5d | 59.93d |
| A20890 |  | Mesones de cocina | 14d | 2027-08-11 | 2027-09-01 | A20880 FS-2d | 146.93d |
|  | P11 | **Piso 11** |  | 2027-08-20 | 2027-09-09 |  |  |
| A20900 |  | Mesones de baño | 3d | 2027-08-20 | 2027-08-25 | A20400 FS-5d | 31.93d |
| A20910 |  | Mesones de cocina | 13d | 2027-08-23 | 2027-09-09 | A20900 FS-2d | 140.93d |
|  | P12 | **Piso 12** |  | 2027-09-03 | 2027-09-23 |  |  |
| A20920 |  | Mesones de baño | 3d | 2027-09-03 | 2027-09-08 | A20460 FS-5d | 66.93d |
| A20930 |  | Mesones de cocina | 13d | 2027-09-06 | 2027-09-23 | A20920 FS-2d | 130.93d |
|  | P13 | **Piso 13** |  | 2027-09-15 | 2027-10-04 |  |  |
| A20940 |  | Mesones de baño | 3d | 2027-09-15 | 2027-09-20 | A20520 FS-5d | 55.93d |
| A20950 |  | Mesones de cocina | 12d | 2027-09-16 | 2027-10-04 | A20940 FS-2d | 123.93d |
|  | P14 | **Piso 14** |  | 2027-09-29 | 2027-10-19 |  |  |
| A20960 |  | Mesones de baño | 3d | 2027-09-29 | 2027-10-04 | A20580 FS-5d | 50.93d |
| A20970 |  | Mesones de cocina | 12d | 2027-09-30 | 2027-10-19 | A20960 FS-2d | 113.93d |

| ID | WBS | Task | Duration | Start | Finish | Predecessors | Total float |
| --- | --- | --- | --- | --- | --- | --- | --- |
|  | P15 | **Piso 15** |  | 2027-10-04 | 2027-10-19 |  |  |
| A20980 |  | Mesones de baño | 2d | 2027-10-04 | 2027-10-06 | A20640 FS-5d | 39.93d |
| A20990 |  | Mesones de cocina | 10d | 2027-10-04 | 2027-10-19 | A20980 FS-2d | 113.93d |
|  | P16 | **Piso 16** |  | 2027-10-19 | 2027-11-03 |  |  |
| A21000 |  | Mesones de baño | 2d | 2027-10-19 | 2027-10-21 | A20700 FS-5d | 34.93d |
| A21010 |  | Mesones de cocina | 10d | 2027-10-19 | 2027-11-03 | A21000 FS-2d | 103.93d |
|  | Inst. Baranda Divisiones Banos y Espejos | **Inst. Baranda Divisiones Banos y Espejos** |  | 2027-04-21 | 2027-12-02 |  |  |
|  | P03 | **Piso 03** |  | 2027-04-21 | 2027-07-01 |  |  |
| A21020 |  | Division de duchas | 20d | 2027-04-21 | 2027-05-20 | A1370 SS+10d | 168.93d |
| A21030 |  | Espejos de baño | 12d | 2027-04-27 | 2027-05-14 | A21020 SS+4d | 219.93d |
| A21040 |  | Barandas balcon | 28d | 2027-05-20 | 2027-07-01 | A21020 | 187.93d |
|  | P04 | **Piso 04** |  | 2027-05-18 | 2027-07-29 |  |  |
| A21080 |  | Division de duchas | 20d | 2027-05-18 | 2027-06-17 | A20750 | 125.93d |
| A21090 |  | Espejos de baño | 12d | 2027-05-24 | 2027-06-11 | A21080 SS+4d | 201.93d |
| A21100 |  | Barandas balcon | 28d | 2027-06-17 | 2027-07-29 | A21080 | 169.93d |
|  | P05 | **Piso 05** |  | 2027-06-04 | 2027-08-17 |  |  |
| A21050 |  | Division de duchas | 20d | 2027-06-04 | 2027-07-06 | A20770 | 108.93d |
| A21060 |  | Espejos de baño | 12d | 2027-06-11 | 2027-06-29 | A21050 SS+4d | 189.93d |
| A21070 |  | Barandas balcon | 28d | 2027-07-06 | 2027-08-17 | A21050 | 157.93d |
|  | P06 | **Piso 06** |  | 2027-06-23 | 2027-09-02 |  |  |
| A21110 |  | Division de duchas | 20d | 2027-06-23 | 2027-07-23 | A20790 | 93.93d |
| A21120 |  | Espejos de baño | 12d | 2027-06-29 | 2027-07-16 | A21110 SS+4d | 177.93d |
| A21130 |  | Barandas balcon | 28d | 2027-07-23 | 2027-09-02 | A21110 | 145.93d |
|  | P07 | **Piso 07** |  | 2027-07-12 | 2027-09-20 |  |  |
| A21140 |  | Division de duchas | 20d | 2027-07-12 | 2027-08-10 | A20810 | 77.93d |
| A21150 |  | Espejos de baño | 12d | 2027-07-16 | 2027-08-04 | A21140 SS+4d | 165.93d |
| A21160 |  | Barandas balcon | 28d | 2027-08-10 | 2027-09-20 | A21140 | 133.93d |
|  | P08 | **Piso 08** |  | 2027-07-29 | 2027-10-06 |  |  |
| A21170 |  | Division de duchas | 20d | 2027-07-29 | 2027-08-27 | A20840 | 67.93d |
| A21180 |  | Espejos de baño | 12d | 2027-08-04 | 2027-08-23 | A21170 SS+4d | 153.93d |
| A21190 |  | Barandas balcon | 28d | 2027-08-27 | 2027-10-06 | A21170 | 121.93d |
|  | P09 | **Piso 09** |  | 2027-07-30 | 2027-09-29 |  |  |
| A21200 |  | Division de duchas | 17d | 2027-07-30 | 2027-08-25 | A20860 | 64.93d |
| A21210 |  | Espejos de baño | 9d | 2027-08-05 | 2027-08-19 | A21200 SS+4d | 155.93d |
| A21220 |  | Barandas balcon | 25d | 2027-08-25 | 2027-09-29 | A21200 | 126.93d |
|  | P10 | **Piso 10** |  | 2027-08-13 | 2027-10-13 |  |  |
| A21230 |  | Division de duchas | 17d | 2027-08-13 | 2027-09-08 | A20880 | 59.93d |
| A21240 |  | Espejos de baño | 9d | 2027-08-20 | 2027-09-02 | A21230 SS+4d | 145.93d |
| A21250 |  | Barandas balcon | 25d | 2027-09-08 | 2027-10-13 | A21230 | 116.93d |
|  | P11 | **Piso 11** |  | 2027-08-25 | 2027-10-19 |  |  |
| A21260 |  | Division de duchas | 15d | 2027-08-25 | 2027-09-15 | A20900 | 31.93d |
| A21270 |  | Espejos de baño | 9d | 2027-08-31 | 2027-09-13 | A21260 SS+4d | 138.93d |
| A21280 |  | Barandas balcon | 23d | 2027-09-15 | 2027-10-19 | A21260 | 113.93d |
|  | P12 | **Piso 12** |  | 2027-09-08 | 2027-11-03 |  |  |
| A21290 |  | Division de duchas | 15d | 2027-09-08 | 2027-09-29 | A20920 | 66.93d |
| A21300 |  | Espejos de baño | 9d | 2027-09-14 | 2027-09-27 | A21290 SS+4d | 128.93d |
| A21310 |  | Barandas balcon | 23d | 2027-09-29 | 2027-11-03 | A21290 | 103.93d |
|  | P13 | **Piso 13** |  | 2027-09-20 | 2027-11-11 |  |  |
| A21320 |  | Division de duchas | 15d | 2027-09-20 | 2027-10-11 | A20940 | 55.93d |
| A21330 |  | Espejos de baño | 9d | 2027-09-24 | 2027-10-07 | A21320 SS+4d | 120.93d |
| A21340 |  | Barandas balcon | 21d | 2027-10-11 | 2027-11-11 | A21320 | 97.93d |
|  | P14 | **Piso 14** |  | 2027-10-04 | 2027-11-26 |  |  |
| A21350 |  | Division de duchas | 15d | 2027-10-04 | 2027-10-26 | A20960 | 50.93d |
| A21360 |  | Espejos de baño | 9d | 2027-10-08 | 2027-10-22 | A21350 SS+4d | 110.93d |
| A21370 |  | Barandas balcon | 21d | 2027-10-26 | 2027-11-26 | A21350 | 87.93d |
|  | P15 | **Piso 15** |  | 2027-10-06 | 2027-11-22 |  |  |
| A21380 |  | Division de duchas | 12d | 2027-10-06 | 2027-10-25 | A20980 | 39.93d |
| A21390 |  | Espejos de baño | 6d | 2027-10-12 | 2027-10-21 | A21380 SS+4d | 111.93d |
| A21400 |  | Barandas balcon | 18d | 2027-10-25 | 2027-11-22 | A21380 | 91.93d |
|  | P16 | **Piso 16** |  | 2027-10-28 | 2027-12-02 |  |  |
| A21410 |  | Division de duchas | 12d | 2027-10-28 | 2027-11-17 | A21000 FS+5d | 34.93d |
| A21420 |  | Espejos de baño | 6d | 2027-11-04 | 2027-11-12 | A21410 SS+4d | 96.93d |
| A21430 |  | Barandas balcon 1 | 8d | 2027-11-17 | 2027-11-29 | A21410 | 83.93d |
| A21440 |  | Barandas balcon 2 | 8d | 2027-11-22 | 2027-12-02 | A21430 SS+3d | 83.93d |
|  | Dotacion | **Dotacion** |  | 2027-04-21 | 2028-01-27 |  |  |
|  | P03 | **Piso 03** |  | 2027-04-21 | 2027-07-12 |  |  |
| A21450 |  | Aparatos sanitarios y griferias | 40d | 2027-04-21 | 2027-06-21 | A1350 FS-20d | 168.93d |
| A21460 |  | Aparatos electricos y comunicaciones | 22d | 2027-05-20 | 2027-06-23 | A21450 FS-20d | 168.93d |
| A21470 |  | Gasodomesticos | 22d | 2027-06-09 | 2027-07-12 | A21460 FS-10d | 181.93d |
|  | P04 | **Piso 04** |  | 2027-05-18 | 2027-08-06 |  |  |

| ID | WBS | Task | Duration | Start | Finish | Predecessors | Total float |
| --- | --- | --- | --- | --- | --- | --- | --- |
| A21480 |  | Aparatos sanitarios y griferias | 40d | 2027-05-18 | 2027-07-16 | A21080 FS-20d | 125.93d |
| A21490 |  | Aparatos electricos y comunicaciones | 22d | 2027-06-17 | 2027-07-21 | A21480 FS-20d | 125.93d |
| A21500 |  | Gasodomesticos | 22d | 2027-07-06 | 2027-08-06 | A21490 FS-10d | 163.93d |
|  | P05 | **Piso 05** |  | 2027-06-04 | 2027-08-25 |  |  |
| A21510 |  | Aparatos sanitarios y griferias | 40d | 2027-06-04 | 2027-08-04 | A21050 FS-20d | 108.93d |
| A21520 |  | Aparatos electricos y comunicaciones | 22d | 2027-07-06 | 2027-08-06 | A21510 FS-20d | 108.93d |
| A21530 |  | Gasodomesticos | 22d | 2027-07-23 | 2027-08-25 | A21520 FS-10d | 151.93d |
|  | P06 | **Piso 06** |  | 2027-06-23 | 2027-09-10 |  |  |
| A21540 |  | Aparatos sanitarios y griferias | 40d | 2027-06-23 | 2027-08-23 | A21110 FS-20d | 93.93d |
| A21550 |  | Aparatos electricos y comunicaciones | 22d | 2027-07-23 | 2027-08-25 | A21540 FS-20d | 93.93d |
| A21560 |  | Gasodomesticos | 22d | 2027-08-10 | 2027-09-10 | A21550 FS-10d | 139.93d |
|  | P07 | **Piso 07** |  | 2027-07-12 | 2027-09-28 |  |  |
| A21570 |  | Aparatos sanitarios y griferias | 40d | 2027-07-12 | 2027-09-08 | A21140 FS-20d | 77.93d |
| A21580 |  | Aparatos electricos y comunicaciones | 22d | 2027-08-10 | 2027-09-10 | A21570 FS-20d | 77.93d |
| A21590 |  | Gasodomesticos | 22d | 2027-08-27 | 2027-09-28 | A21580 FS-10d | 127.93d |
|  | P08 | **Piso 08** |  | 2027-07-29 | 2027-10-14 |  |  |
| A21600 |  | Aparatos sanitarios y griferias | 40d | 2027-07-29 | 2027-09-24 | A21170 FS-20d | 67.93d |
| A21610 |  | Aparatos electricos y comunicaciones | 22d | 2027-08-27 | 2027-09-28 | A21600 FS-20d | 67.93d |
| A21620 |  | Gasodomesticos | 22d | 2027-09-14 | 2027-10-14 | A21610 FS-10d | 115.93d |
|  | P09 | **Piso 09** |  | 2027-07-27 | 2027-09-30 |  |  |
| A21630 |  | Aparatos sanitarios y griferias | 34d | 2027-07-27 | 2027-09-14 | A21200 FS-20d | 64.93d |
| A21640 |  | Aparatos electricos y comunicaciones | 17d | 2027-08-24 | 2027-09-16 | A21630 FS-15d | 64.93d |
| A21650 |  | Gasodomesticos | 17d | 2027-09-07 | 2027-09-30 | A21640 FS-7d | 125.93d |
|  | P10 | **Piso 10** |  | 2027-08-10 | 2027-10-14 |  |  |
| A21660 |  | Aparatos sanitarios y griferias | 34d | 2027-08-10 | 2027-09-28 | A21230 FS-20d | 59.93d |
| A21670 |  | Aparatos electricos y comunicaciones | 17d | 2027-09-07 | 2027-09-30 | A21660 FS-15d | 59.93d |
| A21680 |  | Gasodomesticos | 17d | 2027-09-21 | 2027-10-14 | A21670 FS-7d | 115.93d |
|  | P11 | **Piso 11** |  | 2027-08-18 | 2027-10-22 |  |  |
| A21690 |  | Aparatos sanitarios y griferias | 34d | 2027-08-18 | 2027-10-05 | A21260 FS-20d | 31.93d |
| A21700 |  | Aparatos electricos y comunicaciones | 17d | 2027-09-14 | 2027-10-07 | A21690 FS-15d | 31.93d |
| A21710 |  | Gasodomesticos | 17d | 2027-09-28 | 2027-10-22 | A21700 FS-7d | 110.93d |
|  | P12 | **Piso 12** |  | 2027-09-01 | 2027-11-08 |  |  |
| A21720 |  | Aparatos sanitarios y griferias | 34d | 2027-09-01 | 2027-10-20 | A21290 FS-20d | 66.93d |
| A21730 |  | Aparatos electricos y comunicaciones | 17d | 2027-09-28 | 2027-10-22 | A21720 FS-15d | 66.93d |
| A21740 |  | Gasodomesticos | 17d | 2027-10-12 | 2027-11-08 | A21730 FS-7d | 100.93d |
|  | P13 | **Piso 13** |  | 2027-09-13 | 2027-11-18 |  |  |
| A21750 |  | Aparatos sanitarios y griferias | 30d | 2027-09-13 | 2027-10-26 | A21320 FS-20d | 55.93d |
| A21760 |  | Aparatos electricos y comunicaciones | 15d | 2027-10-11 | 2027-11-03 | A21750 FS-10d | 55.93d |
| A21770 |  | Gasodomesticos | 15d | 2027-10-26 | 2027-11-18 | A21760 FS-5d | 93.93d |
|  | P14 | **Piso 14** |  | 2027-09-27 | 2027-12-02 |  |  |
| A21780 |  | Aparatos sanitarios y griferias | 30d | 2027-09-27 | 2027-11-10 | A21350 FS-20d | 50.93d |
| A21790 |  | Aparatos electricos y comunicaciones | 15d | 2027-10-26 | 2027-11-18 | A21780 FS-10d | 50.93d |
| A21800 |  | Gasodomesticos | 15d | 2027-11-10 | 2027-12-02 | A21790 FS-5d | 83.93d |
|  | P15 | **Piso 15** |  | 2027-09-24 | 2027-12-13 |  |  |
| A21810 |  | Aparatos sanitarios y griferias | 24d | 2027-09-24 | 2027-10-29 | A21380 FS-20d | 39.93d |
| A21820 |  | Aparatos electricos y comunicaciones | 14d | 2027-10-29 | 2027-11-22 | A21810 | 39.93d |
| A21830 |  | Gasodomesticos | 14d | 2027-11-22 | 2027-12-13 | A21820 | 77.93d |
|  | P16 | **Piso 16** |  | 2027-10-15 | 2028-01-27 |  |  |
| A21840 |  | Aparatos sanitarios y griferias | 24d | 2027-10-15 | 2027-11-23 | A21410 FS-20d | 34.93d |
| A21850 |  | Aparatos electricos y comunicaciones | 14d | 2027-11-08 | 2027-11-29 | A21840 FS-10d | 34.93d |
| A21860 |  | Gasodomesticos | 14d | 2027-11-22 | 2027-12-13 | A21850 FS-5d | 56.93d |
| A21870 |  | Jaccuzzi | 16d | 2027-12-13 | 2028-01-20 | A21860 | 56.93d |
| A21880 |  | BBQ | 5d | 2028-01-20 | 2028-01-27 | A21870 | 56.93d |
|  | Estuco y Pintura-03 | **Estuco y Pintura-03** |  | 2027-05-07 | 2028-02-10 |  |  |
|  | P03 | **Piso 03** |  | 2027-05-07 | 2027-06-15 |  |  |
| A21890 |  | Tercera Mano de pintura | 24d | 2027-05-07 | 2027-06-15 | A22030 SS-20d | 168.93d |
|  | P04 | **Piso 04** |  | 2027-07-06 | 2027-08-10 |  |  |
| A21900 |  | Tercera Mano de pintura | 24d | 2027-07-06 | 2027-08-10 | A21490 FS-10d | 125.93d |
|  | P05 | **Piso 05** |  | 2027-07-23 | 2027-08-27 |  |  |
| A21910 |  | Tercera Mano de pintura | 24d | 2027-07-23 | 2027-08-27 | A21520 FS-10d | 108.93d |
|  | P06 | **Piso 06** |  | 2027-08-10 | 2027-09-14 |  |  |
| A21920 |  | Tercera Mano de pintura | 24d | 2027-08-10 | 2027-09-14 | A21550 FS-10d | 93.93d |
|  | P07 | **Piso 07** |  | 2027-08-27 | 2027-09-30 |  |  |
| A21930 |  | Tercera Mano de pintura | 24d | 2027-08-27 | 2027-09-30 | A21580 FS-10d | 77.93d |
|  | P08 | **Piso 08** |  | 2027-09-14 | 2027-10-19 |  |  |
| A21940 |  | Tercera Mano de pintura | 24d | 2027-09-14 | 2027-10-19 | A21610 FS-10d | 67.93d |
|  | P09 | **Piso 09** |  | 2027-09-30 | 2027-11-02 |  |  |
| A21950 |  | Tercera Mano de pintura | 21d | 2027-09-30 | 2027-11-02 | A21640 FS+10d | 64.93d |
|  | P10 | **Piso 10** |  | 2027-10-14 | 2027-11-17 |  |  |
| A21960 |  | Tercera Mano de pintura | 21d | 2027-10-14 | 2027-11-17 | A21670 FS+10d | 59.93d |

| ID | WBS | Task | Duration | Start | Finish | Predecessors | Total float |
| --- | --- | --- | --- | --- | --- | --- | --- |
|  | P11 | **Piso 11** |  | 2027-10-22 | 2027-11-22 |  |  |
| A21970 |  | Tercera Mano de pintura | 19d | 2027-10-22 | 2027-11-22 | A21700 FS+10d | 31.93d |
|  | P12 | **Piso 12** |  | 2027-11-08 | 2027-12-06 |  |  |
| A21980 |  | Tercera Mano de pintura | 19d | 2027-11-08 | 2027-12-06 | A21730 FS+10d | 66.93d |
|  | P13 | **Piso 13** |  | 2027-11-25 | 2027-12-22 |  |  |
| A21990 |  | Tercera Mano de pintura | 18d | 2027-11-25 | 2027-12-22 | A21760 FS+15d | 55.93d |
|  | P14 | **Piso 14** |  | 2027-12-02 | 2028-01-14 |  |  |
| A22000 |  | Tercera Mano de pintura | 18d | 2027-12-02 | 2028-01-14 | A21790 FS+10d | 50.93d |
|  | P15 | **Piso 15** |  | 2028-01-13 | 2028-02-03 |  |  |
| A22010 |  | Tercera Mano de pintura | 15d | 2028-01-13 | 2028-02-03 | A21820 FS+25d | 39.93d |
|  | P16 | **Piso 16** |  | 2028-01-20 | 2028-02-10 |  |  |
| A22020 |  | Tercera Mano de pintura | 15d | 2028-01-20 | 2028-02-10 | A21850 FS+25d | 34.93d |
|  | Detallado y Aseo Apartamento | **Detallado y Aseo Apartamento** |  | 2027-06-15 | 2028-02-28 |  |  |
|  | P03 | **Piso 03** |  | 2027-06-15 | 2027-07-08 |  |  |
| A22060 |  | Detallado | 12d | 2027-06-15 | 2027-07-01 | A22090 | 168.93d |
| A22080 |  | Aseo | 4d | 2027-07-01 | 2027-07-08 | A22060 | 168.93d |
|  | P04 | **Piso 04** |  | 2027-08-10 | 2027-09-02 |  |  |
| A22110 |  | Detallado | 12d | 2027-08-10 | 2027-08-27 | A21900 | 125.93d |
| A22120 |  | Aseo | 4d | 2027-08-27 | 2027-09-02 | A22110 | 125.93d |
|  | P05 | **Piso 05** |  | 2027-08-27 | 2027-09-20 |  |  |
| A22130 |  | Detallado | 12d | 2027-08-27 | 2027-09-14 | A21910 | 108.93d |
| A22140 |  | Aseo | 4d | 2027-09-14 | 2027-09-20 | A22130 | 108.93d |
|  | P06 | **Piso 06** |  | 2027-09-14 | 2027-10-06 |  |  |
| A22150 |  | Detallado | 12d | 2027-09-14 | 2027-09-30 | A21920 | 93.93d |
| A22160 |  | Aseo | 4d | 2027-09-30 | 2027-10-06 | A22150 | 93.93d |
|  | P07 | **Piso 07** |  | 2027-09-30 | 2027-10-25 |  |  |
| A22170 |  | Detallado | 12d | 2027-09-30 | 2027-10-19 | A21930 | 77.93d |
| A22180 |  | Aseo | 4d | 2027-10-19 | 2027-10-25 | A22170 | 77.93d |
|  | P08 | **Piso 08** |  | 2027-11-03 | 2027-11-26 |  |  |
| A22190 |  | Detallado | 12d | 2027-11-03 | 2027-11-22 | A21940 FS+10d | 67.93d |
| A22200 |  | Aseo | 4d | 2027-11-22 | 2027-11-26 | A22190 | 67.93d |
|  | P09 | **Piso 09** |  | 2027-11-02 | 2027-11-24 |  |  |
| A22210 |  | Detallado | 12d | 2027-11-02 | 2027-11-19 | A21950 | 64.93d |
| A22220 |  | Aseo | 3d | 2027-11-19 | 2027-11-24 | A22210 | 64.93d |
|  | P10 | **Piso 10** |  | 2027-11-17 | 2027-12-09 |  |  |
| A22230 |  | Detallado | 12d | 2027-11-17 | 2027-12-03 | A21960 | 59.93d |
| A22240 |  | Aseo | 3d | 2027-12-03 | 2027-12-09 | A22230 | 59.93d |
|  | P11 | **Piso 11** |  | 2027-11-22 | 2027-12-14 |  |  |
| A22250 |  | Detallado | 12d | 2027-11-22 | 2027-12-09 | A21970 | 31.93d |
| A22260 |  | Aseo | 3d | 2027-12-09 | 2027-12-14 | A22250 | 31.93d |
|  | P12 | **Piso 12** |  | 2027-12-06 | 2028-01-13 |  |  |
| A22270 |  | Detallado | 12d | 2027-12-06 | 2027-12-23 | A21980 | 66.93d |
| A22280 |  | Aseo | 3d | 2027-12-23 | 2028-01-13 | A22270 | 66.93d |
|  | P13 | **Piso 13** |  | 2027-12-22 | 2028-01-28 |  |  |
| A22290 |  | Detallado | 12d | 2027-12-22 | 2028-01-25 | A21990 | 55.93d |
| A22300 |  | Aseo | 3d | 2028-01-25 | 2028-01-28 | A22290 | 55.93d |
|  | P14 | **Piso 14** |  | 2028-01-14 | 2028-02-04 |  |  |
| A22310 |  | Detallado | 12d | 2028-01-14 | 2028-02-01 | A22000 | 50.93d |
| A22320 |  | Aseo | 3d | 2028-02-01 | 2028-02-04 | A22310 | 50.93d |
|  | P15 | **Piso 15** |  | 2028-02-03 | 2028-02-21 |  |  |
| A22330 |  | Detallado | 10d | 2028-02-03 | 2028-02-17 | A22010 | 39.93d |
| A22340 |  | Aseo | 2d | 2028-02-17 | 2028-02-21 | A22330 | 39.93d |
|  | P16 | **Piso 16** |  | 2028-02-10 | 2028-02-28 |  |  |
| A22350 |  | Detallado | 10d | 2028-02-10 | 2028-02-24 | A22020 | 34.93d |
| A22360 |  | Aseo | 2d | 2028-02-24 | 2028-02-28 | A22350 | 34.93d |
|  | 10Fac | **07. Fachada** |  | 2026-07-17 | 2028-01-26 |  |  |
|  | 01Fachada | **Fachadas** |  | 2026-07-17 | 2028-01-26 |  |  |
|  | FACHADA PISCINA Y MAR | **Fachada Piscina y Mar** |  | 2026-07-17 | 2028-01-26 |  |  |
|  | Paño 1 | **Paño 1** |  | 2026-07-17 | 2026-10-06 |  |  |
| A22370 |  | Mamposteria | 10d | 2026-07-17 | 2026-07-31 | A1400 | 0d |
| A22380 |  | Pañete | 17d | 2026-08-03 | 2026-08-27 | A22370 | 354d |
| A22390 |  | Pintura | 28d | 2026-08-28 | 2026-10-06 | A22380 | 354d |
|  | Paño 2 | **Paño 2** |  | 2026-08-03 | 2026-10-21 |  |  |
| A22460 |  | Mamposteria | 10d | 2026-08-03 | 2026-08-18 | A22370 | 0d |
| A22470 |  | Pañete | 17d | 2026-08-19 | 2026-09-10 | A22460 | 344d |
| A22480 |  | Pintura | 28d | 2026-09-11 | 2026-10-21 | A22470 | 344d |
|  | Paño 3 | **Paño 3** |  | 2026-08-19 | 2027-01-14 |  |  |
| A22400 |  | Prolongaciones Elec-Hidr-Hvac-Comu | 10d | 2026-08-19 | 2026-09-01 | A22460 | 0d |
| A22410 |  | Mamposteria | 10d | 2026-09-02 | 2026-09-15 | A22400 | 299d |
| A22420 |  | Superboard | 25d | 2026-09-16 | 2026-10-21 | A22410 | 299d |

| ID | WBS | Task | Duration | Start | Finish | Predecessors | Total float |
| --- | --- | --- | --- | --- | --- | --- | --- |
| A22440 |  | Pañetes | 17d | 2026-10-22 | 2026-11-17 | A22420 | 299d |
| A22450 |  | Pintura | 28d | 2026-11-18 | 2027-01-14 | A22440 | 299d |
|  | Paño 4 | **Paño 4** |  | 2026-09-02 | 2027-01-28 |  |  |
| A22490 |  | Prolongaciones Elec-Hidr-Hvac-Comu | 10d | 2026-09-02 | 2026-09-15 | A22400 | 0d |
| A22500 |  | Mamposteria | 10d | 2026-09-16 | 2026-09-29 | A22490 | 289d |
| A22510 |  | Superboard | 25d | 2026-09-30 | 2026-11-05 | A22500 | 289d |
| A22520 |  | Pañetes | 17d | 2026-11-06 | 2026-12-01 | A22510 | 289d |
| A22530 |  | Pintura | 28d | 2026-12-02 | 2027-01-28 | A22520 | 289d |
|  | Paño 5 | **Paño 5** |  | 2026-09-16 | 2027-03-09 |  |  |
| A22540 |  | Prolongaciones Elec-Hidr-Hvac-Comu | 12d | 2026-09-16 | 2026-10-01 | A22490 | 0d |
| A22550 |  | Mamposteria | 12d | 2026-10-02 | 2026-10-20 | A22540 | 261d |
| A22560 |  | Superboard | 31d | 2026-10-21 | 2026-12-04 | A22550 | 261d |
| A22570 |  | Pañetes | 19d | 2026-12-07 | 2027-01-20 | A22560 | 261d |
| A22580 |  | Pintura | 34d | 2027-01-21 | 2027-03-09 | A22570 | 261d |
|  | Paño 6 | **Paño 6** |  | 2026-10-02 | 2027-04-28 |  |  |
| A22590 |  | Prolongaciones Elec-Hidr-Hvac-Comu | 14d | 2026-10-02 | 2026-10-22 | A22540 | 0d |
| A22600 |  | Mamposteria | 14d | 2026-10-23 | 2026-11-12 | A22590 | 230d |
| A22610 |  | Superboard | 37d | 2026-11-13 | 2027-01-25 | A22600 | 230d |
| A22620 |  | Pañetes | 24d | 2027-01-26 | 2027-02-26 | A22610 | 230d |
| A22630 |  | Pintura | 38d | 2027-03-01 | 2027-04-28 | A22620 | 230d |
|  | Paño 7 | **Paño 7** |  | 2026-10-23 | 2027-06-11 |  |  |
| A22640 |  | Prolongaciones Elec-Hidr-Hvac-Comu | 16d | 2026-10-23 | 2026-11-17 | A22590 | 0d |
| A22650 |  | Mamposteria | 16d | 2026-11-18 | 2026-12-10 | A22640 | 201d |
| A22660 |  | Superboard | 38d | 2026-12-11 | 2027-02-19 | A22650 | 201d |
| A22670 |  | Pañetes | 28d | 2027-02-22 | 2027-04-07 | A22660 | 201d |
| A22680 |  | Pintura | 44d | 2027-04-08 | 2027-06-11 | A22670 | 201d |
|  | Paño 8 | **Paño 8** |  | 2026-11-18 | 2027-07-12 |  |  |
| A22690 |  | Prolongaciones Elec-Hidr-Hvac-Comu | 18d | 2026-11-18 | 2026-12-14 | A22640 | 0d |
| A22700 |  | Mamposteria | 18d | 2026-12-15 | 2027-01-26 | A22690 | 181d |
| A22710 |  | Superboard | 30d | 2027-01-27 | 2027-03-09 | A22700 | 181d |
| A22720 |  | Pañetes | 30d | 2027-03-10 | 2027-04-27 | A22710 | 181d |
| A22730 |  | Pintura | 50d | 2027-04-28 | 2027-07-12 | A22720 | 181d |
|  | Paño 9 | **Paño 9** |  | 2026-12-15 | 2027-08-06 |  |  |
| A22740 |  | Prolongaciones Elec-Hidr-Hvac-Comu | 18d | 2026-12-15 | 2027-01-26 | A22690 | 0d |
| A22750 |  | Mamposteria | 18d | 2027-01-27 | 2027-02-19 | A22740 | 163d |
| A22760 |  | Superboard | 30d | 2027-02-22 | 2027-04-09 | A22750 | 163d |
| A22770 |  | Pañetes | 30d | 2027-04-12 | 2027-05-24 | A22760 | 163d |
| A22780 |  | Pintura | 50d | 2027-05-25 | 2027-08-06 | A22770 | 163d |
|  | Paño 10 | **Paño 10** |  | 2027-01-27 | 2027-09-02 |  |  |
| A22790 |  | Prolongaciones Elec-Hidr-Hvac-Comu | 18d | 2027-01-27 | 2027-02-19 | A22740 | 0d |
| A22800 |  | Mamposteria | 18d | 2027-02-22 | 2027-03-17 | A22790 | 145d |
| A22810 |  | Superboard | 30d | 2027-03-18 | 2027-05-05 | A22800 | 145d |
| A22820 |  | Pañetes | 30d | 2027-05-06 | 2027-06-21 | A22810 | 145d |
| A22830 |  | Pintura | 50d | 2027-06-22 | 2027-09-02 | A22820 | 145d |
|  | Paño 11 | **Paño 11** |  | 2027-02-22 | 2027-09-28 |  |  |
| A22840 |  | Prolongaciones Elec-Hidr-Hvac-Comu | 18d | 2027-02-22 | 2027-03-17 | A22790 | 0d |
| A22850 |  | Mamposteria | 18d | 2027-03-18 | 2027-04-19 | A22840 | 127d |
| A22860 |  | Superboard | 30d | 2027-04-20 | 2027-06-02 | A22850 | 127d |
| A22870 |  | Pañetes | 30d | 2027-06-03 | 2027-07-16 | A22860 | 127d |
| A22880 |  | Pintura | 50d | 2027-07-19 | 2027-09-28 | A22870 | 127d |
|  | Paño 12 | **Paño 12** |  | 2027-03-18 | 2027-10-25 |  |  |
| A22890 |  | Prolongaciones Elec-Hidr-Hvac-Comu | 18d | 2027-03-18 | 2027-04-19 | A22840 | 0d |
| A22900 |  | Mamposteria | 18d | 2027-04-20 | 2027-05-14 | A22890 | 109d |
| A22910 |  | Superboard | 30d | 2027-05-17 | 2027-06-29 | A22900 | 109d |
| A22920 |  | Pañetes | 30d | 2027-06-30 | 2027-08-12 | A22910 | 109d |
| A22930 |  | Pintura | 50d | 2027-08-13 | 2027-10-25 | A22920 | 109d |
|  | Paño 13 | **Paño 13** |  | 2027-04-20 | 2027-11-22 |  |  |
| A22940 |  | Prolongaciones Elec-Hidr-Hvac-Comu | 18d | 2027-04-20 | 2027-05-14 | A22890 | 0d |
| A22950 |  | Mamposteria | 18d | 2027-05-17 | 2027-06-11 | A22940 | 91d |
| A22960 |  | Superboard | 30d | 2027-06-14 | 2027-07-27 | A22950 | 91d |
| A22970 |  | Pañetes | 30d | 2027-07-28 | 2027-09-08 | A22960 | 91d |
| A22980 |  | Pintura | 50d | 2027-09-09 | 2027-11-22 | A22970 | 91d |
|  | Paño 14 | **Paño 14** |  | 2027-05-17 | 2027-12-17 |  |  |
| A22990 |  | Prolongaciones Elec-Hidr-Hvac-Comu | 18d | 2027-05-17 | 2027-06-11 | A22940 | 0d |
| A23000 |  | Mamposteria | 18d | 2027-06-14 | 2027-07-08 | A22990 | 73d |
| A23010 |  | Superboard | 30d | 2027-07-09 | 2027-08-23 | A23000 | 73d |
| A23020 |  | Pañetes | 30d | 2027-08-24 | 2027-10-04 | A23010 | 73d |
| A23030 |  | Pintura | 50d | 2027-10-05 | 2027-12-17 | A23020 | 73d |
|  | Paño 15 | **Paño 15** |  | 2027-06-14 | 2027-12-15 |  |  |
| A23040 |  | Prolongaciones Elec-Hidr-Hvac-Comu | 18d | 2027-06-14 | 2027-07-08 | A22990 | 0d |

| ID | WBS | Task | Duration | Start | Finish | Predecessors | Total float |
| --- | --- | --- | --- | --- | --- | --- | --- |
| A23050 |  | Mamposteria | 18d | 2027-07-09 | 2027-08-04 | A23040 | 75d |
| A23060 |  | Superboard | 30d | 2027-08-05 | 2027-09-16 | A23050 | 75d |
| A23070 |  | Pañetes | 30d | 2027-09-17 | 2027-10-29 | A23060 | 75d |
| A23080 |  | Pintura | 30d | 2027-11-02 | 2027-12-15 | A23070 | 75d |
|  | Paño 16 | **Paño 16** |  | 2027-07-09 | 2028-01-26 |  |  |
| A23090 |  | Prolongaciones Elec-Hidr-Hvac-Comu | 18d | 2027-07-09 | 2027-08-04 | A23040 | 0d |
| A23100 |  | Mamposteria | 18d | 2027-08-05 | 2027-08-31 | A23090 | 57d |
| A23110 |  | Superboard | 30d | 2027-09-01 | 2027-10-12 | A23100 | 57d |
| A23120 |  | Pañetes | 30d | 2027-10-13 | 2027-11-26 | A23110 | 57d |
| A23130 |  | Pintura | 30d | 2027-11-29 | 2028-01-26 | A23120 | 57d |
|  | Paño 17 | **Paño 17** |  | 2027-08-05 | 2028-01-14 |  |  |
| A23150 |  | Mamposteria | 20d | 2027-08-05 | 2027-09-02 | A23090 | 0d |
| A23170 |  | Pañetes | 30d | 2027-09-03 | 2027-10-14 | A23150 | 0d |
| A23180 |  | Pintura | 50d | 2027-10-15 | 2028-01-14 | A23170 | 0d |
|  | FACHADA TWO TOWER | **Fachada Two Tower** |  | 2026-10-29 | 2027-11-22 |  |  |
|  | Paño 1 | **Paño 1** |  | 2026-10-29 | 2027-02-23 |  |  |
| A23190 |  | Mamposteria | 12d | 2026-10-29 | 2026-11-17 | A1400 SS+70d | 51d |
| A23200 |  | Pañetes | 27d | 2026-11-18 | 2027-01-13 | A23190 | 300d |
| A23210 |  | Superboard | 28d | 2026-11-18 | 2027-01-14 | A23190 | 271d |
| A23220 |  | Pintura | 28d | 2027-01-15 | 2027-02-23 | A23210 | 271d |
|  | Paño 2 | **Paño 2** |  | 2026-11-18 | 2027-03-11 |  |  |
| A23230 |  | Mamposteria | 12d | 2026-11-18 | 2026-12-03 | A23190 | 51d |
| A23240 |  | Pañetes | 27d | 2026-12-04 | 2027-01-29 | A23230 | 288d |
| A23250 |  | Superboard | 28d | 2026-12-04 | 2027-02-01 | A23230 | 259d |
| A23260 |  | Pintura | 28d | 2027-02-02 | 2027-03-11 | A23250 | 259d |
|  | Paño 3 | **Paño 3** |  | 2026-12-04 | 2027-04-05 |  |  |
| A23270 |  | Mamposteria | 12d | 2026-12-04 | 2026-12-22 | A23230 | 51d |
| A23280 |  | Pañetes | 27d | 2026-12-23 | 2027-02-16 | A23270 | 276d |
| A23290 |  | Superboard | 28d | 2026-12-23 | 2027-02-17 | A23270 | 247d |
| A23300 |  | Pintura | 28d | 2027-02-18 | 2027-04-05 | A23290 | 247d |
|  | Paño 4 | **Paño 4** |  | 2026-12-23 | 2027-04-21 |  |  |
| A23310 |  | Mamposteria | 12d | 2026-12-23 | 2027-01-26 | A23270 | 51d |
| A23320 |  | Pañetes | 27d | 2027-01-27 | 2027-03-04 | A23310 | 264d |
| A23330 |  | Superboard | 28d | 2027-01-27 | 2027-03-05 | A23310 | 235d |
| A23340 |  | Pintura | 28d | 2027-03-08 | 2027-04-21 | A23330 | 235d |
|  | Paño 5 | **Paño 5** |  | 2027-01-27 | 2027-05-07 |  |  |
| A23350 |  | Mamposteria | 12d | 2027-01-27 | 2027-02-11 | A23310 | 51d |
| A23360 |  | Pañetes | 27d | 2027-02-12 | 2027-03-29 | A23350 | 252d |
| A23370 |  | Superboard | 28d | 2027-02-12 | 2027-03-30 | A23350 | 223d |
| A23380 |  | Pintura | 28d | 2027-03-31 | 2027-05-07 | A23370 | 223d |
|  | Paño 6 | **Paño 6** |  | 2027-02-12 | 2027-05-26 |  |  |
| A23390 |  | Mamposteria | 12d | 2027-02-12 | 2027-03-01 | A23350 | 51d |
| A23400 |  | Pañetes | 27d | 2027-03-02 | 2027-04-14 | A23390 | 240d |
| A23410 |  | Superboard | 28d | 2027-03-02 | 2027-04-15 | A23390 | 211d |
| A23420 |  | Pintura | 28d | 2027-04-16 | 2027-05-26 | A23410 | 211d |
|  | Paño 7 | **Paño 7** |  | 2027-03-02 | 2027-06-15 |  |  |
| A23430 |  | Mamposteria | 12d | 2027-03-02 | 2027-03-17 | A23390 | 51d |
| A23440 |  | Pañetes | 27d | 2027-03-18 | 2027-04-30 | A23430 | 228d |
| A23450 |  | Superboard | 28d | 2027-03-18 | 2027-05-03 | A23430 | 199d |
| A23460 |  | Pintura | 28d | 2027-05-04 | 2027-06-15 | A23450 | 199d |
|  | Paño 8 | **Paño 8** |  | 2027-03-18 | 2027-07-01 |  |  |
| A23470 |  | Mamposteria | 12d | 2027-03-18 | 2027-04-09 | A23430 | 51d |
| A23480 |  | Pañetes | 27d | 2027-04-12 | 2027-05-19 | A23470 | 216d |
| A23490 |  | Superboard | 28d | 2027-04-12 | 2027-05-20 | A23470 | 187d |
| A23500 |  | Pintura | 28d | 2027-05-21 | 2027-07-01 | A23490 | 187d |
|  | Paño 9 | **Paño 9** |  | 2027-04-12 | 2027-07-21 |  |  |
| A23510 |  | Mamposteria | 12d | 2027-04-12 | 2027-04-27 | A23470 | 51d |
| A23520 |  | Pañetes | 27d | 2027-04-28 | 2027-06-08 | A23510 | 204d |
| A23530 |  | Superboard | 28d | 2027-04-28 | 2027-06-09 | A23510 | 175d |
| A23540 |  | Pintura | 28d | 2027-06-10 | 2027-07-21 | A23530 | 175d |
|  | Paño 10 | **Paño 10** |  | 2027-04-28 | 2027-08-06 |  |  |
| A23550 |  | Mamposteria | 12d | 2027-04-28 | 2027-05-14 | A23510 | 51d |
| A23560 |  | Pañetes | 27d | 2027-05-17 | 2027-06-24 | A23550 | 192d |
| A23570 |  | Superboard | 28d | 2027-05-17 | 2027-06-25 | A23550 | 163d |
| A23580 |  | Pintura | 28d | 2027-06-28 | 2027-08-06 | A23570 | 163d |
|  | Paño 11 | **Paño 11** |  | 2027-05-17 | 2027-08-25 |  |  |
| A23590 |  | Mamposteria | 12d | 2027-05-17 | 2027-06-02 | A23550 | 51d |
| A23600 |  | Pañetes | 27d | 2027-06-03 | 2027-07-13 | A23590 | 180d |
| A23610 |  | Superboard | 28d | 2027-06-03 | 2027-07-14 | A23590 | 151d |
| A23620 |  | Pintura | 28d | 2027-07-15 | 2027-08-25 | A23610 | 151d |

| ID | WBS | Task | Duration | Start | Finish | Predecessors | Complete | Total float |
| --- | --- | --- | --- | --- | --- | --- | --- | --- |
|  | Paño 12 | **Paño 12** |  | 2027-06-03 | 2027-09-10 |  |  |  |
| A23630 |  | Mamposteria | 12d | 2027-06-03 | 2027-06-21 | A23590 |  | 51d |
| A23640 |  | Pañetes | 27d | 2027-06-22 | 2027-07-30 | A23630 |  | 168d |
| A23650 |  | Superboard | 28d | 2027-06-22 | 2027-08-02 | A23630 |  | 139d |
| A23660 |  | Pintura | 28d | 2027-08-03 | 2027-09-10 | A23650 |  | 139d |
|  | Paño 13 | **Paño 13** |  | 2027-06-22 | 2027-09-28 |  |  |  |
| A23670 |  | Mamposteria | 12d | 2027-06-22 | 2027-07-08 | A23630 |  | 51d |
| A23680 |  | Pañetes | 27d | 2027-07-09 | 2027-08-18 | A23670 |  | 156d |
| A23690 |  | Superboard | 28d | 2027-07-09 | 2027-08-19 | A23670 |  | 127d |
| A23700 |  | Pintura | 28d | 2027-08-20 | 2027-09-28 | A23690 |  | 127d |
|  | Paño 14 | **Paño 14** |  | 2027-07-09 | 2027-10-14 |  |  |  |
| A23710 |  | Mamposteria | 12d | 2027-07-09 | 2027-07-27 | A23670 |  | 51d |
| A23720 |  | Pañetes | 27d | 2027-07-28 | 2027-09-03 | A23710 |  | 144d |
| A23730 |  | Superboard | 28d | 2027-07-28 | 2027-09-06 | A23710 |  | 115d |
| A23740 |  | Pintura | 28d | 2027-09-07 | 2027-10-14 | A23730 |  | 115d |
|  | Paño 15 | **Paño 15** |  | 2027-07-28 | 2027-11-03 |  |  |  |
| A23750 |  | Mamposteria | 12d | 2027-07-28 | 2027-08-12 | A23710 |  | 51d |
| A23760 |  | Pañetes | 27d | 2027-08-13 | 2027-09-21 | A23750 |  | 132d |
| A23770 |  | Superboard | 28d | 2027-08-13 | 2027-09-22 | A23750 |  | 103d |
| A23780 |  | Pintura | 28d | 2027-09-23 | 2027-11-03 | A23770 |  | 103d |
|  | Paño 16 | **Paño 16** |  | 2027-08-13 | 2027-11-22 |  |  |  |
| A23790 |  | Mamposteria | 12d | 2027-08-13 | 2027-08-31 | A23750 |  | 51d |
| A23800 |  | Pañetes | 27d | 2027-09-01 | 2027-10-07 | A23790 |  | 120d |
| A23810 |  | Superboard | 28d | 2027-09-01 | 2027-10-08 | A23790 |  | 51d |
| A23820 |  | Pintura | 28d | 2027-10-11 | 2027-11-22 | A23810 |  | 51d |
|  | 11PFJ | **08. Punto Fijo** |  | 2026-06-01 | 2028-03-21 |  |  |  |
|  | 01PfjOG | **Punto Fijo Obra Gris** |  | 2026-06-01 | 2027-12-21 |  |  |  |
|  | P03 | **Piso 03** |  | 2026-06-01 | 2026-09-23 |  |  |  |
| A24110 |  | Descolg. Prolong. Inst. Comunicaciones | 8d | 2026-06-01 A | 2026-06-19 A | A24100 SS+4d | 100% |  |
| A24090 |  | Descolg. Prolong. Inst. Electricas | 8d | 2026-06-09 A | 2026-07-16 A | A1550 SS | 100% |  |
| A24150 |  | Mamposteria | 12d | 2026-06-16 A | 2026-08-24 | A24140 FS-4d | 20% | 19.4d |
| A24140 |  | Descolg. Prolong. Inst. RCI | 8d | 2026-07-07 A | 2026-08-13 | A24130 SS+4d | 25% | 19.4d |
| A24100 |  | Descolg. Prolong. Inst. hidrosanitarias | 8d | 2026-07-17 | 2026-07-29 | A24090 SS+4d |  | 19.4d |
| A24120 |  | Descolg. Prolong. Inst. Sanitarias | 8d | 2026-07-24 | 2026-08-04 | A24110 SS+4d |  | 19.4d |
| A24130 |  | Descolg. Prolong. HVAC y gas | 8d | 2026-07-30 | 2026-08-11 | A24120 SS+4d |  | 19.4d |
| A24160 |  | Pañete Resanes | 12d | 2026-08-13 | 2026-09-01 | A24150 FS-6d |  | 19.4d |
| A24170 |  | Viga Condensadora | 10d | 2026-08-24 | 2026-09-07 | A24160 FS-6d |  | 19.4d |
| A24180 |  | Dintel descolgado | 10d | 2026-08-31 | 2026-09-14 | A24170 FS-5d |  | 19.4d |
| A24190 |  | Impermeabilizacion Corredor | 8d | 2026-09-07 | 2026-09-17 | A24180 FS-5d |  | 19.4d |
| A24200 |  | Afinado de Pisos | 8d | 2026-09-11 | 2026-09-23 | A24190 FS-4d |  | 19.4d |
|  | P04 | **Piso 04** |  | 2026-06-20 | 2026-10-20 |  |  |  |
| A24230 |  | Descolg. Prolong. Inst. Comunicaciones | 8d | 2026-06-20 A | 2026-06-27 A | A24220 SS+4d | 100% |  |
| A24210 |  | Descolg. Prolong. Inst. Electricas | 8d | 2026-06-22 A | 2026-07-16 A | A24150 SS | 100% |  |
| A24220 |  | Descolg. Prolong. Inst. hidrosanitarias | 8d | 2026-08-10 | 2026-08-20 | A24210 SS+4d |  | 71d |
| A24240 |  | Descolg. Prolong. Inst. Sanitarias | 8d | 2026-08-14 | 2026-08-26 | A24230 SS+4d |  | 71d |
| A24250 |  | Descolg. Prolong. HVAC y gas | 8d | 2026-08-21 | 2026-09-01 | A24240 SS+4d |  | 71d |
| A24260 |  | Descolg. Prolong. Inst. RCI | 8d | 2026-08-27 | 2026-09-07 | A24250 SS+4d |  | 71d |
| A24270 |  | Mamposteria | 12d | 2026-09-02 | 2026-09-17 | A24260 FS-4d |  | 71d |
| A24280 |  | Pañete Resanes | 12d | 2026-09-10 | 2026-09-25 | A24270 FS-6d |  | 345d |
| A24290 |  | Viga Condensadora | 10d | 2026-09-18 | 2026-10-01 | A24280 FS-6d |  | 345d |
| A24300 |  | Dintel descolgado | 10d | 2026-09-25 | 2026-10-08 | A24290 FS-5d |  | 345d |
| A24310 |  | Impermeabilizacion Corredor | 8d | 2026-10-02 | 2026-10-14 | A24300 FS-5d |  | 345d |
| A24320 |  | Afinado de Pisos | 8d | 2026-10-08 | 2026-10-20 | A24310 FS-4d |  | 345d |
|  | P05 | **Piso 05** |  | 2026-06-29 | 2026-11-12 |  |  |  |
| A24430 |  | Descolg. Prolong. Inst. Comunicaciones | 8d | 2026-06-29 A | 2026-07-04 A | A24420 SS+4d | 100% |  |
| A24410 |  | Descolg. Prolong. Inst. Electricas | 8d | 2026-07-06 A | 2026-07-16 A | A24270 SS | 100% |  |
| A24420 |  | Descolg. Prolong. Inst. hidrosanitarias | 8d | 2026-09-02 | 2026-09-11 | A24410 SS+4d |  | 71d |
| A24440 |  | Descolg. Prolong. Inst. Sanitarias | 8d | 2026-09-08 | 2026-09-17 | A24430 SS+4d |  | 71d |
| A24450 |  | Descolg. Prolong. HVAC y gas | 8d | 2026-09-14 | 2026-09-23 | A24440 SS+4d |  | 71d |
| A24460 |  | Descolg. Prolong. Inst. RCI | 8d | 2026-09-18 | 2026-09-29 | A24450 SS+4d |  | 71d |
| A24470 |  | Mamposteria | 12d | 2026-09-24 | 2026-10-09 | A24460 FS-4d |  | 71d |
| A24480 |  | Pañete Resanes | 12d | 2026-10-02 | 2026-10-20 | A24470 FS-6d |  | 329d |
| A24490 |  | Viga Condensadora | 10d | 2026-10-13 | 2026-10-26 | A24480 FS-6d |  | 329d |
| A24500 |  | Dintel descolgado | 10d | 2026-10-20 | 2026-11-03 | A24490 FS-5d |  | 329d |
| A24510 |  | Impermeabilizacion Corredor | 8d | 2026-10-27 | 2026-11-06 | A24500 FS-5d |  | 329d |
| A24520 |  | Afinado de Pisos | 8d | 2026-11-03 | 2026-11-12 | A24510 FS-4d |  | 329d |
|  | P06 | **Piso 06** |  | 2026-07-08 | 2026-12-11 |  |  |  |
| A24530 |  | Descolg. Prolong. Inst. Electricas | 8d | 2026-07-08 A | 2026-07-16 A | A24470 SS | 100% |  |
| A24540 |  | Descolg. Prolong. Inst. hidrosanitarias | 8d | 2026-09-24 | 2026-10-05 | A24530 SS+4d |  | 71d |
| A24550 |  | Descolg. Prolong. Inst. Comunicaciones | 8d | 2026-09-30 | 2026-10-09 | A24540 SS+4d |  | 71d |

| ID | WBS | Task | Duration | Start | Finish | Predecessors | Total float |
| --- | --- | --- | --- | --- | --- | --- | --- |
| A24560 |  | Descolg. Prolong. Inst. Sanitarias | 8d | 2026-10-06 | 2026-10-16 | A24550 SS+4d | 71d |
| A24570 |  | Descolg. Prolong. HVAC y gas | 8d | 2026-10-13 | 2026-10-22 | A24560 SS+4d | 71d |
| A24580 |  | Descolg. Prolong. Inst. RCI | 8d | 2026-10-19 | 2026-10-28 | A24570 SS+4d | 71d |
| A24590 |  | Mamposteria | 12d | 2026-10-21 | 2026-11-06 | A24580 FS-6d | 71d |
| A24600 |  | Pañete Resanes | 12d | 2026-10-29 | 2026-11-17 | A24590 FS-6d | 310d |
| A24610 |  | Viga Condensadora | 10d | 2026-11-10 | 2026-11-24 | A24600 FS-5d | 310d |
| A24620 |  | Dintel descolgado | 10d | 2026-11-18 | 2026-12-01 | A24610 FS-5d | 310d |
| A24630 |  | Impermeabilizacion Corredor | 8d | 2026-11-25 | 2026-12-04 | A24620 FS-5d | 310d |
| A24640 |  | Afinado de Pisos | 8d | 2026-12-01 | 2026-12-11 | A24630 FS-4d | 310d |
|  | P07 | **Piso 07** |  | 2026-10-21 | 2027-02-01 |  |  |
| A24650 |  | Descolg. Prolong. Inst. Electricas | 8d | 2026-10-21 | 2026-10-30 | A24590 SS | 71d |
| A24660 |  | Descolg. Prolong. Inst. hidrosanitarias | 8d | 2026-10-27 | 2026-11-06 | A24650 SS+4d | 71d |
| A24670 |  | Descolg. Prolong. Inst. Comunicaciones | 8d | 2026-11-03 | 2026-11-12 | A24660 SS+4d | 71d |
| A24680 |  | Descolg. Prolong. Inst. Sanitarias | 8d | 2026-11-09 | 2026-11-19 | A24670 SS+4d | 71d |
| A24690 |  | Descolg. Prolong. HVAC y gas | 8d | 2026-11-13 | 2026-11-25 | A24680 SS+4d | 71d |
| A24700 |  | Descolg. Prolong. Inst. RCI | 8d | 2026-11-20 | 2026-12-01 | A24690 SS+4d | 71d |
| A24710 |  | Mamposteria | 12d | 2026-11-26 | 2026-12-14 | A24700 FS-4d | 71d |
| A24720 |  | Pañete Resanes | 12d | 2026-12-04 | 2026-12-22 | A24710 FS-6d | 287d |
| A24730 |  | Viga Condensadora | 10d | 2026-12-15 | 2027-01-14 | A24720 FS-6d | 287d |
| A24740 |  | Dintel descolgado | 10d | 2026-12-22 | 2027-01-21 | A24730 FS-5d | 287d |
| A24750 |  | Impermeabilizacion Corredor | 8d | 2027-01-15 | 2027-01-26 | A24740 FS-5d | 287d |
| A24760 |  | Afinado de Pisos | 8d | 2027-01-21 | 2027-02-01 | A24750 FS-4d | 287d |
|  | P08 | **Piso 08** |  | 2026-11-26 | 2027-03-09 |  |  |
| A24770 |  | Descolg. Prolong. Inst. Electricas | 8d | 2026-11-26 | 2026-12-07 | A24710 SS | 71d |
| A24780 |  | Descolg. Prolong. Inst. hidrosanitarias | 8d | 2026-12-02 | 2026-12-14 | A24770 SS+4d | 71d |
| A24790 |  | Descolg. Prolong. Inst. Comunicaciones | 8d | 2026-12-09 | 2026-12-18 | A24780 SS+4d | 71d |
| A24800 |  | Descolg. Prolong. Inst. Sanitarias | 8d | 2026-12-15 | 2027-01-12 | A24790 SS+4d | 71d |
| A24810 |  | Descolg. Prolong. HVAC y gas | 8d | 2026-12-21 | 2027-01-18 | A24800 SS+4d | 71d |
| A24820 |  | Descolg. Prolong. Inst. RCI | 8d | 2027-01-13 | 2027-01-22 | A24810 SS+4d | 71d |
| A24830 |  | Mamposteria | 12d | 2027-01-19 | 2027-02-03 | A24820 FS-4d | 71d |
| A24840 |  | Pañete Resanes | 12d | 2027-01-27 | 2027-02-11 | A24830 FS-6d | 261d |
| A24850 |  | Viga Condensadora | 10d | 2027-02-05 | 2027-02-18 | A24840 FS-5d | 261d |
| A24860 |  | Dintel descolgado | 10d | 2027-02-12 | 2027-02-25 | A24850 FS-5d | 261d |
| A24870 |  | Impermeabilizacion Corredor | 8d | 2027-02-22 | 2027-03-03 | A24860 FS-4d | 261d |
| A24880 |  | Afinado de Pisos | 8d | 2027-02-26 | 2027-03-09 | A24870 FS-4d | 261d |
|  | P09 | **Piso 09** |  | 2027-01-19 | 2027-04-15 |  |  |
| A24890 |  | Descolg. Prolong. Inst. Electricas | 8d | 2027-01-19 | 2027-01-28 | A24830 SS | 71d |
| A24900 |  | Descolg. Prolong. Inst. hidrosanitarias | 8d | 2027-01-25 | 2027-02-03 | A24890 SS+4d | 71d |
| A24910 |  | Descolg. Prolong. Inst. Comunicaciones | 8d | 2027-01-29 | 2027-02-09 | A24900 SS+4d | 71d |
| A24920 |  | Descolg. Prolong. Inst. Sanitarias | 8d | 2027-02-04 | 2027-02-15 | A24910 SS+4d | 71d |
| A24930 |  | Descolg. Prolong. HVAC y gas | 8d | 2027-02-10 | 2027-02-19 | A24920 SS+4d | 71d |
| A24940 |  | Descolg. Prolong. Inst. RCI | 8d | 2027-02-16 | 2027-02-25 | A24930 SS+4d | 71d |
| A24950 |  | Mamposteria | 12d | 2027-02-22 | 2027-03-09 | A24940 FS-4d | 71d |
| A24960 |  | Pañete Resanes | 12d | 2027-03-02 | 2027-03-17 | A24950 FS-6d | 239d |
| A24970 |  | Viga Condensadora | 10d | 2027-03-10 | 2027-03-30 | A24960 FS-6d | 239d |
| A24980 |  | Dintel descolgado | 10d | 2027-03-17 | 2027-04-06 | A24970 FS-5d | 239d |
| A24990 |  | Impermeabilizacion Corredor | 8d | 2027-03-31 | 2027-04-09 | A24980 FS-5d | 239d |
| A25000 |  | Afinado de Pisos | 8d | 2027-04-06 | 2027-04-15 | A24990 FS-4d | 239d |
|  | P10 | **Piso 10** |  | 2027-02-22 | 2027-05-20 |  |  |
| A25010 |  | Descolg. Prolong. Inst. Electricas | 8d | 2027-02-22 | 2027-03-03 | A24950 SS | 71d |
| A25020 |  | Descolg. Prolong. Inst. hidrosanitarias | 8d | 2027-02-26 | 2027-03-09 | A25010 SS+4d | 71d |
| A25030 |  | Descolg. Prolong. Inst. Comunicaciones | 8d | 2027-03-04 | 2027-03-15 | A25020 SS+4d | 71d |
| A25040 |  | Descolg. Prolong. Inst. Sanitarias | 8d | 2027-03-10 | 2027-03-19 | A25030 SS+4d | 71d |
| A25050 |  | Descolg. Prolong. HVAC y gas | 8d | 2027-03-16 | 2027-04-01 | A25040 SS+4d | 71d |
| A25060 |  | Descolg. Prolong. Inst. RCI | 8d | 2027-03-29 | 2027-04-07 | A25050 SS+4d | 71d |
| A25070 |  | Mamposteria | 12d | 2027-04-02 | 2027-04-19 | A25060 FS-4d | 71d |
| A25080 |  | Pañete Resanes | 12d | 2027-04-12 | 2027-04-27 | A25070 FS-6d | 215d |
| A25090 |  | Viga Condensadora | 10d | 2027-04-20 | 2027-05-03 | A25080 FS-6d | 215d |
| A25100 |  | Dintel descolgado | 10d | 2027-04-27 | 2027-05-11 | A25090 FS-5d | 215d |
| A25110 |  | Impermeabilizacion Corredor | 8d | 2027-05-04 | 2027-05-14 | A25100 FS-5d | 215d |
| A25120 |  | Afinado de Pisos | 8d | 2027-05-11 | 2027-05-20 | A25110 FS-4d | 215d |
|  | P11 | **Piso 11** |  | 2027-04-02 | 2027-06-25 |  |  |
| A25130 |  | Descolg. Prolong. Inst. Electricas | 8d | 2027-04-02 | 2027-04-13 | A25070 SS | 71d |
| A25140 |  | Descolg. Prolong. Inst. hidrosanitarias | 8d | 2027-04-08 | 2027-04-19 | A25130 SS+4d | 71d |
| A25150 |  | Descolg. Prolong. Inst. Comunicaciones | 8d | 2027-04-14 | 2027-04-23 | A25140 SS+4d | 71d |
| A25160 |  | Descolg. Prolong. Inst. Sanitarias | 8d | 2027-04-20 | 2027-04-29 | A25150 SS+4d | 71d |
| A25170 |  | Descolg. Prolong. HVAC y gas | 8d | 2027-04-26 | 2027-05-05 | A25160 SS+4d | 71d |
| A25180 |  | Descolg. Prolong. Inst. RCI | 8d | 2027-04-30 | 2027-05-12 | A25170 SS+4d | 71d |
| A25190 |  | Mamposteria | 12d | 2027-05-06 | 2027-05-24 | A25180 FS-4d | 71d |
| A25200 |  | Pañete Resanes | 12d | 2027-05-17 | 2027-06-02 | A25190 FS-6d | 191d |

| ID | WBS | Task | Duration | Start | Finish | Predecessors | Total float |
| --- | --- | --- | --- | --- | --- | --- | --- |
| A25210 |  | Viga Condensadora | 10d | 2027-05-25 | 2027-06-09 | A25200 FS-6d | 191d |
| A25220 |  | Dintel descolgado | 10d | 2027-06-02 | 2027-06-16 | A25210 FS-5d | 191d |
| A25230 |  | Impermeabilizacion Corredor | 8d | 2027-06-10 | 2027-06-21 | A25220 FS-5d | 191d |
| A25240 |  | Afinado de Pisos | 8d | 2027-06-16 | 2027-06-25 | A25230 FS-4d | 191d |
|  | P12 | **Piso 12** |  | 2027-05-06 | 2027-08-02 |  |  |
| A25250 |  | Descolg. Prolong. Inst. Electricas | 8d | 2027-05-06 | 2027-05-18 | A25190 SS | 71d |
| A25260 |  | Descolg. Prolong. Inst. hidrosanitarias | 8d | 2027-05-13 | 2027-05-24 | A25250 SS+4d | 71d |
| A25270 |  | Descolg. Prolong. Inst. Comunicaciones | 8d | 2027-05-19 | 2027-05-28 | A25260 SS+4d | 71d |
| A25280 |  | Descolg. Prolong. Inst. Sanitarias | 8d | 2027-05-25 | 2027-06-04 | A25270 SS+4d | 71d |
| A25290 |  | Descolg. Prolong. HVAC y gas | 8d | 2027-06-01 | 2027-06-11 | A25280 SS+4d | 71d |
| A25300 |  | Descolg. Prolong. Inst. RCI | 8d | 2027-06-08 | 2027-06-17 | A25290 SS+4d | 71d |
| A25310 |  | Mamposteria | 12d | 2027-06-14 | 2027-06-29 | A25300 FS-4d | 71d |
| A25320 |  | Pañete Resanes | 12d | 2027-06-22 | 2027-07-08 | A25310 FS-6d | 167d |
| A25330 |  | Viga Condensadora | 10d | 2027-06-30 | 2027-07-14 | A25320 FS-6d | 167d |
| A25340 |  | Dintel descolgado | 10d | 2027-07-08 | 2027-07-22 | A25330 FS-5d | 167d |
| A25350 |  | Impermeabilizacion Corredor | 8d | 2027-07-15 | 2027-07-27 | A25340 FS-5d | 167d |
| A25360 |  | Afinado de Pisos | 8d | 2027-07-22 | 2027-08-02 | A25350 FS-4d | 167d |
|  | P13 | **Piso 13** |  | 2027-06-14 | 2027-09-06 |  |  |
| A25370 |  | Descolg. Prolong. Inst. Electricas | 8d | 2027-06-14 | 2027-06-23 | A25310 SS | 71d |
| A25380 |  | Descolg. Prolong. Inst. hidrosanitarias | 8d | 2027-06-18 | 2027-06-29 | A25370 SS+4d | 71d |
| A25390 |  | Descolg. Prolong. Inst. Comunicaciones | 8d | 2027-06-24 | 2027-07-06 | A25380 SS+4d | 71d |
| A25400 |  | Descolg. Prolong. Inst. Sanitarias | 8d | 2027-06-30 | 2027-07-12 | A25390 SS+4d | 71d |
| A25410 |  | Descolg. Prolong. HVAC y gas | 8d | 2027-07-07 | 2027-07-16 | A25400 SS+4d | 71d |
| A25420 |  | Descolg. Prolong. Inst. RCI | 8d | 2027-07-13 | 2027-07-23 | A25410 SS+4d | 71d |
| A25430 |  | Mamposteria | 12d | 2027-07-19 | 2027-08-04 | A25420 FS-4d | 71d |
| A25440 |  | Pañete Resanes | 12d | 2027-07-28 | 2027-08-12 | A25430 FS-6d | 143d |
| A25450 |  | Viga Condensadora | 10d | 2027-08-05 | 2027-08-19 | A25440 FS-6d | 143d |
| A25460 |  | Dintel descolgado | 10d | 2027-08-12 | 2027-08-26 | A25450 FS-5d | 143d |
| A25470 |  | Impermeabilizacion Corredor | 8d | 2027-08-20 | 2027-08-31 | A25460 FS-5d | 143d |
| A25480 |  | Afinado de Pisos | 8d | 2027-08-26 | 2027-09-06 | A25470 FS-4d | 143d |
|  | P14 | **Piso 14** |  | 2027-07-19 | 2027-10-08 |  |  |
| A25490 |  | Descolg. Prolong. Inst. Electricas | 8d | 2027-07-19 | 2027-07-29 | A25430 SS | 71d |
| A25500 |  | Descolg. Prolong. Inst. hidrosanitarias | 8d | 2027-07-26 | 2027-08-04 | A25490 SS+4d | 71d |
| A25510 |  | Descolg. Prolong. Inst. Comunicaciones | 8d | 2027-07-30 | 2027-08-10 | A25500 SS+4d | 71d |
| A25520 |  | Descolg. Prolong. Inst. Sanitarias | 8d | 2027-08-05 | 2027-08-17 | A25510 SS+4d | 71d |
| A25530 |  | Descolg. Prolong. HVAC y gas | 8d | 2027-08-11 | 2027-08-23 | A25520 SS+4d | 71d |
| A25540 |  | Descolg. Prolong. Inst. RCI | 8d | 2027-08-18 | 2027-08-27 | A25530 SS+4d | 71d |
| A25550 |  | Mamposteria | 12d | 2027-08-24 | 2027-09-08 | A25540 FS-4d | 71d |
| A25560 |  | Pañete Resanes | 12d | 2027-09-01 | 2027-09-16 | A25550 FS-6d | 119d |
| A25570 |  | Viga Condensadora | 10d | 2027-09-09 | 2027-09-22 | A25560 FS-6d | 119d |
| A25580 |  | Dintel descolgado | 10d | 2027-09-16 | 2027-09-29 | A25570 FS-5d | 119d |
| A25590 |  | Impermeabilizacion Corredor | 8d | 2027-09-23 | 2027-10-04 | A25580 FS-5d | 119d |
| A25600 |  | Afinado de Pisos | 8d | 2027-09-29 | 2027-10-08 | A25590 FS-4d | 119d |
|  | P15 | **Piso 15** |  | 2027-08-24 | 2027-11-16 |  |  |
| A25610 |  | Descolg. Prolong. Inst. Electricas | 8d | 2027-08-24 | 2027-09-02 | A25550 SS | 71d |
| A25620 |  | Descolg. Prolong. Inst. hidrosanitarias | 8d | 2027-08-30 | 2027-09-08 | A25610 SS+4d | 71d |
| A25630 |  | Descolg. Prolong. Inst. Comunicaciones | 8d | 2027-09-03 | 2027-09-14 | A25620 SS+4d | 71d |
| A25640 |  | Descolg. Prolong. Inst. Sanitarias | 8d | 2027-09-09 | 2027-09-20 | A25630 SS+4d | 71d |
| A25650 |  | Descolg. Prolong. HVAC y gas | 8d | 2027-09-15 | 2027-09-24 | A25640 SS+4d | 71d |
| A25660 |  | Descolg. Prolong. Inst. RCI | 8d | 2027-09-21 | 2027-09-30 | A25650 SS+4d | 71d |
| A25670 |  | Mamposteria | 12d | 2027-09-27 | 2027-10-12 | A25660 FS-4d | 71d |
| A25680 |  | Pañete Resanes | 12d | 2027-10-05 | 2027-10-21 | A25670 FS-6d | 95d |
| A25690 |  | Viga Condensadora | 10d | 2027-10-13 | 2027-10-27 | A25680 FS-6d | 95d |
| A25700 |  | Dintel descolgado | 10d | 2027-10-21 | 2027-11-04 | A25690 FS-5d | 95d |
| A25710 |  | Impermeabilizacion Corredor | 8d | 2027-10-28 | 2027-11-09 | A25700 FS-5d | 95d |
| A25720 |  | Afinado de Pisos | 8d | 2027-11-04 | 2027-11-16 | A25710 FS-4d | 95d |
|  | P16 | **Piso 16** |  | 2027-09-27 | 2027-12-21 |  |  |
| A25730 |  | Descolg. Prolong. Inst. Electricas | 8d | 2027-09-27 | 2027-10-06 | A25670 SS | 71d |
| A25740 |  | Descolg. Prolong. Inst. hidrosanitarias | 8d | 2027-10-01 | 2027-10-12 | A25730 SS+4d | 71d |
| A25750 |  | Descolg. Prolong. Inst. Comunicaciones | 8d | 2027-10-07 | 2027-10-19 | A25740 SS+4d | 71d |
| A25760 |  | Descolg. Prolong. Inst. Sanitarias | 8d | 2027-10-13 | 2027-10-25 | A25750 SS+4d | 71d |
| A25770 |  | Descolg. Prolong. HVAC y gas | 8d | 2027-10-20 | 2027-10-29 | A25760 SS+4d | 71d |
| A25780 |  | Descolg. Prolong. Inst. RCI | 8d | 2027-10-26 | 2027-11-05 | A25770 SS+4d | 71d |
| A25790 |  | Mamposteria | 12d | 2027-11-02 | 2027-11-18 | A25780 FS-4d | 71d |
| A25800 |  | Pañete Resanes | 12d | 2027-11-10 | 2027-11-26 | A25790 FS-6d | 71d |
| A25810 |  | Viga Condensadora | 10d | 2027-11-19 | 2027-12-02 | A25800 FS-6d | 71d |
| A25820 |  | Dintel descolgado | 10d | 2027-11-26 | 2027-12-10 | A25810 FS-5d | 71d |
| A25830 |  | Impermeabilizacion Corredor | 8d | 2027-12-03 | 2027-12-15 | A25820 FS-5d | 71d |
| A25840 |  | Afinado de Pisos | 8d | 2027-12-10 | 2027-12-21 | A25830 FS-4d | 71d |
|  | 02PfjACA | **Punto Fijo Acabados** |  | 2026-10-09 | 2028-03-21 |  |  |

| ID | WBS | Task | Duration | Start | Finish | Predecessors | Total float |
| --- | --- | --- | --- | --- | --- | --- | --- |
|  | P03 | **Piso 03** |  | 2026-10-09 | 2027-02-04 |  |  |
| A11970 |  | Estuco y primera mano | 8d | 2026-10-09 | 2026-10-22 | A24200 SS+20d | 19.4d |
| A25850 |  | Estructura cielo rasos | 8d | 2026-10-22 | 2026-11-04 | A11970 | 19.4d |
| A25860 |  | Dinteles borde losa | 8d | 2026-10-27 | 2026-11-09 | A25850 FS-5d | 19.4d |
| A25870 |  | Inst lamina y pintura cielos rasos u muros | 8d | 2026-11-09 | 2026-11-20 | A25860 | 284.4d |
| A25880 |  | Segunda mano | 8d | 2026-11-13 | 2026-11-26 | A25870 FS-4d | 284.4d |
| A25890 |  | Ceramina y guarda escobas | 8d | 2026-11-19 | 2026-12-01 | A25880 FS-5d | 284.4d |
| A25900 |  | Instalacion materas | 8d | 2026-11-26 | 2026-12-09 | A25890 FS-3d | 284.4d |
| A25910 |  | Inst cableado elec-com | 8d | 2026-12-03 | 2026-12-16 | A25900 FS-3d | 284.4d |
| A25920 |  | Inst apa elec-com | 8d | 2026-12-11 | 2026-12-23 | A25910 FS-3d | 284.4d |
| A25940 |  | Tercera mano | 8d | 2026-12-21 | 2027-01-19 | A25930 FS-10d | 284.4d |
| A25930 |  | Carpinteria metalica | 8d | 2026-12-23 | 2027-01-21 | A25920 | 284.4d |
| A25950 |  | Detallado PF | 8d | 2027-01-13 | 2027-01-25 | A25940 FS-4d | 284.4d |
| A25960 |  | Aseo | 8d | 2027-01-25 | 2027-02-04 | A25950 | 284.4d |
|  | P04 | **Piso 04** |  | 2026-10-30 | 2027-04-05 |  |  |
| A25970 |  | Estuco y primera mano | 8d | 2026-10-30 | 2026-11-12 | A25860 FS-5d | 19.4d |
| A25980 |  | Estructura cielo rasos | 8d | 2026-11-12 | 2026-11-25 | A25970 | 19.4d |
| A25990 |  | Dinteles borde losa | 8d | 2026-11-25 | 2026-12-07 | A25980 | 19.4d |
| A26000 |  | Inst lamina y pintura cielos rasos u muros | 8d | 2026-12-07 | 2026-12-18 | A25990 | 247.4d |
| A26010 |  | Segunda mano | 8d | 2026-12-18 | 2027-01-18 | A26000 | 247.4d |
| A26020 |  | Ceramina y guarda escobas | 8d | 2027-01-18 | 2027-01-28 | A26010 | 247.4d |
| A26030 |  | Instalacion materas | 8d | 2027-01-28 | 2027-02-09 | A26020 | 247.4d |
| A26040 |  | Inst cableado elec-com | 8d | 2027-02-09 | 2027-02-19 | A26030 | 247.4d |
| A26050 |  | Inst apa elec-com | 8d | 2027-02-19 | 2027-03-03 | A26040 | 247.4d |
| A26070 |  | Tercera mano | 8d | 2027-03-01 | 2027-03-11 | A26060 FS-10d | 247.4d |
| A26060 |  | Carpinteria metalica | 8d | 2027-03-03 | 2027-03-15 | A26050 | 247.4d |
| A26080 |  | Detallado PF | 8d | 2027-03-05 | 2027-03-17 | A26070 FS-4d | 247.4d |
| A26090 |  | Aseo | 8d | 2027-03-17 | 2027-04-05 | A26080 | 247.4d |
|  | P05 | **Piso 05** |  | 2026-11-30 | 2027-04-30 |  |  |
| A26100 |  | Estuco y primera mano | 8d | 2026-11-30 | 2026-12-11 | A25990 FS-5d | 19.4d |
| A26110 |  | Estructura cielo rasos | 8d | 2026-12-11 | 2026-12-23 | A26100 | 19.4d |
| A26120 |  | Dinteles borde losa | 8d | 2026-12-23 | 2027-01-21 | A26110 | 19.4d |
| A26130 |  | Inst lamina y pintura cielos rasos u muros | 8d | 2027-01-21 | 2027-02-02 | A26120 | 228.4d |
| A26140 |  | Segunda mano | 8d | 2027-02-02 | 2027-02-12 | A26130 | 228.4d |
| A26150 |  | Ceramina y guarda escobas | 8d | 2027-02-12 | 2027-02-24 | A26140 | 228.4d |
| A26160 |  | Instalacion materas | 8d | 2027-02-24 | 2027-03-08 | A26150 | 228.4d |
| A26170 |  | Inst cableado elec-com | 8d | 2027-03-08 | 2027-03-18 | A26160 | 228.4d |
| A26180 |  | Inst apa elec-com | 8d | 2027-03-18 | 2027-04-06 | A26170 | 228.4d |
| A26200 |  | Tercera mano | 8d | 2027-04-02 | 2027-04-14 | A26190 FS-10d | 228.4d |
| A26190 |  | Carpinteria metalica | 8d | 2027-04-06 | 2027-04-16 | A26180 | 228.4d |
| A26210 |  | Detallado PF | 8d | 2027-04-08 | 2027-04-20 | A26200 FS-4d | 228.4d |
| A26220 |  | Aseo | 8d | 2027-04-20 | 2027-04-30 | A26210 | 228.4d |
|  | P06 | **Piso 06** |  | 2027-01-14 | 2027-05-28 |  |  |
| A26230 |  | Estuco y primera mano | 8d | 2027-01-14 | 2027-01-26 | A26120 FS-5d | 19.4d |
| A26240 |  | Estructura cielo rasos | 8d | 2027-01-26 | 2027-02-05 | A26230 | 19.4d |
| A26250 |  | Dinteles borde losa | 8d | 2027-02-05 | 2027-02-17 | A26240 | 19.4d |
| A26260 |  | Inst lamina y pintura cielos rasos u muros | 8d | 2027-02-17 | 2027-03-01 | A26250 | 209.4d |
| A26270 |  | Segunda mano | 8d | 2027-03-01 | 2027-03-11 | A26260 | 209.4d |
| A26280 |  | Ceramina y guarda escobas | 8d | 2027-03-11 | 2027-03-30 | A26270 | 209.4d |
| A26290 |  | Instalacion materas | 8d | 2027-03-30 | 2027-04-09 | A26280 | 209.4d |
| A26300 |  | Inst cableado elec-com | 8d | 2027-04-09 | 2027-04-21 | A26290 | 209.4d |
| A26310 |  | Inst apa elec-com | 8d | 2027-04-21 | 2027-05-03 | A26300 | 209.4d |
| A26330 |  | Tercera mano | 8d | 2027-04-29 | 2027-05-12 | A26320 FS-10d | 209.4d |
| A26320 |  | Carpinteria metalica | 8d | 2027-05-03 | 2027-05-14 | A26310 | 209.4d |
| A26340 |  | Detallado PF | 8d | 2027-05-05 | 2027-05-18 | A26330 FS-4d | 209.4d |
| A26350 |  | Aseo | 8d | 2027-05-18 | 2027-05-28 | A26340 | 209.4d |
|  | P07 | **Piso 07** |  | 2027-02-10 | 2027-06-28 |  |  |
| A26360 |  | Estuco y primera mano | 8d | 2027-02-10 | 2027-02-22 | A26250 FS-5d | 19.4d |
| A26370 |  | Estructura cielo rasos | 8d | 2027-02-22 | 2027-03-04 | A26360 | 19.4d |
| A26380 |  | Dinteles borde losa | 8d | 2027-03-04 | 2027-03-16 | A26370 | 19.4d |
| A26390 |  | Inst lamina y pintura cielos rasos u muros | 8d | 2027-03-16 | 2027-04-02 | A26380 | 190.4d |
| A26400 |  | Segunda mano | 8d | 2027-04-02 | 2027-04-14 | A26390 | 190.4d |
| A26410 |  | Ceramina y guarda escobas | 8d | 2027-04-14 | 2027-04-26 | A26400 | 190.4d |
| A26420 |  | Instalacion materas | 8d | 2027-04-26 | 2027-05-06 | A26410 | 190.4d |
| A26430 |  | Inst cableado elec-com | 8d | 2027-05-06 | 2027-05-19 | A26420 | 190.4d |
| A26440 |  | Inst apa elec-com | 8d | 2027-05-19 | 2027-06-01 | A26430 | 190.4d |
| A26460 |  | Tercera mano | 8d | 2027-05-27 | 2027-06-10 | A26450 FS-10d | 190.4d |
| A26450 |  | Carpinteria metalica | 8d | 2027-06-01 | 2027-06-14 | A26440 | 190.4d |
| A26470 |  | Detallado PF | 8d | 2027-06-03 | 2027-06-16 | A26460 FS-4d | 190.4d |
| A26480 |  | Aseo | 8d | 2027-06-16 | 2027-06-28 | A26470 | 190.4d |

| ID | WBS | Task | Duration | Start | Finish | Predecessors | Total float |
| --- | --- | --- | --- | --- | --- | --- | --- |
|  | P08 | **Piso 08** |  | 2027-03-09 | 2027-07-27 |  |  |
| A26490 |  | Estuco y primera mano | 8d | 2027-03-09 | 2027-03-19 | A26380 FS-5d | 19.4d |
| A26500 |  | Estructura cielo rasos | 8d | 2027-03-19 | 2027-04-07 | A26490 | 19.4d |
| A26510 |  | Dinteles borde losa | 8d | 2027-04-07 | 2027-04-19 | A26500 | 19.4d |
| A26520 |  | Inst lamina y pintura cielos rasos u muros | 8d | 2027-04-19 | 2027-04-29 | A26510 | 171.4d |
| A26530 |  | Segunda mano | 8d | 2027-04-29 | 2027-05-12 | A26520 | 171.4d |
| A26540 |  | Ceramina y guarda escobas | 8d | 2027-05-12 | 2027-05-24 | A26530 | 171.4d |
| A26550 |  | Instalacion materas | 8d | 2027-05-24 | 2027-06-04 | A26540 | 171.4d |
| A26560 |  | Inst cableado elec-com | 8d | 2027-06-04 | 2027-06-17 | A26550 | 171.4d |
| A26570 |  | Inst apa elec-com | 8d | 2027-06-17 | 2027-06-29 | A26560 | 171.4d |
| A26590 |  | Tercera mano | 8d | 2027-06-25 | 2027-07-08 | A26580 FS-10d | 171.4d |
| A26580 |  | Carpinteria metalica | 8d | 2027-06-29 | 2027-07-12 | A26570 | 171.4d |
| A26600 |  | Detallado PF | 8d | 2027-07-01 | 2027-07-14 | A26590 FS-4d | 171.4d |
| A26610 |  | Aseo | 8d | 2027-07-14 | 2027-07-27 | A26600 | 171.4d |
|  | P09 | **Piso 09** |  | 2027-04-12 | 2027-08-24 |  |  |
| A26620 |  | Estuco y primera mano | 8d | 2027-04-12 | 2027-04-22 | A26510 FS-5d | 19.4d |
| A26630 |  | Estructura cielo rasos | 8d | 2027-04-22 | 2027-05-04 | A26620 | 19.4d |
| A26640 |  | Dinteles borde losa | 8d | 2027-05-04 | 2027-05-17 | A26630 | 19.4d |
| A26650 |  | Inst lamina y pintura cielos rasos u muros | 8d | 2027-05-17 | 2027-05-27 | A26640 | 152.4d |
| A26660 |  | Segunda mano | 8d | 2027-05-27 | 2027-06-10 | A26650 | 152.4d |
| A26670 |  | Ceramina y guarda escobas | 8d | 2027-06-10 | 2027-06-22 | A26660 | 152.4d |
| A26680 |  | Instalacion materas | 8d | 2027-06-22 | 2027-07-02 | A26670 | 152.4d |
| A26690 |  | Inst cableado elec-com | 8d | 2027-07-02 | 2027-07-15 | A26680 | 152.4d |
| A26700 |  | Inst apa elec-com | 8d | 2027-07-15 | 2027-07-28 | A26690 | 152.4d |
| A26720 |  | Tercera mano | 8d | 2027-07-26 | 2027-08-05 | A26710 FS-10d | 152.4d |
| A26710 |  | Carpinteria metalica | 8d | 2027-07-28 | 2027-08-09 | A26700 | 152.4d |
| A26730 |  | Detallado PF | 8d | 2027-07-30 | 2027-08-11 | A26720 FS-4d | 152.4d |
| A26740 |  | Aseo | 8d | 2027-08-11 | 2027-08-24 | A26730 | 152.4d |
|  | P10 | **Piso 10** |  | 2027-05-07 | 2027-09-20 |  |  |
| A26750 |  | Estuco y primera mano | 8d | 2027-05-07 | 2027-05-20 | A26640 FS-5d | 19.4d |
| A26760 |  | Estructura cielo rasos | 8d | 2027-05-20 | 2027-06-02 | A26750 | 19.4d |
| A26770 |  | Dinteles borde losa | 8d | 2027-06-02 | 2027-06-15 | A26760 | 19.4d |
| A26780 |  | Inst lamina y pintura cielos rasos u muros | 8d | 2027-06-15 | 2027-06-25 | A26770 | 133.4d |
| A26790 |  | Segunda mano | 8d | 2027-06-25 | 2027-07-08 | A26780 | 133.4d |
| A26800 |  | Ceramina y guarda escobas | 8d | 2027-07-08 | 2027-07-21 | A26790 | 133.4d |
| A26810 |  | Instalacion materas | 8d | 2027-07-21 | 2027-08-02 | A26800 | 133.4d |
| A26820 |  | Inst cableado elec-com | 8d | 2027-08-02 | 2027-08-12 | A26810 | 133.4d |
| A26830 |  | Inst apa elec-com | 8d | 2027-08-12 | 2027-08-25 | A26820 | 133.4d |
| A26850 |  | Tercera mano | 8d | 2027-08-23 | 2027-09-02 | A26840 FS-10d | 133.4d |
| A26840 |  | Carpinteria metalica | 8d | 2027-08-25 | 2027-09-06 | A26830 | 133.4d |
| A26860 |  | Detallado PF | 8d | 2027-08-27 | 2027-09-08 | A26850 FS-4d | 133.4d |
| A26870 |  | Aseo | 8d | 2027-09-08 | 2027-09-20 | A26860 | 133.4d |
|  | P11 | **Piso 11** |  | 2027-06-08 | 2027-10-15 |  |  |
| A26880 |  | Estuco y primera mano | 8d | 2027-06-08 | 2027-06-18 | A26770 FS-5d | 19.4d |
| A26890 |  | Estructura cielo rasos | 8d | 2027-06-18 | 2027-06-30 | A26880 | 19.4d |
| A26900 |  | Dinteles borde losa | 8d | 2027-06-30 | 2027-07-13 | A26890 | 19.4d |
| A26910 |  | Inst lamina y pintura cielos rasos u muros | 8d | 2027-07-13 | 2027-07-26 | A26900 | 114.4d |
| A26920 |  | Segunda mano | 8d | 2027-07-26 | 2027-08-05 | A26910 | 114.4d |
| A26930 |  | Ceramina y guarda escobas | 8d | 2027-08-05 | 2027-08-18 | A26920 | 114.4d |
| A26940 |  | Instalacion materas | 8d | 2027-08-18 | 2027-08-30 | A26930 | 114.4d |
| A26950 |  | Inst cableado elec-com | 8d | 2027-08-30 | 2027-09-09 | A26940 | 114.4d |
| A26960 |  | Inst apa elec-com | 8d | 2027-09-09 | 2027-09-21 | A26950 | 114.4d |
| A26980 |  | Tercera mano | 8d | 2027-09-17 | 2027-09-29 | A26970 FS-10d | 114.4d |
| A26970 |  | Carpinteria metalica | 8d | 2027-09-21 | 2027-10-01 | A26960 | 114.4d |
| A26990 |  | Detallado PF | 8d | 2027-09-23 | 2027-10-05 | A26980 FS-4d | 114.4d |
| A27000 |  | Aseo | 8d | 2027-10-05 | 2027-10-15 | A26990 | 114.4d |
|  | P12 | **Piso 12** |  | 2027-07-06 | 2027-11-16 |  |  |
| A27010 |  | Estuco y primera mano | 8d | 2027-07-06 | 2027-07-16 | A26900 FS-5d | 19.4d |
| A27020 |  | Estructura cielo rasos | 8d | 2027-07-16 | 2027-07-29 | A27010 | 19.4d |
| A27030 |  | Dinteles borde losa | 8d | 2027-07-29 | 2027-08-10 | A27020 | 19.4d |
| A27040 |  | Inst lamina y pintura cielos rasos u muros | 8d | 2027-08-10 | 2027-08-23 | A27030 | 95.4d |
| A27050 |  | Segunda mano | 8d | 2027-08-23 | 2027-09-02 | A27040 | 95.4d |
| A27060 |  | Ceramina y guarda escobas | 8d | 2027-09-02 | 2027-09-14 | A27050 | 95.4d |
| A27070 |  | Instalacion materas | 8d | 2027-09-14 | 2027-09-24 | A27060 | 95.4d |
| A27080 |  | Inst cableado elec-com | 8d | 2027-09-24 | 2027-10-06 | A27070 | 95.4d |
| A27090 |  | Inst apa elec-com | 8d | 2027-10-06 | 2027-10-19 | A27080 | 95.4d |
| A27110 |  | Tercera mano | 8d | 2027-10-14 | 2027-10-27 | A27100 FS-10d | 95.4d |
| A27100 |  | Carpinteria metalica | 8d | 2027-10-19 | 2027-10-29 | A27090 | 95.4d |
| A27120 |  | Detallado PF | 8d | 2027-10-21 | 2027-11-03 | A27110 FS-4d | 95.4d |
| A27130 |  | Aseo | 8d | 2027-11-03 | 2027-11-16 | A27120 | 95.4d |

| ID | WBS | Task | Duration | Start | Finish | Predecessors | Total float |
| --- | --- | --- | --- | --- | --- | --- | --- |
|  | P13 | **Piso 13** |  | 2027-08-03 | 2027-12-14 |  |  |
| A27140 |  | Estuco y primera mano | 8d | 2027-08-03 | 2027-08-13 | A27030 FS-5d | 19.4d |
| A27150 |  | Estructura cielo rasos | 8d | 2027-08-13 | 2027-08-26 | A27140 | 19.4d |
| A27160 |  | Dinteles borde losa | 8d | 2027-08-26 | 2027-09-07 | A27150 | 19.4d |
| A27170 |  | Inst lamina y pintura cielos rasos u muros | 8d | 2027-09-07 | 2027-09-17 | A27160 | 76.4d |
| A27180 |  | Segunda mano | 8d | 2027-09-17 | 2027-09-29 | A27170 | 76.4d |
| A27190 |  | Ceramina y guarda escobas | 8d | 2027-09-29 | 2027-10-11 | A27180 | 76.4d |
| A27200 |  | Instalacion materas | 8d | 2027-10-11 | 2027-10-22 | A27190 | 76.4d |
| A27210 |  | Inst cableado elec-com | 8d | 2027-10-22 | 2027-11-04 | A27200 | 76.4d |
| A27220 |  | Inst apa elec-com | 8d | 2027-11-04 | 2027-11-17 | A27210 | 76.4d |
| A27240 |  | Tercera mano | 8d | 2027-11-12 | 2027-11-25 | A27230 FS-10d | 76.4d |
| A27230 |  | Carpinteria metalica | 8d | 2027-11-17 | 2027-11-29 | A27220 | 76.4d |
| A27250 |  | Detallado PF | 8d | 2027-11-19 | 2027-12-01 | A27240 FS-4d | 76.4d |
| A27260 |  | Aseo | 8d | 2027-12-01 | 2027-12-14 | A27250 | 76.4d |
|  | P14 | **Piso 14** |  | 2027-08-31 | 2028-01-26 |  |  |
| A27270 |  | Estuco y primera mano | 8d | 2027-08-31 | 2027-09-10 | A27160 FS-5d | 19.4d |
| A27280 |  | Estructura cielo rasos | 8d | 2027-09-10 | 2027-09-22 | A27270 | 19.4d |
| A27290 |  | Dinteles borde losa | 8d | 2027-09-22 | 2027-10-04 | A27280 | 19.4d |
| A27300 |  | Inst lamina y pintura cielos rasos u muros | 8d | 2027-10-04 | 2027-10-14 | A27290 | 57.4d |
| A27310 |  | Segunda mano | 8d | 2027-10-14 | 2027-10-27 | A27300 | 57.4d |
| A27320 |  | Ceramina y guarda escobas | 8d | 2027-10-27 | 2027-11-09 | A27310 | 57.4d |
| A27330 |  | Instalacion materas | 8d | 2027-11-09 | 2027-11-22 | A27320 | 57.4d |
| A27340 |  | Inst cableado elec-com | 8d | 2027-11-22 | 2027-12-02 | A27330 | 57.4d |
| A27350 |  | Inst apa elec-com | 8d | 2027-12-02 | 2027-12-15 | A27340 | 57.4d |
| A27370 |  | Tercera mano | 8d | 2027-12-13 | 2027-12-23 | A27360 FS-10d | 57.4d |
| A27360 |  | Carpinteria metalica | 8d | 2027-12-15 | 2028-01-12 | A27350 | 57.4d |
| A27380 |  | Detallado PF | 8d | 2027-12-17 | 2028-01-14 | A27370 FS-4d | 57.4d |
| A27390 |  | Aseo | 8d | 2028-01-14 | 2028-01-26 | A27380 | 57.4d |
|  | P15 | **Piso 15** |  | 2027-09-27 | 2028-02-22 |  |  |
| A27400 |  | Estuco y primera mano | 8d | 2027-09-27 | 2027-10-07 | A27290 FS-5d | 19.4d |
| A27410 |  | Estructura cielo rasos | 8d | 2027-10-07 | 2027-10-20 | A27400 | 19.4d |
| A27420 |  | Dinteles borde losa | 8d | 2027-10-20 | 2027-11-02 | A27410 | 19.4d |
| A27430 |  | Inst lamina y pintura cielos rasos u muros | 8d | 2027-11-02 | 2027-11-12 | A27420 | 38.4d |
| A27440 |  | Segunda mano | 8d | 2027-11-12 | 2027-11-25 | A27430 | 38.4d |
| A27450 |  | Ceramina y guarda escobas | 8d | 2027-11-25 | 2027-12-07 | A27440 | 38.4d |
| A27460 |  | Instalacion materas | 8d | 2027-12-07 | 2027-12-20 | A27450 | 38.4d |
| A27470 |  | Inst cableado elec-com | 8d | 2027-12-20 | 2028-01-17 | A27460 | 38.4d |
| A27480 |  | Inst apa elec-com | 8d | 2028-01-17 | 2028-01-27 | A27470 | 38.4d |
| A27500 |  | Tercera mano | 8d | 2028-01-25 | 2028-02-04 | A27490 FS-10d | 38.4d |
| A27490 |  | Carpinteria metalica | 8d | 2028-01-27 | 2028-02-08 | A27480 | 38.4d |
| A27510 |  | Detallado PF | 8d | 2028-01-31 | 2028-02-10 | A27500 FS-4d | 38.4d |
| A27520 |  | Aseo | 8d | 2028-02-10 | 2028-02-22 | A27510 | 38.4d |
|  | P16 | **Piso 16** |  | 2027-10-25 | 2028-03-21 |  |  |
| A27530 |  | Estuco y primera mano | 8d | 2027-10-25 | 2027-11-05 | A27420 FS-5d | 19.4d |
| A27540 |  | Estructura cielo rasos | 8d | 2027-11-05 | 2027-11-18 | A27530 | 19.4d |
| A27550 |  | Dinteles borde losa | 8d | 2027-11-18 | 2027-11-30 | A27540 | 19.4d |
| A27560 |  | Inst lamina y pintura cielos rasos u muros | 8d | 2027-11-30 | 2027-12-13 | A27550 | 19.4d |
| A27570 |  | Segunda mano | 8d | 2027-12-13 | 2027-12-23 | A27560 | 19.4d |
| A27580 |  | Ceramina y guarda escobas | 8d | 2027-12-23 | 2028-01-20 | A27570 | 19.4d |
| A27590 |  | Instalacion materas | 8d | 2028-01-20 | 2028-02-01 | A27580 | 19.4d |
| A27600 |  | Inst cableado elec-com | 8d | 2028-02-01 | 2028-02-11 | A27590 | 19.4d |
| A27610 |  | Inst apa elec-com | 8d | 2028-02-11 | 2028-02-23 | A27600 | 19.4d |
| A27630 |  | Tercera mano | 8d | 2028-02-21 | 2028-03-02 | A27620 FS-10d | 19.4d |
| A27620 |  | Carpinteria metalica | 8d | 2028-02-23 | 2028-03-06 | A27610 | 19.4d |
| A27640 |  | Detallado PF | 8d | 2028-02-25 | 2028-03-08 | A27630 FS-4d | 19.4d |
| A27650 |  | Aseo | 8d | 2028-03-08 | 2028-03-21 | A27640 | 19.4d |
|  | 12ASC | **09. Ascensor** |  | 2027-04-01 | 2028-02-07 |  |  |
|  | 01Fos | **01. Foso** |  | 2027-04-01 | 2027-11-24 |  |  |
| A14030 |  | Resane interno foso | 20d | 2027-04-01 | 2027-04-29 | A1700 SS | 49.9d |
| A14040 |  | Mochetas y dinteles entrada de ascensores | 20d | 2027-04-29 | 2027-05-28 | A14030 | 49.9d |
| A14050 |  | Pintura blanca foso | 20d | 2027-05-28 | 2027-06-29 | A14040 | 49.9d |
| A14060 |  | Inst. electricas | 20d | 2027-06-29 | 2027-07-29 | A14050 | 49.9d |
| A14070 |  | Impermeabilizacion de PIT | 20d | 2027-07-29 | 2027-08-27 | A14060 | 49.9d |
| A14080 |  | Montaje plataforma de proteccion foso | 20d | 2027-08-27 | 2027-09-24 | A14070 | 49.9d |
| A14090 |  | Verificaciones generales de foso | 20d | 2027-09-24 | 2027-10-25 | A14080 | 49.9d |
| A14100 |  | Punto de elevacion de carga y certificado de capacidad | 20d | 2027-10-25 | 2027-11-24 | A14090 | 49.9d |
|  | 02Inst_Asc | **02. Instalacion Ascensor** |  | 2027-11-24 | 2028-02-07 |  |  |
| A14110 |  | Inst. vigas y rieles fosos | 5d | 2027-11-24 | 2027-12-01 | A1720 SS | 49.9d |
| A14120 |  | Izaje de cabina de ascensores | 5d | 2027-12-01 | 2027-12-09 | A14110 | 49.9d |
| A14130 |  | Inst. marcos entrada | 5d | 2027-12-09 | 2027-12-16 | A14120 | 49.9d |

| ID | WBS | Task | Duration | Start | Finish | Predecessors | Total float |
| --- | --- | --- | --- | --- | --- | --- | --- |
| A14140 |  | Entradas en superboard | 5d | 2027-12-16 | 2027-12-23 | A14130 | 49.9d |
| A14150 |  | Inst. accesorios de cabina y cables traccion | 5d | 2027-12-23 | 2028-01-17 | A14140 | 49.9d |
| A14160 |  | Inst. elementos en el pozo y PIT | 5d | 2028-01-17 | 2028-01-24 | A14150 | 49.9d |
| A14170 |  | Acabados, aseo y pint. general | 5d | 2028-01-24 | 2028-01-31 | A14160 | 49.9d |
| A14180 |  | Inspeccion general de instalacion | 5d | 2028-01-31 | 2028-02-07 | A14170 | 49.9d |
|  | 13CAL | **10. Entregas Calidad** |  | 2028-02-21 | 2028-04-24 |  |  |
|  | P03 | **Piso 03** |  | 2028-02-21 | 2028-03-10 |  |  |
| A14250 |  | Aseo Final | 5d | 2028-02-21 | 2028-02-25 | A1530, A22080 | 25d |
| A14260 |  | Entrega a Calidad para Observaciones | 5d | 2028-03-06 | 2028-03-10 | A14250 FS+5d | 25d |
|  | P04 | **Piso 04** |  | 2028-02-21 | 2028-03-17 |  |  |
| A14270 |  | Aseo Final | 10d | 2028-02-21 | 2028-03-03 | A1530, A22120 | 20d |
| A14280 |  | Entrega a Calidad para Observaciones | 10d | 2028-03-06 | 2028-03-17 | A14270 | 20d |
|  | P05 | **Piso 05** |  | 2028-02-21 | 2028-03-27 |  |  |
| A14290 |  | Aseo Final | 10d | 2028-02-21 | 2028-03-03 | A1530, A22140 | 15d |
| A14300 |  | Entrega a Calidad para Observaciones | 10d | 2028-03-13 | 2028-03-27 | A14290 FS+5d | 15d |
|  | P06 | **Piso 06** |  | 2028-02-21 | 2028-03-30 |  |  |
| A14310 |  | Aseo Final | 10d | 2028-02-21 | 2028-03-03 | A1530, A22160 | 12d |
| A14320 |  | Entrega a Calidad para Observaciones | 10d | 2028-03-16 | 2028-03-30 | A14310 FS+8d | 12d |
|  | P07 | **Piso 07** |  | 2028-02-21 | 2028-04-05 |  |  |
| A14330 |  | Aseo Final | 10d | 2028-02-21 | 2028-03-03 | A1530, A22180 | 8d |
| A14340 |  | Entrega a Calidad para Observaciones | 10d | 2028-03-23 | 2028-04-05 | A14330 FS+12d | 8d |
|  | P08 | **Piso 08** |  | 2028-02-21 | 2028-03-17 |  |  |
| A14350 |  | Aseo Final | 10d | 2028-02-21 | 2028-03-03 | A22200, A1530 | 20d |
| A14360 |  | Entrega a Calidad para Observaciones | 10d | 2028-03-06 | 2028-03-17 | A14350 | 20d |
|  | P09 | **Piso 09** |  | 2028-02-21 | 2028-03-17 |  |  |
| A14370 |  | Aseo Final | 10d | 2028-02-21 | 2028-03-03 | A1530, A22220 FS+5d | 20d |
| A14380 |  | Entrega a Calidad para Observaciones | 10d | 2028-03-06 | 2028-03-17 | A14370 | 20d |
|  | P10 | **Piso 10** |  | 2028-02-21 | 2028-03-17 |  |  |
| A14390 |  | Aseo Final | 10d | 2028-02-21 | 2028-03-03 | A1530, A22240 | 20d |
| A14400 |  | Entrega a Calidad para Observaciones | 10d | 2028-03-06 | 2028-03-17 | A14390 | 20d |
|  | P11 | **Piso 11** |  | 2028-02-21 | 2028-03-17 |  |  |
| A14410 |  | Aseo Final | 10d | 2028-02-21 | 2028-03-03 | A1530, A22260 FS+5d | 0d |
| A14420 |  | Entrega a Calidad para Observaciones | 10d | 2028-03-06 | 2028-03-17 | A14410 | 20d |
|  | P12 | **Piso 12** |  | 2028-03-06 | 2028-03-17 |  |  |
| A14430 |  | Aseo Final | 5d | 2028-03-06 | 2028-03-10 | A1530, A14410 | 0d |
| A14440 |  | Entrega a Calidad para Observaciones | 5d | 2028-03-13 | 2028-03-17 | A14430 | 20d |
|  | P13 | **Piso 13** |  | 2028-03-13 | 2028-03-27 |  |  |
| A14450 |  | Aseo Final | 5d | 2028-03-13 | 2028-03-17 | A14430, A1530 | 0d |
| A14460 |  | Entrega a Calidad para Observaciones | 5d | 2028-03-21 | 2028-03-27 | A14450 | 15d |
|  | P14 | **Piso 14** |  | 2028-03-21 | 2028-04-03 |  |  |
| A14470 |  | Aseo Final | 5d | 2028-03-21 | 2028-03-27 | A1530, A14450 | 0d |
| A14480 |  | Entrega a Calidad para Observaciones | 5d | 2028-03-28 | 2028-04-03 | A14470 | 10d |
|  | P15 | **Piso 15** |  | 2028-03-28 | 2028-04-24 |  |  |
| A14490 |  | Aseo Final | 5d | 2028-03-28 | 2028-04-03 | A1530, A14470 | 0d |
| A14500 |  | Entrega a Calidad para Observaciones | 5d | 2028-04-18 | 2028-04-24 | A14490 FS+5d | 0d |
|  | P16 | **Piso 16** |  | 2028-04-04 | 2028-04-24 |  |  |
| A14510 |  | Aseo Final | 5d | 2028-04-04 | 2028-04-17 | A1530, A14490 | 0d |
| A14520 |  | Entrega a Calidad para Observaciones | 5d | 2028-04-18 | 2028-04-24 | A14510 | 0d |
|  | 14CTO | **11.CTO** |  | 2027-01-26 | 2027-02-09 |  |  |
| A14190 |  | Inicio CTO | 5d | 2027-01-26 | 2027-02-02 | A1740 SS | 281.9d |
| A14200 |  | Entrega CTO | 5d | 2027-02-02 | 2027-02-09 | A14190 | 281.9d |

## Version 2 (data date 2026-07-17, saved 2026-09-02, file torre_mar_v2.xer)

Note of the change: Initial release DCMA ESM Manager v0.3.2

Last finish 2028-04-24 → 2028-04-27 (+3d). Complete tasks 46 → 58.

Added:

| ID | Task | Duration | Start | Finish |
| --- | --- | --- | --- | --- |
| A19610 | Inicio Ints | 0d | 2026-07-21 | 2026-07-21 |
| A19620 | Fin Inst | 0d | 2026-07-21 | 2026-07-21 |

Changed:

| ID | Task | Start | Finish | Complete | Total float | Predecessors | Other |
| --- | --- | --- | --- | --- | --- | --- | --- |
| 00HIT | **00. Hitos** | 2025-01-13 → 2024-12-02 (-42d) | 2028-04-24 → 2028-03-01 (-54d) |  |  |  |  |
| A1040 | Inicio Exc. & Relleno | 2025-01-13 A → 2024-12-02 A (-42d) | 2025-01-13 A → 2024-12-02 A (-42d) |  |  |  |  |
| A1060 | Inicio Pilotaje | 2025-01-27 A → 2024-12-16 A (-42d) | 2025-01-27 A → 2024-12-16 A (-42d) |  |  |  |  |
| A1050 | Fin Exc. & Relleno | 2026-02-12 A → 2025-01-14 A (-394d) | 2026-02-12 A → 2025-01-14 A (-394d) |  |  |  |  |
| A1080 | Inicio Cimentacion | 2025-08-27 A → 2025-04-08 A (-141d) | 2025-08-27 A → 2025-04-08 A (-141d) |  |  |  |  |
| A1010 | 20% Avance | 2025-08-12 A → 2025-04-27 A (-107d) | 2025-08-12 A → 2025-04-27 A (-107d) |  |  |  |  |
| A1100 | Inicio Estructura | 2025-09-25 A → 2025-08-15 A (-41d) | 2025-09-25 A → 2025-08-15 A (-41d) |  |  |  | constraint none → start on or after 2025-08-29 |
| A1090 | Fin Cimentacion | 2025-09-25 A → 2025-08-30 A (-26d) | 2025-09-25 A → 2025-08-30 A (-26d) |  |  |  |  |
| A1070 | Fin Pilotaje | 2025-07-17 A → 2025-10-01 A (+76d) | 2025-07-17 A → 2025-10-01 A (+76d) |  |  |  |  |
| A1160 | Inicio Apartamento | 2026-05-08 A → 2026-03-17 A (-52d) | 2026-05-08 A → 2026-03-17 A (-52d) |  |  | A2130 → A2220 | constraint mandatory start 2026-05-08 → none |
| A1170 | Inicio Obra Gris | 2026-05-08 A → 2026-03-17 A (-52d) | 2026-05-08 A → 2026-03-17 A (-52d) |  |  |  |  |
| A1000 | Inicio Proyecto | 2025-01-13 A → 2026-07-21 (+554d) | 2025-01-13 A → 2026-07-21 (+554d) | 100% → 0% | none → 1.62d |  | constraint start on or after 2025-01-13 → start on or after 2024-12-02 |
| A1030 | UMO Fin | 2026-07-17 → 2026-07-21 (+4d) | 2026-07-17 → 2026-07-21 (+4d) |  | 409d → 410.7d |  |  |
| A1240 | Fin Cielo Raso | 2027-06-23 → 2026-07-21 (-337d) | 2027-06-23 → 2026-07-21 (-337d) |  | 193.93d → 410.7d | A15210 → none |  |
| A1400 | Inicio Fachada | 2026-07-17 → 2026-07-21 (+4d) | 2026-07-17 → 2026-07-21 (+4d) |  | 0d → 8d |  |  |
| A1540 | Inicio Punto Fijo | 2026-07-17 → 2026-07-21 (+4d) | 2026-07-17 → 2026-07-21 (+4d) |  | 19.4d → 1.62d |  |  |
| A1550 | Inicio Punto Fijo Obra Gris | 2026-07-17 → 2026-07-21 (+4d) | 2026-07-17 → 2026-07-21 (+4d) |  | 19.4d → 1.62d |  |  |
| A1560 | Fin Punto Fijo Obra Gris | 2028-03-21 → 2026-07-21 (-609d) | 2028-03-21 → 2026-07-21 (-609d) |  | 19.4d → 410.7d | A27650 → none |  |
| A1690 | Fin Punto Fijo | 2028-03-21 → 2026-07-21 (-609d) | 2028-03-21 → 2026-07-21 (-609d) |  | 19.4d → 410.7d |  |  |
| A1770 | Entrega Calidad Piso 1 | 2028-03-06 → 2026-07-21 (-594d) | 2028-03-06 → 2026-07-21 (-594d) |  | 30d → 410.7d | A14400 SS → none |  |
| A1780 | Entrega Calidad Piso 2 | 2028-03-06 → 2026-07-21 (-594d) | 2028-03-06 → 2026-07-21 (-594d) |  | 30d → 410.7d |  |  |
| A1190 | Inicio Estuco y Pintura-01 | 2026-08-04 → 2026-08-03 (-1d) | 2026-08-04 → 2026-08-03 (-1d) |  | 31.93d → 35.06d |  |  |
| A1230 | Inicio Cielo Raso | 2026-09-03 → 2026-09-02 (-1d) | 2026-09-03 → 2026-09-02 (-1d) |  | 31.93d → 35.06d |  |  |
| A19590 | Inicio Dinteles | 2026-09-14 → 2026-09-10 (-4d) | 2026-09-14 → 2026-09-10 (-4d) |  | 223.93d → 228.58d |  |  |
| A1250 | Inicio Laminado Pintura Cielo Raso | 2026-10-06 → 2026-10-05 (-1d) | 2026-10-06 → 2026-10-05 (-1d) |  | 31.93d → 35.06d |  |  |
| A1310 | Inicio Estuco y Pintura-02 | 2026-11-09 → 2026-11-06 (-3d) | 2026-11-09 → 2026-11-06 (-3d) |  | 31.93d → 35.06d |  |  |
| A19790 | Inicio Ventaneria | 2026-11-18 → 2026-11-17 (-1d) | 2026-11-18 → 2026-11-17 (-1d) |  | 31.93d → 35.06d |  |  |
| A1110 | Fin Estructura | 2027-01-26 → 2026-11-26 (-61d) | 2027-01-26 → 2026-11-26 (-61d) |  | 49.9d → 34.15d |  |  |
| A1120 | Inicio Cubierta Estructura | 2027-01-26 → 2026-11-26 (-61d) | 2027-01-26 → 2026-11-26 (-61d) |  | 49.9d → 34.15d |  |  |
| A1740 | Inicio CTO | 2027-01-26 → 2026-11-26 (-61d) | 2027-01-26 → 2026-11-26 (-61d) |  | 281.9d → 312.85d |  |  |
| A1330 | Inicio Inst. elec-comun | 2026-12-10 → 2026-12-09 (-1d) | 2026-12-10 → 2026-12-09 (-1d) |  | 267.93d → 271.06d |  |  |
| A19970 | Inicio Carp. Madera | 2026-12-10 → 2026-12-09 (-1d) | 2026-12-10 → 2026-12-09 (-1d) |  | 168.93d → 96.36d |  |  |
| A1750 | Fin CTO | 2027-02-09 → 2026-12-11 (-60d) | 2027-02-09 → 2026-12-11 (-60d) |  | 281.9d → 312.85d |  |  |
| A1130 | Fin Cubierta Estructura | 2027-02-25 → 2027-01-15 (-41d) | 2027-02-25 → 2027-01-15 (-41d) |  | 49.9d → 34.15d |  |  |
| A1140 | Inicio Cubierta Acabados | 2027-02-25 → 2027-01-15 (-41d) | 2027-02-25 → 2027-01-15 (-41d) |  | 183.9d → 194.15d |  |  |
| A1700 | Inicio Foso | 2027-04-01 → 2027-01-15 (-76d) | 2027-04-01 → 2027-01-15 (-76d) |  | 49.9d → 34.15d | A1130 FS+20d → A1130 |  |
| A1210 | Inicio Instalacion Soportes | 2027-01-28 → 2027-01-26 (-2d) | 2027-01-28 → 2027-01-26 (-2d) |  | 223.93d → 228.58d |  |  |
| A1290 | Inicio Ceramica y Enchapes | 2027-01-27 → 2027-01-26 (-1d) | 2027-01-27 → 2027-01-26 (-1d) |  | 31.93d → 35.06d |  |  |
| A1020 | 70% Avance | 2027-02-15 → 2027-02-11 (-4d) | 2027-02-15 → 2027-02-11 (-4d) |  | 277.93d → 282.58d |  |  |
| A20730 | Inicio Mesones | 2027-04-01 → 2027-03-31 (-1d) | 2027-04-01 → 2027-03-31 (-1d) |  | 168.93d → 96.36d |  |  |
| A1370 | Inicio Barandas Divisiones Banos y Espejos | 2027-04-07 → 2027-04-06 (-1d) | 2027-04-07 → 2027-04-06 (-1d) |  | 168.93d → 96.36d |  |  |
| A19600 | Fin Dinteles | 2027-04-26 → 2027-04-22 (-4d) | 2027-04-26 → 2027-04-22 (-4d) |  | 232.93d → 237.58d |  |  |
| A1220 | Fin Instalacion Soportes | 2027-05-07 → 2027-05-05 (-2d) | 2027-05-07 → 2027-05-05 (-2d) |  | 223.93d → 228.58d |  |  |
| A1350 | Inicio Dotacion | 2027-05-20 → 2027-05-19 (-1d) | 2027-05-20 → 2027-05-19 (-1d) |  | 168.93d → 96.36d |  |  |
| A1180 | Fin Obra Gris | 2027-06-25 → 2027-05-25 (-31d) | 2027-06-25 → 2027-05-25 (-31d) |  | 191.7d → 215.13d |  |  |
| A1150 | Fin Cubierta Acabados | 2027-07-08 → 2027-05-25 (-44d) | 2027-07-08 → 2027-05-25 (-44d) |  | 183.9d → 214.85d |  |  |
| A22030 | Inicio Estuco y Pintura-03 | 2027-06-09 → 2027-06-08 (-1d) | 2027-06-09 → 2027-06-08 (-1d) |  | 168.93d → 96.36d |  |  |
| A22090 | Inicio Detallado y Aseo Apartamentos | 2027-06-15 → 2027-06-14 (-1d) | 2027-06-15 → 2027-06-14 (-1d) |  | 168.93d → 96.36d |  |  |
| A1260 | Fin Laminado Pintura Cielo Raso | 2027-06-23 → 2027-06-22 (-1d) | 2027-06-23 → 2027-06-22 (-1d) |  | 193.93d → 197.06d |  |  |
| A1200 | Fin Estuco y Pintura-01 | 2027-07-12 → 2027-07-09 (-3d) | 2027-07-12 → 2027-07-09 (-3d) |  | 181.33d → 185.58d |  |  |
| A1300 | Fin Ceramica y Enchapes | 2027-08-03 → 2027-08-02 (-1d) | 2027-08-03 → 2027-08-02 (-1d) |  | 166.93d → 170.06d |  |  |
| A19800 | Fin Ventaneria | 2027-08-03 → 2027-08-02 (-1d) | 2027-08-03 → 2027-08-02 (-1d) |  | 166.93d → 170.06d |  |  |
| A1320 | Fin Estuco y Pintura-02 | 2027-08-17 → 2027-08-13 (-4d) | 2027-08-17 → 2027-08-13 (-4d) |  | 157.93d → 161.06d |  |  |
| A1340 | Fin Inst. elec-comun | 2027-09-07 → 2027-09-06 (-1d) | 2027-09-07 → 2027-09-06 (-1d) |  | 142.93d → 146.06d |  |  |
| A1710 | Fin Foso | 2027-11-24 → 2027-09-13 (-72d) | 2027-11-24 → 2027-09-13 (-72d) |  | 49.9d → 34.15d |  |  |
| A1720 | Inicio Instalacion Ascensor | 2027-11-24 → 2027-09-13 (-72d) | 2027-11-24 → 2027-09-13 (-72d) |  | 49.9d → 34.15d |  |  |
| A19980 | Fin Carp. Madera | 2027-10-26 → 2027-10-25 (-1d) | 2027-10-26 → 2027-10-25 (-1d) |  | 108.93d → 112.06d |  |  |
| A20740 | Fin Mesones | 2027-11-03 → 2027-11-02 (-1d) | 2027-11-03 → 2027-11-02 (-1d) |  | 103.93d → 107.06d |  |  |
| A1730 | Fin Instalacion Ascensor | 2028-02-07 → 2027-11-10 (-89d) | 2028-02-07 → 2027-11-10 (-89d) |  | 49.9d → 100.85d |  |  |
| A1380 | Fin Barandas Divisiones Banos y Espejos | 2027-11-29 → 2027-11-26 (-3d) | 2027-11-29 → 2027-11-26 (-3d) |  | 86.93d → 90.06d |  |  |
| A1530 | Fin Fachada | 2028-02-18 → 2027-12-20 (-60d) | 2028-02-18 → 2027-12-20 (-60d) |  | 0d → 42.7d | A23820 FF, A23180 FF+25d → A23820 FF, A23180 FF |  |
| A1760 | Inicio Entregas Calidad | 2028-02-21 → 2027-12-21 (-62d) | 2028-02-21 → 2027-12-21 (-62d) |  | 40d → 74.7d |  |  |
| A1790 | Entrega Calidad Piso 3 | 2028-03-10 → 2028-01-12 (-58d) | 2028-03-10 → 2028-01-12 (-58d) |  | 25d → 69.7d |  |  |
| A1800 | Entrega Calidad Piso 4 | 2028-03-17 → 2028-01-19 (-58d) | 2028-03-17 → 2028-01-19 (-58d) |  | 20d → 64.7d |  |  |
| A1360 | Fin Dotacion | 2028-01-27 → 2028-01-26 (-1d) | 2028-01-27 → 2028-01-26 (-1d) |  | 56.93d → 60.06d |  |  |
| A1390 | Fin Apartamento | 2028-01-27 → 2028-01-26 (-1d) | 2028-01-27 → 2028-01-26 (-1d) |  | 56.93d → 60.06d |  |  |
| A1810 | Entrega Calidad Piso 5 | 2028-03-27 → 2028-01-26 (-61d) | 2028-03-27 → 2028-01-26 (-61d) |  | 15d → 59.7d |  |  |
| A1820 | Entrega Calidad Piso 6 | 2028-03-30 → 2028-01-31 (-59d) | 2028-03-30 → 2028-01-31 (-59d) |  | 12d → 56.7d |  |  |
| A22040 | Fin Estuco y Pintura-03 | 2028-02-10 → 2028-02-09 (-1d) | 2028-02-10 → 2028-02-09 (-1d) |  | 46.93d → 50.06d |  |  |
| A1830 | Entrega Calidad Piso 7 | 2028-04-05 → 2028-02-18 (-47d) | 2028-04-05 → 2028-02-18 (-47d) |  | 8d → 42.7d |  |  |

| ID | Task | Start | Finish | Complete | Total float | Other |
| --- | --- | --- | --- | --- | --- | --- |
| A1840 | Entrega Calidad Piso 8 | 2028-04-05 → 2028-02-18 (-47d) | 2028-04-05 → 2028-02-18 (-47d) |  | 8d → 42.7d |  |
| A1850 | Entrega Calidad Piso 9 | 2028-04-05 → 2028-02-18 (-47d) | 2028-04-05 → 2028-02-18 (-47d) |  | 8d → 42.7d |  |
| A1860 | Entrega Calidad Piso 10 | 2028-04-05 → 2028-02-18 (-47d) | 2028-04-05 → 2028-02-18 (-47d) |  | 8d → 42.7d |  |
| A1870 | Entrega Calidad Piso 11 | 2028-04-05 → 2028-02-18 (-47d) | 2028-04-05 → 2028-02-18 (-47d) |  | 8d → 42.7d |  |
| A1880 | Entrega Calidad Piso 12 | 2028-04-05 → 2028-02-18 (-47d) | 2028-04-05 → 2028-02-18 (-47d) |  | 8d → 42.7d |  |
| A1890 | Entrega Calidad Piso 13 | 2028-04-05 → 2028-02-18 (-47d) | 2028-04-05 → 2028-02-18 (-47d) |  | 8d → 42.7d |  |
| A1900 | Entrega Calidad Piso 14 | 2028-04-05 → 2028-02-18 (-47d) | 2028-04-05 → 2028-02-18 (-47d) |  | 8d → 42.7d |  |
| A22100 | Fin Detallado y Aseo Apartamentos | 2028-02-28 → 2028-02-25 (-3d) | 2028-02-28 → 2028-02-25 (-3d) |  | 34.93d → 38.06d |  |
| A1910 | Entrega Calidad Piso 15 | 2028-04-24 → 2028-03-01 (-54d) | 2028-04-24 → 2028-03-01 (-54d) |  | 0d → 35.06d |  |
| A1920 | Entrega Calidad Piso 16 | 2028-04-24 → 2028-03-01 (-54d) | 2028-04-24 → 2028-03-01 (-54d) |  | 0d → 35.06d |  |
| A1930 | Fin Entrega Calidad | 2028-04-24 → 2028-03-01 (-54d) | 2028-04-24 → 2028-03-01 (-54d) |  | 0d → 35.06d |  |
| A1940 | Fin Proyecto | 2028-04-24 → 2028-03-01 (-54d) | 2028-04-24 → 2028-03-01 (-54d) |  | 0d → 35.06d |  |
| 01EXC_REL | **01. Exc. & Relleno** | 2025-01-13 → 2024-12-02 (-42d) | 2025-02-11 → 2025-01-14 (-28d) |  |  |  |
| A1950 | Conformacion mecanica terreno | 2025-01-13 A → 2024-12-02 A (-42d) | 2025-01-27 A → 2024-12-16 A (-42d) |  |  |  |
| A1960 | Capa N° -Relleno Seleccionado (Aprobada) | 2025-01-28 A → 2024-12-17 A (-42d) | 2025-02-11 A → 2025-01-14 A (-28d) |  |  |  |
| 02PIL | **02. Pilotaje** | 2025-01-27 → 2024-12-16 (-42d) | 2025-07-16 → 2025-06-16 (-30d) |  |  |  |
| A1970 | Ejecución del Pilote | 2025-01-27 A → 2024-12-16 A (-42d) | 2025-07-16 A → 2025-06-16 A (-30d) |  |  |  |
| 05CIM | **03. Cimentacion** | 2025-08-27 → 2025-04-08 (-141d) | 2025-09-24 → 2025-09-01 (-23d) |  |  |  |
| A1990 | Amarre placa inferior | 2025-09-02 A → 2025-04-08 A (-147d) | 2025-09-04 A → 2025-07-30 A (-36d) |  |  |  |
| A2000 | Amarre acero vigas y arranques | 2025-09-05 A → 2025-04-15 A (-143d) | 2025-09-09 A → 2025-09-01 A (-8d) |  |  |  |
| A2030 | Amarre acero placa contrapiso | 2025-09-18 A → 2025-05-01 A (-140d) | 2025-09-22 A → 2025-08-30 A (-23d) |  |  |  |
| A1980 | Descabece pilotes | 2025-08-27 A → 2025-07-28 A (-30d) | 2025-09-01 A → 2025-08-14 A (-18d) |  |  |  |
| A2020 | Inst. Caseton | 2025-09-15 A → 2025-08-13 A (-33d) | 2025-09-17 A → 2025-08-21 A (-27d) |  |  |  |
| A2010 | Fundida placa inferior | 2025-09-10 A → 2025-08-22 A (-19d) | 2025-09-12 A → 2025-08-29 A (-14d) |  |  |  |
| A2040 | Fundida vigas y placa contrapiso | 2025-09-23 A → 2025-08-26 A (-28d) | 2025-09-24 A → 2025-08-28 A (-27d) |  |  |  |
| 07EST | **04. Estructura** | 2025-09-25 → 2025-08-25 (-31d) | 2027-01-26 → 2026-11-26 (-61d) |  |  |  |
| P01 | **Sotano 2** | 2025-09-25 → 2025-08-25 (-31d) | 2025-11-07 → 2025-10-25 (-13d) |  |  |  |
| A14700 | Fundida de muros | 2025-10-24 A → 2025-08-25 A (-60d) | 2025-11-07 A → 2025-09-17 A (-51d) |  |  |  |
| A2050 | Fundida de placa | 2025-09-25 A → 2025-09-01 A (-24d) | 2025-10-23 A → 2025-09-26 A (-27d) |  |  |  |
| A14690 | Fundida de muros | 2025-10-09 A → 2025-09-23 A (-16d) | 2025-10-23 A → 2025-10-25 A (+2d) |  |  |  |
| P02 | **Sotano 1** | 2025-10-24 → 2025-09-26 (-28d) | 2025-12-01 → 2025-11-21 (-10d) |  |  |  |
| A2060 | Fundida de placa | 2025-10-24 A → 2025-09-26 A (-28d) | 2025-11-14 A → 2025-11-21 A (+7d) |  |  |  |
| A2070 | Fundida de muros | 2025-11-10 A → 2025-10-06 A (-35d) | 2025-12-01 A → 2025-11-18 A (-13d) |  |  | constraint none → start on or after 2025-10-06 |
| P03 | **Piso 03** | 2026-01-21 → 2025-10-27 (-86d) | 2026-02-17 → 2025-12-11 (-68d) |  |  |  |
| A2080 | Fundida de placa | 2026-01-21 A → 2025-10-27 A (-86d) | 2026-02-10 A → 2025-11-29 A (-73d) |  |  | constraint mandatory start 2026-01-21 → none |
| A2090 | Fundida de muros | 2026-01-28 A → 2025-11-10 A (-79d) | 2026-02-17 A → 2025-12-11 A (-68d) |  |  |  |
| P04 | **Piso 04** | 2026-02-11 → 2025-12-02 (-71d) | 2026-03-10 → 2026-01-13 (-56d) |  |  |  |
| A2110 | Fundida de muros | 2026-02-18 A → 2025-12-02 A (-78d) | 2026-03-10 A → 2026-01-13 A (-56d) |  |  |  |
| A2100 | Fundida de placa | 2026-02-11 A → 2025-12-04 A (-69d) | 2026-03-03 A → 2025-12-23 A (-70d) |  |  |  |
| P05 | **Piso 05** | 2026-04-09 → 2025-12-11 (-119d) | 2026-05-07 → 2026-02-03 (-93d) |  |  |  |
| A2120 | Fundida de placa | 2026-04-09 A → 2025-12-11 A (-119d) | 2026-04-29 A → 2026-01-23 A (-96d) |  |  |  |
| A2130 | Fundida de muros | 2026-04-16 A → 2026-01-07 A (-99d) | 2026-05-07 A → 2026-02-03 A (-93d) |  |  |  |
| P06 | **Piso 06** | 2026-04-30 → 2026-01-26 (-94d) | 2026-05-20 → 2026-03-23 (-58d) |  |  |  |
| A2140 | Fundida de placa | 2026-04-30 A → 2026-01-26 A (-94d) | 2026-05-20 A → 2026-02-27 A (-82d) |  |  |  |
| A2150 | Fundida de muros | 2026-05-08 A → 2026-02-05 A (-92d) | 2026-05-19 A → 2026-03-23 A (-57d) |  |  |  |
| P07 | **Piso 07** | 2026-05-12 → 2026-02-17 (-84d) | 2026-06-12 → 2026-05-02 (-41d) |  |  |  |
| A2160 | Fundida de placa | 2026-05-12 A → 2026-02-17 A (-84d) | 2026-06-05 A → 2026-03-27 A (-70d) |  |  | constraint mandatory start 2026-05-25 → start on or after 2027-06-17 |
| A2170 | Fundida de muros | 2026-05-19 A → 2026-02-26 A (-82d) | 2026-06-12 A → 2026-05-02 A (-41d) |  |  | constraint mandatory start 2026-06-01 → none |
| P08 | **Piso 08** | 2026-06-01 → 2026-03-16 (-77d) | 2026-07-17 → 2026-05-14 (-64d) |  |  |  |
| A2180 | Fundida de placa | 2026-06-01 A → 2026-03-16 A (-77d) | 2026-06-20 A → 2026-05-08 A (-43d) |  |  | constraint none → start on or after 2026-03-30 |
| A2190 | Fundida de muros | 2026-06-10 A → 2026-04-16 A (-55d) | 2026-07-17 → 2026-05-14 A (-64d) |  | 0d → none |  |
| P09 | **Piso 09** | 2026-06-23 → 2026-04-24 (-60d) | 2026-07-27 → 2026-06-05 (-52d) |  |  |  |
| A2200 | Fundida de placa | 2026-06-23 A → 2026-04-24 A (-60d) | 2026-07-17 → 2026-05-19 A (-59d) |  | 49.9d → none |  |
| A2210 | Fundida de muros | 2026-07-02 A → 2026-05-04 A (-59d) | 2026-07-27 → 2026-06-05 A (-52d) | 66% → 100% | 49.9d → none |  |
| P10 | **Piso 10** | 2026-07-09 → 2026-05-22 (-48d) | 2026-08-19 → 2026-07-21 (-29d) |  |  |  |
| A2220 | Fundida de placa | 2026-07-09 A → 2026-05-22 A (-48d) | 2026-08-03 → 2026-06-12 A (-52d) | 33% → 100% | 52.95d → none |  |
| A2230 | Fundida de muros | 2026-07-27 → 2026-05-25 A (-63d) | 2026-08-19 → 2026-07-21 (-29d) | 0% → 95% | 49.9d → 34.15d |  |
| P11 | **Piso 11** | 2026-08-03 → 2026-05-28 (-67d) | 2026-09-09 → 2026-07-28 (-43d) |  |  |  |
| A2240 | Fundida de placa | 2026-08-03 → 2026-05-28 A (-67d) | 2026-08-26 → 2026-07-22 (-35d) | 0% → 90% | 52.9d → 34.9d |  |
| A2250 | Fundida de muros | 2026-08-19 → 2026-06-17 A (-63d) | 2026-09-09 → 2026-07-28 (-43d) | 0% → 66% | 49.9d → 34.15d |  |
| P12 | **Piso 12** | 2026-08-26 → 2026-06-22 (-65d) | 2026-09-30 → 2026-08-20 (-41d) |  |  |  |
| A2260 | Fundida de placa | 2026-08-26 → 2026-06-22 A (-65d) | 2026-09-16 → 2026-08-05 (-42d) | 0% → 33% | 52.9d → 36.45d |  |
| A2270 | Fundida de muros | 2026-09-09 → 2026-07-28 (-43d) | 2026-09-30 → 2026-08-20 (-41d) |  | 49.9d → 34.15d |  |
| P13 | **Piso 13** | 2026-09-16 → 2026-08-05 (-42d) | 2026-10-22 → 2026-09-10 (-42d) |  |  |  |
| A2280 | Fundida de placa | 2026-09-16 → 2026-08-05 (-42d) | 2026-10-07 → 2026-08-28 (-40d) |  | 52.9d → 36.45d |  |
| A2290 | Fundida de muros | 2026-09-30 → 2026-08-20 (-41d) | 2026-10-22 → 2026-09-10 (-42d) |  | 49.9d → 34.15d |  |
| P14 | **Piso 14** | 2026-10-07 → 2026-08-28 (-40d) | 2026-11-13 → 2026-10-01 (-43d) |  |  |  |
| A2300 | Fundida de placa | 2026-10-07 → 2026-08-28 (-40d) | 2026-10-29 → 2026-09-18 (-41d) |  | 52.9d → 36.45d |  |
| A2310 | Fundida de muros | 2026-10-22 → 2026-09-10 (-42d) | 2026-11-13 → 2026-10-01 (-43d) |  | 49.9d → 34.15d |  |
| P15 | **Piso 15** | 2026-10-29 → 2026-09-18 (-41d) | 2026-12-07 → 2026-10-23 (-45d) |  |  |  |

| ID | Task | Start | Finish | Duration | Complete | Total float | Other |
| --- | --- | --- | --- | --- | --- | --- | --- |
| A2320 | Fundida de placa | 2026-10-29 → 2026-09-18 (-41d) | 2026-11-23 → 2026-10-09 (-45d) |  |  | 52.9d → 36.45d |  |
| A2330 | Fundida de muros | 2026-11-13 → 2026-10-01 (-43d) | 2026-12-07 → 2026-10-23 (-45d) |  |  | 49.9d → 34.15d |  |
| P16 | **Piso 16** | 2026-11-23 → 2026-10-09 (-45d) | 2027-01-26 → 2026-11-26 (-61d) |  |  |  |  |
| A14710 | Fundida de placa | 2026-11-23 → 2026-10-09 (-45d) | 2026-12-10 → 2026-10-28 (-43d) |  |  | 52.9d → 36.45d |  |
| A14720 | Fundida de muros | 2026-12-07 → 2026-10-23 (-45d) | 2027-01-12 → 2026-11-11 (-62d) |  |  | 49.9d → 34.15d |  |
| A2340 | Fundida de placa | 2026-12-15 → 2026-10-30 (-46d) | 2027-01-19 → 2026-11-19 (-61d) |  |  | 49.9d → 34.15d |  |
| A2350 | Fundida de muros | 2026-12-22 → 2026-11-09 (-43d) | 2027-01-26 → 2026-11-26 (-61d) |  |  | 49.9d → 34.15d |  |
| 08CUB | **05. Cubierta** | 2027-01-26 → 2026-11-26 (-61d) | 2027-07-08 → 2027-05-25 (-44d) |  |  |  |  |
| 01CubEst | **01. Cubierta Estructura** | 2027-01-26 → 2026-11-26 (-61d) | 2027-02-25 → 2027-01-15 (-41d) |  |  |  |  |
| A2360 | Amarre y cama Placa | 2027-01-26 → 2026-11-26 (-61d) | 2027-02-16 → 2026-12-18 (-60d) |  |  | 49.9d → 34.15d |  |
| A2370 | Fundida Placa | 2027-01-28 → 2026-11-30 (-59d) | 2027-02-18 → 2026-12-22 (-58d) |  |  | 49.9d → 34.15d |  |
| A2380 | Fundida sobrerrecodido ascensores (si aplica) | 2027-02-18 → 2026-12-22 (-58d) | 2027-02-25 → 2027-01-15 (-41d) |  |  | 49.9d → 34.15d |  |
| 02CubAca | **02. Cubierta Acabados** | 2027-02-25 → 2027-01-15 (-41d) | 2027-07-08 → 2027-05-25 (-44d) |  |  |  |  |
| A2390 | Muros de Antepecho, ductos y cuarto Maquinas | 2027-02-25 → 2027-01-15 (-41d) | 2027-03-18 → 2027-02-05 (-41d) |  |  | 183.9d → 214.85d |  |
| A2400 | Inst. ductos ventilacion | 2027-03-18 → 2027-02-05 (-41d) | 2027-04-01 → 2027-02-12 (-48d) |  |  | 183.9d → 214.85d |  |
| A2410 | Panete de muros ductos (Si Aplica) | 2027-04-01 → 2027-02-12 (-48d) | 2027-04-22 → 2027-03-05 (-48d) |  |  | 183.9d → 214.85d |  |
| A2420 | Resanes de cubierta | 2027-04-22 → 2027-03-05 (-48d) | 2027-05-14 → 2027-04-02 (-42d) |  |  | 183.9d → 214.85d |  |
| A2430 | Apantallamiento | 2027-05-14 → 2027-04-02 (-42d) | 2027-05-26 → 2027-04-14 (-42d) |  |  | 183.9d → 214.85d |  |
| A2440 | Impermeabilizacion y prueba estanqueidad | 2027-05-26 → 2027-04-14 (-42d) | 2027-06-02 → 2027-04-20 (-43d) |  |  | 183.9d → 214.85d |  |
| A2450 | Cargue de piso | 2027-06-02 → 2027-04-20 (-43d) | 2027-06-29 → 2027-05-17 (-43d) |  |  | 183.9d → 214.85d |  |
| A2460 | Pintura de muros | 2027-06-29 → 2027-05-17 (-43d) | 2027-07-08 → 2027-05-25 (-44d) |  |  | 183.9d → 214.85d |  |
| 09APT | **06. Apartamentos** | 2026-05-15 → 2026-02-16 (-88d) | 2028-02-28 → 2028-02-25 (-3d) |  |  |  |  |
| ObrGris | **Obra Gris** | 2026-05-15 → 2026-02-16 (-88d) | 2027-06-25 → 2027-05-25 (-31d) |  |  |  |  |
| P03 | **Piso 03** | 2026-05-15 → 2026-02-16 (-88d) | 2026-09-30 → 2026-09-28 (-2d) |  |  |  |  |
| A2620 | Descolg. Prolong. Inst. Electricas | 2026-06-04 A → 2026-02-16 A (-108d) | 2026-07-17 → 2026-07-21 (+4d) |  | 97% → 100% | 31.93d → 35.06d |  |
| A2640 | Descolg. Prolong. Inst. Comunicaciones | 2026-06-24 A → 2026-02-16 A (-128d) | 2026-07-17 → 2026-07-21 (+4d) |  | 99% → 100% | 31.93d → 35.06d |  |
| A16200 | Mamposteria Interna | 2026-05-15 A → 2026-03-02 A (-74d) | 2026-08-05 → 2026-08-04 (-1d) |  | 95% → 89% | 378.08d → 399.53d |  |
| A2630 | Descolg. Prolong. Inst. hidrosanitarias | 2026-06-16 A → 2026-03-23 A (-85d) | 2026-07-17 → 2026-07-21 (+4d) |  | 90% → 97% | 31.93d → 35.06d |  |
| A2650 | Descolg. Prolong. Inst. Sanitarias | 2026-07-03 A → 2026-03-23 A (-102d) | 2026-07-22 → 2026-07-27 (+5d) |  | 67% → 41% | 31.93d → 35.06d |  |
| A2660 | Descolg. Prolong. HVAC y gas | 2026-07-06 A → 2026-05-12 A (-55d) | 2026-07-28 → 2026-07-22 (-6d) |  | 20% → 79% | 31.93d → 35.06d |  |
| A14920 | Descolg. Prolong. Inst. RCI | 2026-06-26 A → 2026-05-19 A (-38d) | 2026-08-04 → 2026-08-03 (-1d) |  | 22% → 39% | 31.93d → 35.06d |  |
| A16220 | Pañete Interno y Resanes | 2026-06-10 A → 2026-05-20 A (-21d) | 2026-08-10 → 2026-08-04 (-6d) |  | 70% → 90% | 378.08d → 399.73d |  |
| A16210 | Sobre Muros | 2026-08-05 → 2026-05-25 A (-72d) | 2026-08-12 → 2026-08-05 (-7d) |  | 0% → 90% | 392.58d → 399.53d |  |
| A16280 | Afinado de Pisos | 2026-08-21 → 2026-05-28 A (-85d) | 2026-09-02 → 2026-07-29 (-35d) |  | 0% → 82% | 378.08d → 404d |  |
| A16230 | Poyos Cocina y Labores | 2026-08-03 → 2026-06-29 A (-35d) | 2026-08-14 → 2026-07-31 (-14d) |  | 0% → 75% | 378.08d → 399.73d |  |
| A16250 | Dintel descolgado | 2026-08-12 → 2026-07-06 A (-37d) | 2026-08-27 → 2026-08-03 (-24d) | 10d → 7d | 0% → 9% | 378.08d → 401.36d | resources Dummy [0.02 h] → Dummy [0.01 h] |
| A19100 | Dinteles Puerta Ventana | 2026-09-18 → 2026-07-08 A (-72d) | 2026-09-24 → 2026-09-22 (-2d) |  | 0% → 9% | 223.93d → 228.58d |  |
| A19110 | Dintel Balcon | 2026-09-24 → 2026-07-14 A (-72d) | 2026-09-30 → 2026-09-28 (-2d) |  | 0% → 9% | 223.93d → 228.58d |  |
| A16260 | Impermeabilizacion Zonas Humedas | 2026-08-14 → 2026-07-14 A (-31d) | 2026-08-27 → 2026-08-03 (-24d) |  | 0% → 1% | 378.08d → 401.44d | constraint none → start on or after 2026-07-14 |
| A16240 | Viga Baranda | 2026-08-10 → 2026-08-04 A (-6d) | 2026-08-25 → 2026-08-04 (-21d) |  | 0% → 33% | 378.08d → 399.73d |  |
| A19090 | Dinteles Ventana | 2026-09-14 → 2026-09-10 (-4d) | 2026-09-18 → 2026-09-16 (-2d) |  |  | 223.93d → 228.58d |  |
| P04 | **Piso 04** | 2026-06-15 → 2026-05-04 (-42d) | 2026-10-22 → 2026-10-15 (-7d) |  |  |  |  |
| A16350 | Mamposteria Interna | 2026-08-20 → 2026-05-04 A (-108d) | 2026-09-10 → 2026-08-13 (-28d) |  | 0% → 88% | 343.7d → 369.35d |  |
| A16290 | Descolg. Prolong. Inst. Electricas | 2026-06-15 A → 2026-05-15 A (-31d) | 2026-07-27 → 2026-07-21 (-6d) |  | 50% → 97% | 191.7d → 215.13d |  |
| A16320 | Descolg. Prolong. Inst. Sanitarias | 2026-06-16 A → 2026-05-19 A (-28d) |  |  | 61% → 65% | 343.7d → 369.35d |  |
| A16310 | Descolg. Prolong. Inst. Comunicaciones | 2026-06-15 A → 2026-05-19 A (-27d) | 2026-07-24 → 2026-07-21 (-3d) |  | 50% → 93% | 343.7d → 369.35d |  |
| A16330 | Descolg. Prolong. HVAC y gas | 2026-07-17 → 2026-06-09 A (-38d) | 2026-07-30 → 2026-07-27 (-3d) |  | 0% → 47% | 343.7d → 369.35d |  |
| A16300 | Descolg. Prolong. Inst. hidrosanitarias | 2026-06-15 A → 2026-06-09 A (-6d) | 2026-07-27 → 2026-07-21 (-6d) |  | 31% → 89% | 343.7d → 369.35d |  |
| A16370 | Pañete Interno y Resanes | 2026-09-08 → 2026-06-18 A (-82d) | 2026-09-29 → 2026-08-31 (-29d) |  | 0% → 13% | 343.7d → 369.35d |  |
| A16360 | Sobre Muros | 2026-09-10 → 2026-06-23 A (-79d) | 2026-09-16 → 2026-08-20 (-27d) |  | 0% → 18% | 368.7d → 390.62d |  |
| A16390 | Viga Baranda | 2026-09-29 → 2026-07-01 A (-90d) | 2026-10-14 → 2026-09-10 (-34d) |  | 0% → 25% | 343.7d → 369.35d |  |
| A16340 | Descolg. Prolong. Inst. RCI | 2026-07-28 → 2026-07-21 (-7d) | 2026-08-20 → 2026-08-11 (-9d) |  |  | 343.7d → 369.35d |  |
| A16380 | Poyos Cocina y Labores | 2026-09-23 → 2026-08-25 (-29d) | 2026-10-05 → 2026-09-04 (-31d) |  |  | 343.7d → 369.35d |  |
| A16400 | Dintel descolgado | 2026-10-01 → 2026-08-31 (-31d) | 2026-10-16 → 2026-09-14 (-32d) |  |  | 343.7d → 369.35d |  |
| A16410 | Impermeabilizacion Zonas Humedas | 2026-10-05 → 2026-09-02 (-33d) | 2026-10-16 → 2026-09-14 (-32d) |  |  | 343.7d → 369.35d |  |
| A16420 | Afinado de Pisos | 2026-10-09 → 2026-09-08 (-31d) | 2026-10-22 → 2026-09-18 (-34d) |  |  | 343.7d → 369.35d |  |
| A19160 | Dinteles Ventana | 2026-09-30 → 2026-09-28 (-2d) | 2026-10-06 → 2026-10-02 (-4d) |  |  | 223.93d → 228.58d |  |
| A19170 | Dinteles Puerta Ventana | 2026-10-06 → 2026-10-02 (-4d) | 2026-10-13 → 2026-10-08 (-5d) |  |  | 223.93d → 228.58d |  |
| A19180 | Dintel Balcon | 2026-10-13 → 2026-10-08 (-5d) | 2026-10-19 → 2026-10-15 (-4d) |  |  | 223.93d → 228.58d |  |
| P05 | **Piso 05** | 2026-06-17 → 2026-05-27 (-21d) | 2026-12-16 → 2026-11-03 (-43d) |  |  |  |  |
| A16470 | Descolg. Prolong. Inst. Sanitarias | 2026-06-17 A → 2026-05-27 A (-21d) | 2026-07-31 → 2026-07-27 (-4d) |  | 61% → 65% | 307.7d → 361.17d |  |
| A16460 | Descolg. Prolong. Inst. Comunicaciones | 2026-07-02 A → 2026-06-02 A (-30d) | 2026-08-04 → 2026-07-21 (-14d) |  | 50% → 100% | 307.7d → 361.17d |  |
| A16570 | Afinado de Pisos | 2026-11-27 → 2026-06-02 A (-178d) | 2026-12-16 → 2026-09-30 (-77d) |  | 0% → 70% | 307.7d → 361.57d |  |
| A16440 | Descolg. Prolong. Inst. Electricas | 2026-07-06 A → 2026-06-09 A (-27d) | 2026-08-03 → 2026-07-21 (-13d) |  | 50% → 100% | 191.7d → 215.13d |  |
| A16450 | Descolg. Prolong. Inst. hidrosanitarias | 2026-06-17 A → 2026-06-10 A (-7d) | 2026-08-06 → 2026-07-28 (-9d) |  | 31% → 58% | 307.7d → 361.17d |  |
| A16500 | Mamposteria Interna | 2026-09-03 → 2026-06-16 A (-79d) | 2026-10-01 → 2026-09-01 (-30d) |  | 0% → 87% | 307.7d → 361.17d |  |
| A16520 | Pañete Interno y Resanes | 2026-09-29 → 2026-06-17 A (-104d) | 2026-10-28 → 2026-09-08 (-50d) |  | 0% → 65% | 307.7d → 361.17d |  |
| A16540 | Viga Baranda | 2026-10-28 → 2026-06-19 A (-131d) | 2026-11-23 → 2026-09-18 (-66d) |  | 0% → 15% | 307.7d → 361.17d |  |
| A16510 | Sobre Muros | 2026-10-01 → 2026-06-23 A (-100d) | 2026-10-07 → 2026-09-04 (-33d) |  | 0% → 27% | 353.7d → 378.85d |  |
| A16530 | Poyos Cocina y Labores | 2026-10-22 → 2026-06-23 A (-121d) | 2026-11-04 → 2026-09-04 (-61d) |  | 0% → 75% | 307.7d → 361.17d |  |

| ID | Task | Start | Finish | Complete | Total float |
| --- | --- | --- | --- | --- | --- |
| A16490 | Descolg. Prolong. Inst. RCI | 2026-08-04 → 2026-07-29 (-6d) | 2026-09-03 → 2026-08-28 (-6d) |  | 307.7d → 361.17d |
| A16480 | Descolg. Prolong. HVAC y gas | 2026-07-27 → 2026-08-03 A (+7d) | 2026-08-13 → 2026-07-29 (-15d) | 0% → 50% | 307.7d → 361.17d |
| A16550 | Dintel descolgado | 2026-11-10 → 2026-09-08 (-63d) | 2026-12-03 → 2026-09-30 (-64d) |  | 307.7d → 361.17d |
| A16560 | Impermeabilizacion Zonas Humedas | 2026-11-23 → 2026-09-18 (-66d) | 2026-12-03 → 2026-09-30 (-64d) |  | 307.7d → 361.17d |
| A19220 | Dinteles Ventana | 2026-10-19 → 2026-10-15 (-4d) | 2026-10-23 → 2026-10-21 (-2d) |  | 223.93d → 228.58d |
| A19210 | Dinteles Puerta Ventana | 2026-10-23 → 2026-10-21 (-2d) | 2026-10-29 → 2026-10-27 (-2d) |  | 223.93d → 228.58d |
| A19200 | Dintel Balcon | 2026-10-29 → 2026-10-27 (-2d) | 2026-11-05 → 2026-11-03 (-2d) |  | 223.93d → 228.58d |
| P06 | **Piso 06** | 2026-08-03 → 2026-06-16 (-48d) | 2027-02-12 → 2026-12-22 (-52d) |  |  |
| A16610 | Descolg. Prolong. Inst. Sanitarias | 2026-08-31 → 2026-06-16 A (-76d) | 2026-09-16 → 2026-08-10 (-37d) | 0% → 65% | 278.7d → 306.68d |
| A16580 | Descolg. Prolong. Inst. Electricas | 2026-08-03 → 2026-06-23 A (-41d) | 2026-08-19 → 2026-07-28 (-22d) | 0% → 49% | 191.7d → 215.13d |
| A16680 | Viga Baranda | 2026-12-11 → 2026-06-30 A (-164d) | 2027-01-21 → 2026-11-27 (-55d) | 0% → 10% | 278.7d → 306.68d |
| A16600 | Descolg. Prolong. Inst. Comunicaciones | 2026-08-21 → 2026-07-15 A (-37d) | 2026-09-08 → 2026-08-06 (-33d) | 0% → 50% | 278.7d → 306.68d |
| A16590 | Descolg. Prolong. Inst. hidrosanitarias | 2026-08-12 → 2026-07-21 (-22d) | 2026-08-31 → 2026-08-06 (-25d) |  | 278.7d → 306.68d |
| A16620 | Descolg. Prolong. HVAC y gas | 2026-09-08 → 2026-08-03 (-36d) | 2026-09-24 → 2026-08-21 (-34d) |  | 278.7d → 306.68d |
| A16630 | Descolg. Prolong. Inst. RCI | 2026-09-16 → 2026-08-12 (-35d) | 2026-10-15 → 2026-09-10 (-35d) |  | 278.7d → 306.68d |
| A16640 | Mamposteria Interna | 2026-10-15 → 2026-09-10 (-35d) | 2026-11-13 → 2026-10-08 (-36d) |  | 278.7d → 306.68d |
| A16660 | Pañete Interno y Resanes | 2026-11-11 → 2026-10-06 (-36d) | 2026-12-11 → 2026-11-05 (-36d) |  | 278.7d → 306.68d |
| A16650 | Sobre Muros | 2026-11-13 → 2026-10-08 (-36d) | 2026-11-20 → 2026-10-15 (-36d) |  | 324.7d → 351.08d |
| A16670 | Poyos Cocina y Labores | 2026-12-04 → 2026-10-29 (-36d) | 2026-12-17 → 2026-11-11 (-36d) |  | 278.7d → 306.68d |
| A19270 | Dinteles Ventana | 2026-11-05 → 2026-11-03 (-2d) | 2026-11-11 → 2026-11-09 (-2d) |  | 223.93d → 228.58d |
| A19260 | Dinteles Puerta Ventana | 2026-11-11 → 2026-11-09 (-2d) | 2026-11-18 → 2026-11-13 (-5d) |  | 223.93d → 228.58d |
| A19250 | Dintel Balcon | 2026-11-18 → 2026-11-13 (-5d) | 2026-11-24 → 2026-11-20 (-4d) |  | 223.93d → 228.58d |
| A16690 | Dintel descolgado | 2026-12-23 → 2026-11-17 (-36d) | 2027-02-02 → 2026-12-10 (-54d) |  | 278.7d → 306.68d |
| A16700 | Impermeabilizacion Zonas Humedas | 2027-01-21 → 2026-11-27 (-55d) | 2027-02-02 → 2026-12-10 (-54d) |  | 278.7d → 306.68d |
| A16710 | Afinado de Pisos | 2027-01-27 → 2026-12-03 (-55d) | 2027-02-12 → 2026-12-22 (-52d) |  | 278.7d → 306.68d |
| P07 | **Piso 07** | 2026-08-19 → 2026-06-16 (-64d) | 2027-02-26 → 2026-12-14 (-74d) |  |  |
| A16740 | Descolg. Prolong. Inst. Comunicaciones | 2026-09-04 → 2026-06-16 A (-80d) | 2026-09-22 → 2026-08-12 (-41d) | 0% → 65% | 268.7d → 312.44d |
| A16780 | Mamposteria Interna | 2026-10-29 → 2026-06-16 A (-135d) | 2026-11-30 → 2026-09-29 (-62d) | 0% → 57% | 268.7d → 312.44d |
| A16720 | Descolg. Prolong. Inst. Electricas | 2026-08-19 → 2026-06-25 A (-55d) | 2026-09-02 → 2026-07-31 (-33d) | 0% → 69% | 191.7d → 215.13d |
| A16750 | Descolg. Prolong. Inst. Sanitarias | 2026-09-14 → 2026-07-14 A (-62d) | 2026-09-30 → 2026-08-20 (-41d) | 0% → 22% | 268.7d → 312.44d |
| A16730 | Descolg. Prolong. Inst. hidrosanitarias | 2026-08-27 → 2026-07-28 (-30d) | 2026-09-14 → 2026-08-14 (-31d) |  | 268.7d → 312.44d |
| A16760 | Descolg. Prolong. HVAC y gas | 2026-09-22 → 2026-08-10 (-43d) | 2026-10-08 → 2026-08-27 (-42d) |  | 268.7d → 312.44d |
| A16770 | Descolg. Prolong. Inst. RCI | 2026-09-30 → 2026-08-19 (-42d) | 2026-10-29 → 2026-09-16 (-43d) |  | 268.7d → 312.44d |
| A16800 | Pañete Interno y Resanes | 2026-11-26 → 2026-09-25 (-62d) | 2027-01-13 → 2026-10-26 (-79d) |  | 268.7d → 312.44d |
| A16790 | Sobre Muros | 2026-11-30 → 2026-10-01 A (-60d) | 2026-12-04 → 2026-10-01 (-64d) | 0% → 55% | 314.7d → 360.64d |
| A16810 | Poyos Cocina y Labores | 2026-12-21 → 2026-10-20 (-62d) | 2027-01-19 → 2026-10-30 (-81d) |  | 268.7d → 312.44d |
| A16820 | Viga Baranda | 2027-01-13 → 2026-10-26 (-79d) | 2027-02-04 → 2026-11-19 (-77d) |  | 268.7d → 312.44d |
| A16830 | Dintel descolgado | 2027-01-25 → 2026-11-06 (-80d) | 2027-02-16 → 2026-12-01 (-77d) |  | 268.7d → 312.44d |
| A16840 | Impermeabilizacion Zonas Humedas | 2027-02-04 → 2026-11-19 (-77d) | 2027-02-16 → 2026-12-01 (-77d) |  | 268.7d → 312.44d |
| A19300 | Dinteles Ventana | 2026-11-24 → 2026-11-20 (-4d) | 2026-11-30 → 2026-11-26 (-4d) |  | 223.93d → 228.58d |
| A16850 | Afinado de Pisos | 2027-02-10 → 2026-11-25 (-77d) | 2027-02-26 → 2026-12-14 (-74d) |  | 268.7d → 312.44d |
| A19290 | Dinteles Puerta Ventana | 2026-11-30 → 2026-11-26 (-4d) | 2026-12-04 → 2026-12-02 (-2d) |  | 223.93d → 228.58d |
| A19280 | Dintel Balcon | 2026-12-04 → 2026-12-02 (-2d) | 2026-12-11 → 2026-12-09 (-2d) |  | 223.93d → 228.58d |
| P08 | **Piso 08** | 2026-09-02 → 2026-06-25 (-69d) | 2027-03-12 → 2027-02-03 (-37d) |  |  |
| A16860 | Descolg. Prolong. Inst. Electricas | 2026-09-02 → 2026-06-25 A (-69d) | 2026-09-16 → 2026-08-18 (-29d) |  | 191.7d → 215.13d |
| A16870 | Descolg. Prolong. Inst. hidrosanitarias | 2026-09-10 → 2026-07-31 (-41d) | 2026-09-28 → 2026-08-20 (-39d) |  | 258.7d → 288.13d |
| A16880 | Descolg. Prolong. Inst. Comunicaciones | 2026-09-18 → 2026-08-11 (-38d) | 2026-10-06 → 2026-08-28 (-39d) |  | 258.7d → 288.13d |
| A16890 | Descolg. Prolong. Inst. Sanitarias | 2026-09-28 → 2026-08-20 (-39d) | 2026-10-15 → 2026-09-07 (-38d) |  | 258.7d → 288.13d |
| A16900 | Descolg. Prolong. HVAC y gas | 2026-10-06 → 2026-08-28 (-39d) | 2026-10-23 → 2026-09-15 (-38d) |  | 258.7d → 288.13d |
| A16910 | Descolg. Prolong. Inst. RCI | 2026-10-15 → 2026-09-07 (-38d) | 2026-11-13 → 2026-10-05 (-39d) |  | 258.7d → 288.13d |
| A16920 | Mamposteria Interna | 2026-11-13 → 2026-10-05 (-39d) | 2026-12-15 → 2026-11-04 (-41d) |  | 258.7d → 288.13d |
| A16940 | Pañete Interno y Resanes | 2026-12-11 → 2026-10-30 (-42d) | 2027-01-27 → 2026-12-01 (-57d) |  | 258.7d → 288.13d |
| A16930 | Sobre Muros | 2026-12-15 → 2026-11-04 (-41d) | 2026-12-21 → 2026-11-10 (-41d) |  | 304.7d → 334.13d |
| A16950 | Poyos Cocina y Labores | 2027-01-21 → 2026-11-25 (-57d) | 2027-02-02 → 2026-12-07 (-57d) |  | 258.7d → 288.13d |
| A16960 | Viga Baranda | 2027-01-27 → 2026-12-01 (-57d) | 2027-02-18 → 2027-01-12 (-37d) |  | 258.7d → 288.13d |
| A19330 | Dinteles Ventana | 2026-12-11 → 2026-12-09 (-2d) | 2026-12-17 → 2026-12-15 (-2d) |  | 223.93d → 228.58d |
| A16970 | Dintel descolgado | 2027-02-08 → 2026-12-14 (-56d) | 2027-03-02 → 2027-01-22 (-39d) |  | 258.7d → 288.13d |
| A19320 | Dinteles Puerta Ventana | 2026-12-17 → 2026-12-15 (-2d) | 2026-12-23 → 2026-12-21 (-2d) |  | 223.93d → 228.58d |
| A19310 | Dintel Balcon | 2026-12-23 → 2026-12-21 (-2d) | 2027-01-15 → 2027-01-13 (-2d) |  | 223.93d → 228.58d |
| A16980 | Impermeabilizacion Zonas Humedas | 2027-02-18 → 2027-01-12 (-37d) | 2027-03-02 → 2027-01-22 (-39d) |  | 258.7d → 288.13d |
| A16990 | Afinado de Pisos | 2027-02-24 → 2027-01-18 (-37d) | 2027-03-12 → 2027-02-03 (-37d) |  | 258.7d → 288.13d |
| P09 | **Piso 09** | 2026-09-16 → 2026-08-18 (-29d) | 2027-03-09 → 2027-02-08 (-29d) |  |  |
| A17000 | Descolg. Prolong. Inst. Electricas | 2026-09-16 → 2026-08-18 (-29d) | 2026-09-30 → 2026-09-01 (-29d) |  | 191.7d → 215.13d |
| A17010 | Descolg. Prolong. Inst. hidrosanitarias | 2026-09-24 → 2026-08-26 (-29d) | 2026-10-09 → 2026-09-10 (-29d) |  | 261.7d → 285.13d |
| A17020 | Descolg. Prolong. Inst. Comunicaciones | 2026-10-02 → 2026-09-03 (-29d) | 2026-10-20 → 2026-09-18 (-32d) |  | 261.7d → 285.13d |
| A17030 | Descolg. Prolong. Inst. Sanitarias | 2026-10-13 → 2026-09-11 (-32d) | 2026-10-28 → 2026-09-28 (-30d) |  | 261.7d → 285.13d |
| A17040 | Descolg. Prolong. HVAC y gas | 2026-10-21 → 2026-09-21 (-30d) | 2026-11-06 → 2026-10-06 (-31d) |  | 261.7d → 285.13d |
| A17050 | Descolg. Prolong. Inst. RCI | 2026-10-29 → 2026-09-29 (-30d) | 2026-11-26 → 2026-10-26 (-31d) |  | 261.7d → 285.13d |
| A17060 | Mamposteria Interna | 2026-11-26 → 2026-10-26 (-31d) | 2026-12-23 → 2026-11-23 (-30d) |  | 261.7d → 285.13d |
| A17080 | Pañete Interno y Resanes | 2026-12-21 → 2026-11-19 (-32d) | 2027-02-02 → 2026-12-16 (-48d) |  | 261.7d → 285.13d |

| ID | Task | Start | Finish | Total float |
| --- | --- | --- | --- | --- |
| A17070 | Sobre Muros | 2026-12-23 → 2026-11-23 (-30d) | 2027-01-14 → 2026-11-26 (-49d) | 299.7d → 323.13d |
| A17090 | Poyos Cocina y Labores | 2027-01-27 → 2026-12-10 (-48d) | 2027-02-05 → 2026-12-21 (-46d) | 261.7d → 285.13d |
| A17100 | Viga Baranda | 2027-02-01 → 2026-12-15 (-48d) | 2027-02-19 → 2027-01-21 (-29d) | 261.7d → 285.13d |
| A17110 | Dintel descolgado | 2027-02-09 → 2026-12-23 (-48d) | 2027-03-01 → 2027-01-29 (-31d) | 261.7d → 285.13d |
| A19390 | Dinteles Ventana | 2027-01-15 → 2027-01-13 (-2d) | 2027-01-20 → 2027-01-18 (-2d) | 223.93d → 228.58d |
| A19380 | Dinteles Puerta Ventana | 2027-01-20 → 2027-01-18 (-2d) | 2027-01-25 → 2027-01-21 (-4d) | 223.93d → 228.58d |
| A17120 | Impermeabilizacion Zonas Humedas | 2027-02-17 → 2027-01-19 (-29d) | 2027-02-26 → 2027-01-28 (-29d) | 261.7d → 285.13d |
| A19370 | Dintel Balcon | 2027-01-25 → 2027-01-21 (-4d) | 2027-01-28 → 2027-01-26 (-2d) | 223.93d → 228.58d |
| A17130 | Afinado de Pisos | 2027-02-22 → 2027-01-22 (-31d) | 2027-03-09 → 2027-02-08 (-29d) | 261.7d → 285.13d |
| P10 | **Piso 10** | 2026-09-30 → 2026-09-01 (-29d) | 2027-03-30 → 2027-02-22 (-36d) |  |
| A17140 | Descolg. Prolong. Inst. Electricas | 2026-09-30 → 2026-09-01 (-29d) | 2026-10-15 → 2026-09-15 (-30d) | 191.7d → 215.13d |
| A17150 | Descolg. Prolong. Inst. hidrosanitarias | 2026-10-08 → 2026-09-09 (-29d) | 2026-10-26 → 2026-09-24 (-32d) | 251.7d → 275.13d |
| A17160 | Descolg. Prolong. Inst. Comunicaciones | 2026-10-19 → 2026-09-17 (-32d) | 2026-11-04 → 2026-10-02 (-33d) | 251.7d → 275.13d |
| A17170 | Descolg. Prolong. Inst. Sanitarias | 2026-10-27 → 2026-09-25 (-32d) | 2026-11-12 → 2026-10-13 (-30d) | 251.7d → 275.13d |
| A17180 | Descolg. Prolong. HVAC y gas | 2026-11-05 → 2026-10-05 (-31d) | 2026-11-23 → 2026-10-21 (-33d) | 251.7d → 275.13d |
| A17190 | Descolg. Prolong. Inst. RCI | 2026-11-13 → 2026-10-14 (-30d) | 2026-12-11 → 2026-11-10 (-31d) | 251.7d → 275.13d |
| A17200 | Mamposteria Interna | 2026-12-11 → 2026-11-10 (-31d) | 2027-01-25 → 2026-12-07 (-49d) | 251.7d → 275.13d |
| A17220 | Pañete Interno y Resanes | 2027-01-21 → 2026-12-03 (-49d) | 2027-02-16 → 2027-01-18 (-29d) | 251.7d → 275.13d |
| A17210 | Sobre Muros | 2027-01-25 → 2026-12-07 (-49d) | 2027-01-28 → 2026-12-11 (-48d) | 289.7d → 313.13d |
| A17230 | Poyos Cocina y Labores | 2027-02-10 → 2027-01-12 (-29d) | 2027-02-19 → 2027-01-21 (-29d) | 251.7d → 275.13d |
| A17240 | Viga Baranda | 2027-02-15 → 2027-01-15 (-31d) | 2027-03-05 → 2027-02-04 (-29d) | 251.7d → 275.13d |
| A17250 | Dintel descolgado | 2027-02-23 → 2027-01-25 (-29d) | 2027-03-15 → 2027-02-12 (-31d) | 251.7d → 275.13d |
| A19360 | Dinteles Ventana | 2027-01-28 → 2027-01-26 (-2d) | 2027-02-02 → 2027-01-29 (-4d) | 232.93d → 237.58d |
| A19350 | Dinteles Puerta Ventana | 2027-02-02 → 2027-01-29 (-4d) | 2027-02-05 → 2027-02-03 (-2d) | 232.93d → 237.58d |
| A17260 | Impermeabilizacion Zonas Humedas | 2027-03-03 → 2027-02-02 (-29d) | 2027-03-12 → 2027-02-11 (-29d) | 251.7d → 275.13d |
| A19340 | Dintel Balcon | 2027-02-05 → 2027-02-03 (-2d) | 2027-02-10 → 2027-02-08 (-2d) | 232.93d → 237.58d |
| A17270 | Afinado de Pisos | 2027-03-08 → 2027-02-05 (-31d) | 2027-03-30 → 2027-02-22 (-36d) | 251.7d → 275.13d |
| P11 | **Piso 11** | 2026-10-29 → 2026-09-29 (-30d) | 2027-04-12 → 2027-03-05 (-38d) |  |
| A17280 | Descolg. Prolong. Inst. Electricas | 2026-10-29 → 2026-09-29 (-30d) | 2026-11-13 → 2026-10-14 (-30d) | 191.7d → 215.13d |
| A17290 | Descolg. Prolong. Inst. hidrosanitarias | 2026-11-09 → 2026-10-07 (-33d) | 2026-11-25 → 2026-10-23 (-33d) | 242.7d → 266.13d |
| A17300 | Descolg. Prolong. Inst. Comunicaciones | 2026-11-13 → 2026-10-14 (-30d) | 2026-12-01 → 2026-10-29 (-33d) | 242.7d → 266.13d |
| A17310 | Descolg. Prolong. Inst. Sanitarias | 2026-11-20 → 2026-10-20 (-31d) | 2026-12-07 → 2026-11-05 (-32d) | 242.7d → 266.13d |
| A17320 | Descolg. Prolong. HVAC y gas | 2026-11-26 → 2026-10-26 (-31d) | 2026-12-14 → 2026-11-11 (-33d) | 242.7d → 266.13d |
| A17330 | Descolg. Prolong. Inst. RCI | 2026-12-03 → 2026-11-03 (-30d) | 2027-01-14 → 2026-11-26 (-49d) | 242.7d → 266.13d |
| A17340 | Mamposteria Interna | 2027-01-14 → 2026-11-26 (-49d) | 2027-02-09 → 2026-12-23 (-48d) | 242.7d → 266.13d |
| A17360 | Pañete Interno y Resanes | 2027-02-05 → 2026-12-21 (-46d) | 2027-03-03 → 2027-02-02 (-29d) | 242.7d → 266.13d |
| A17350 | Sobre Muros | 2027-02-09 → 2026-12-23 (-48d) | 2027-02-12 → 2027-01-14 (-29d) | 278.7d → 302.13d |
| A17370 | Poyos Cocina y Labores | 2027-02-25 → 2027-01-27 (-29d) | 2027-03-05 → 2027-02-04 (-29d) | 242.7d → 266.13d |
| A17380 | Viga Baranda | 2027-03-01 → 2027-01-29 (-31d) | 2027-03-19 → 2027-02-18 (-29d) | 242.7d → 266.13d |
| A19420 | Dinteles Ventana | 2027-02-10 → 2027-02-08 (-2d) | 2027-02-15 → 2027-02-11 (-4d) | 232.93d → 237.58d |
| A17390 | Dintel descolgado | 2027-03-09 → 2027-02-08 (-29d) | 2027-04-05 → 2027-02-26 (-38d) | 242.7d → 266.13d |
| A19410 | Dinteles Puerta Ventana | 2027-02-15 → 2027-02-11 (-4d) | 2027-02-18 → 2027-02-16 (-2d) | 232.93d → 237.58d |
| A19400 | Dintel Balcon | 2027-02-18 → 2027-02-16 (-2d) | 2027-02-23 → 2027-02-19 (-4d) | 232.93d → 237.58d |
| A17400 | Impermeabilizacion Zonas Humedas | 2027-03-17 → 2027-02-16 (-29d) | 2027-04-01 → 2027-02-24 (-36d) | 242.7d → 266.13d |
| A17410 | Afinado de Pisos | 2027-03-19 → 2027-02-18 (-29d) | 2027-04-12 → 2027-03-05 (-38d) | 242.7d → 266.13d |
| P12 | **Piso 12** | 2026-11-13 → 2026-10-14 (-30d) | 2027-04-23 → 2027-03-18 (-36d) |  |
| A17420 | Descolg. Prolong. Inst. Electricas | 2026-11-13 → 2026-10-14 (-30d) | 2026-11-30 → 2026-10-28 (-33d) | 191.7d → 215.13d |
| A17430 | Descolg. Prolong. Inst. hidrosanitarias | 2026-11-24 → 2026-10-22 (-33d) | 2026-12-07 → 2026-11-05 (-32d) | 233.7d → 257.13d |
| A17440 | Descolg. Prolong. Inst. Comunicaciones | 2026-12-02 → 2026-10-30 (-33d) | 2026-12-16 → 2026-11-13 (-33d) | 233.7d → 257.13d |
| A17450 | Descolg. Prolong. Inst. Sanitarias | 2026-12-11 → 2026-11-10 (-31d) | 2027-01-12 → 2026-11-24 (-49d) | 233.7d → 257.13d |
| A17460 | Descolg. Prolong. HVAC y gas | 2026-12-21 → 2026-11-19 (-32d) | 2027-01-20 → 2026-12-02 (-49d) | 233.7d → 257.13d |
| A17470 | Descolg. Prolong. Inst. RCI | 2027-01-15 → 2026-11-27 (-49d) | 2027-02-08 → 2026-12-22 (-48d) | 233.7d → 257.13d |
| A17480 | Mamposteria Interna | 2027-02-08 → 2026-12-22 (-48d) | 2027-03-02 → 2027-02-01 (-29d) | 233.7d → 257.13d |
| A17500 | Pañete Interno y Resanes | 2027-02-26 → 2027-01-28 (-29d) | 2027-03-29 → 2027-02-19 (-38d) | 233.7d → 257.13d |
| A17490 | Sobre Muros | 2027-03-02 → 2027-02-01 (-29d) | 2027-03-05 → 2027-02-04 (-29d) | 263.7d → 287.13d |
| A17510 | Poyos Cocina y Labores | 2027-03-16 → 2027-02-15 (-29d) | 2027-03-31 → 2027-02-23 (-36d) | 233.7d → 257.13d |
| A17520 | Viga Baranda | 2027-03-18 → 2027-02-17 (-29d) | 2027-04-13 → 2027-03-08 (-36d) | 233.7d → 257.13d |
| A19460 | Dinteles Ventana | 2027-02-23 → 2027-02-19 (-4d) | 2027-02-26 → 2027-02-24 (-2d) | 232.93d → 237.58d |
| A19450 | Dinteles Puerta Ventana | 2027-02-26 → 2027-02-24 (-2d) | 2027-03-03 → 2027-03-01 (-2d) | 232.93d → 237.58d |
| A17530 | Dintel descolgado | 2027-04-01 → 2027-02-24 (-36d) | 2027-04-20 → 2027-03-15 (-36d) | 233.7d → 257.13d |
| A19440 | Dintel Balcon | 2027-03-03 → 2027-03-01 (-2d) | 2027-03-08 → 2027-03-04 (-4d) | 232.93d → 237.58d |
| A17540 | Impermeabilizacion Zonas Humedas | 2027-04-08 → 2027-03-03 (-36d) | 2027-04-16 → 2027-03-11 (-36d) | 233.7d → 257.13d |
| A17550 | Afinado de Pisos | 2027-04-12 → 2027-03-05 (-38d) | 2027-04-23 → 2027-03-18 (-36d) | 233.7d → 257.13d |
| P13 | **Piso 13** | 2026-11-30 → 2026-10-28 (-33d) | 2027-05-05 → 2027-04-06 (-29d) |  |
| A17560 | Descolg. Prolong. Inst. Electricas | 2026-11-30 → 2026-10-28 (-33d) | 2026-12-15 → 2026-11-12 (-33d) | 191.7d → 215.13d |
| A17570 | Descolg. Prolong. Inst. hidrosanitarias | 2026-12-09 → 2026-11-06 (-33d) | 2026-12-22 → 2026-11-20 (-32d) | 225.7d → 249.13d |
| A17580 | Descolg. Prolong. Inst. Comunicaciones | 2026-12-17 → 2026-11-17 (-30d) | 2027-01-18 → 2026-11-30 (-49d) | 225.7d → 249.13d |
| A17590 | Descolg. Prolong. Inst. Sanitarias | 2027-01-13 → 2026-11-25 (-49d) | 2027-01-26 → 2026-12-09 (-48d) | 225.7d → 249.13d |
| A17600 | Descolg. Prolong. HVAC y gas | 2027-01-21 → 2026-12-03 (-49d) | 2027-02-03 → 2026-12-17 (-48d) | 225.7d → 249.13d |
| A17610 | Descolg. Prolong. Inst. RCI | 2027-01-29 → 2026-12-14 (-46d) | 2027-02-19 → 2027-01-21 (-29d) | 225.7d → 249.13d |

| ID | Task | Start | Finish | Total float |
| --- | --- | --- | --- | --- |
| A17620 | Mamposteria Interna | 2027-02-19 → 2027-01-21 (-29d) | 2027-03-17 → 2027-02-16 (-29d) | 225.7d → 249.13d |
| A17640 | Pañete Interno y Resanes | 2027-03-15 → 2027-02-12 (-31d) | 2027-04-12 → 2027-03-05 (-38d) | 225.7d → 249.13d |
| A17630 | Sobre Muros | 2027-03-17 → 2027-02-16 (-29d) | 2027-03-29 → 2027-02-19 (-38d) | 252.7d → 276.13d |
| A17650 | Poyos Cocina y Labores | 2027-04-06 → 2027-03-01 (-36d) | 2027-04-14 → 2027-03-09 (-36d) | 225.7d → 249.13d |
| A17660 | Viga Baranda | 2027-04-08 → 2027-03-03 (-36d) | 2027-04-26 → 2027-03-19 (-38d) | 225.7d → 249.13d |
| A19520 | Dinteles Ventana | 2027-03-08 → 2027-03-04 (-4d) | 2027-03-11 → 2027-03-09 (-2d) | 232.93d → 237.58d |
| A19510 | Dinteles Puerta Ventana | 2027-03-11 → 2027-03-09 (-2d) | 2027-03-16 → 2027-03-12 (-4d) | 232.93d → 237.58d |
| A17670 | Dintel descolgado | 2027-04-14 → 2027-03-09 (-36d) | 2027-04-30 → 2027-04-01 (-29d) | 225.7d → 249.13d |
| A19500 | Dintel Balcon | 2027-03-16 → 2027-03-12 (-4d) | 2027-03-19 → 2027-03-17 (-2d) | 232.93d → 237.58d |
| A17680 | Impermeabilizacion Zonas Humedas | 2027-04-20 → 2027-03-15 (-36d) | 2027-04-28 → 2027-03-30 (-29d) | 225.7d → 249.13d |
| A17690 | Afinado de Pisos | 2027-04-22 → 2027-03-17 (-36d) | 2027-05-05 → 2027-04-06 (-29d) | 225.7d → 249.13d |
| P14 | **Piso 14** | 2026-12-15 → 2026-11-12 (-33d) | 2027-05-20 → 2027-04-20 (-30d) |  |
| A17700 | Descolg. Prolong. Inst. Electricas | 2026-12-15 → 2026-11-12 (-33d) | 2027-01-15 → 2026-11-27 (-49d) | 191.7d → 215.13d |
| A17710 | Descolg. Prolong. Inst. hidrosanitarias | 2026-12-23 → 2026-11-23 (-30d) | 2027-01-22 → 2026-12-04 (-49d) | 215.7d → 239.13d |
| A17720 | Descolg. Prolong. Inst. Comunicaciones | 2027-01-19 → 2026-12-01 (-49d) | 2027-02-01 → 2026-12-15 (-48d) | 215.7d → 239.13d |
| A17730 | Descolg. Prolong. Inst. Sanitarias | 2027-01-27 → 2026-12-10 (-48d) | 2027-02-09 → 2026-12-23 (-48d) | 215.7d → 239.13d |
| A17740 | Descolg. Prolong. HVAC y gas | 2027-02-04 → 2026-12-18 (-48d) | 2027-02-17 → 2027-01-19 (-29d) | 215.7d → 239.13d |
| A17750 | Descolg. Prolong. Inst. RCI | 2027-02-12 → 2027-01-14 (-29d) | 2027-03-05 → 2027-02-04 (-29d) | 215.7d → 239.13d |
| A17760 | Mamposteria Interna | 2027-03-05 → 2027-02-04 (-29d) | 2027-04-07 → 2027-03-02 (-36d) | 215.7d → 239.13d |
| A17780 | Pañete Interno y Resanes | 2027-04-05 → 2027-02-26 (-38d) | 2027-04-26 → 2027-03-19 (-38d) | 215.7d → 239.13d |
| A17770 | Sobre Muros | 2027-04-07 → 2027-03-02 (-36d) | 2027-04-12 → 2027-03-05 (-38d) | 242.7d → 266.13d |
| A17790 | Poyos Cocina y Labores | 2027-04-20 → 2027-03-15 (-36d) | 2027-04-28 → 2027-03-30 (-29d) | 215.7d → 239.13d |
| A19490 | Dinteles Ventana | 2027-03-19 → 2027-03-17 (-2d) | 2027-03-31 → 2027-03-29 (-2d) | 232.93d → 237.58d |
| A17800 | Viga Baranda | 2027-04-22 → 2027-03-17 (-36d) | 2027-05-11 → 2027-04-09 (-32d) | 215.7d → 239.13d |
| A19480 | Dinteles Puerta Ventana | 2027-03-31 → 2027-03-29 (-2d) | 2027-04-05 → 2027-04-01 (-4d) | 232.93d → 237.58d |
| A17810 | Dintel descolgado | 2027-04-28 → 2027-03-30 (-29d) | 2027-05-17 → 2027-04-15 (-32d) | 215.7d → 239.13d |
| A19470 | Dintel Balcon | 2027-04-05 → 2027-04-01 (-4d) | 2027-04-08 → 2027-04-06 (-2d) | 232.93d → 237.58d |
| A17820 | Impermeabilizacion Zonas Humedas | 2027-05-04 → 2027-04-05 (-29d) | 2027-05-13 → 2027-04-13 (-30d) | 215.7d → 239.13d |
| A17830 | Afinado de Pisos | 2027-05-06 → 2027-04-07 (-29d) | 2027-05-20 → 2027-04-20 (-30d) | 215.7d → 239.13d |
| P15 | **Piso 15** | 2027-01-29 → 2026-12-14 (-46d) | 2027-05-26 → 2027-04-26 (-30d) |  |
| A17840 | Descolg. Prolong. Inst. Electricas | 2027-01-29 → 2026-12-14 (-46d) | 2027-02-12 → 2027-01-14 (-29d) | 191.7d → 215.13d |
| A17850 | Descolg. Prolong. Inst. hidrosanitarias | 2027-02-08 → 2026-12-22 (-48d) | 2027-02-18 → 2027-01-20 (-29d) | 211.7d → 235.13d |
| A17860 | Descolg. Prolong. Inst. Comunicaciones | 2027-02-16 → 2027-01-18 (-29d) | 2027-02-26 → 2027-01-28 (-29d) | 211.7d → 235.13d |
| A17870 | Descolg. Prolong. Inst. Sanitarias | 2027-02-24 → 2027-01-26 (-29d) | 2027-03-08 → 2027-02-05 (-31d) | 211.7d → 235.13d |
| A17880 | Descolg. Prolong. HVAC y gas | 2027-03-04 → 2027-02-03 (-29d) | 2027-03-16 → 2027-02-15 (-29d) | 211.7d → 235.13d |
| A17890 | Descolg. Prolong. Inst. RCI | 2027-03-12 → 2027-02-11 (-29d) | 2027-04-07 → 2027-03-02 (-36d) | 211.7d → 235.13d |
| A17900 | Mamposteria Interna | 2027-04-07 → 2027-03-02 (-36d) | 2027-04-26 → 2027-03-19 (-38d) | 211.7d → 235.13d |
| A17920 | Pañete Interno y Resanes | 2027-04-22 → 2027-03-17 (-36d) | 2027-05-12 → 2027-04-12 (-30d) | 211.7d → 235.13d |
| A17910 | Sobre Muros | 2027-04-26 → 2027-03-19 (-38d) | 2027-04-28 → 2027-03-30 (-29d) | 230.7d → 254.13d |
| A19550 | Dinteles Ventana | 2027-04-08 → 2027-04-06 (-2d) | 2027-04-12 → 2027-04-08 (-4d) | 232.93d → 237.58d |
| A17930 | Poyos Cocina y Labores | 2027-05-05 → 2027-04-06 (-29d) | 2027-05-13 → 2027-04-13 (-30d) | 211.7d → 235.13d |
| A17940 | Viga Baranda | 2027-05-06 → 2027-04-07 (-29d) | 2027-05-21 → 2027-04-21 (-30d) | 211.7d → 235.13d |
| A19540 | Dinteles Puerta Ventana | 2027-04-12 → 2027-04-08 (-4d) | 2027-04-14 → 2027-04-12 (-2d) | 232.93d → 237.58d |
| A17950 | Dintel descolgado | 2027-05-11 → 2027-04-09 (-32d) | 2027-05-25 → 2027-04-23 (-32d) | 211.7d → 235.13d |
| A19530 | Dintel Balcon | 2027-04-14 → 2027-04-12 (-2d) | 2027-04-16 → 2027-04-14 (-2d) | 232.93d → 237.58d |
| A17960 | Impermeabilizacion Zonas Humedas | 2027-05-13 → 2027-04-13 (-30d) | 2027-05-20 → 2027-04-20 (-30d) | 211.7d → 235.13d |
| A17970 | Afinado de Pisos | 2027-05-14 → 2027-04-14 (-30d) | 2027-05-26 → 2027-04-26 (-30d) | 211.7d → 235.13d |
| P16 | **Piso 16** | 2027-02-26 → 2027-01-28 (-29d) | 2027-06-25 → 2027-05-25 (-31d) |  |
| A17980 | Descolg. Prolong. Inst. Electricas | 2027-02-26 → 2027-01-28 (-29d) | 2027-03-12 → 2027-02-11 (-29d) | 191.7d → 215.13d |
| A17990 | Descolg. Prolong. Inst. hidrosanitarias | 2027-03-08 → 2027-02-05 (-31d) | 2027-03-18 → 2027-02-17 (-29d) | 191.7d → 215.13d |
| A18000 | Descolg. Prolong. Inst. Comunicaciones | 2027-03-16 → 2027-02-15 (-29d) | 2027-04-02 → 2027-02-25 (-36d) | 191.7d → 215.13d |
| A18010 | Descolg. Prolong. Inst. Sanitarias | 2027-03-31 → 2027-02-23 (-36d) | 2027-04-12 → 2027-03-05 (-38d) | 191.7d → 215.13d |
| A18020 | Descolg. Prolong. HVAC y gas | 2027-04-08 → 2027-03-03 (-36d) | 2027-04-20 → 2027-03-15 (-36d) | 191.7d → 215.13d |
| A18030 | Descolg. Prolong. Inst. RCI | 2027-04-16 → 2027-03-11 (-36d) | 2027-05-05 → 2027-04-06 (-29d) | 191.7d → 215.13d |
| A18040 | Mamposteria Interna | 2027-05-05 → 2027-04-06 (-29d) | 2027-05-25 → 2027-04-23 (-32d) | 191.7d → 215.13d |
| A19580 | Dinteles Ventana | 2027-04-16 → 2027-04-14 (-2d) | 2027-04-20 → 2027-04-16 (-4d) | 232.93d → 237.58d |
| A19570 | Dinteles Puerta Ventana | 2027-04-20 → 2027-04-16 (-4d) | 2027-04-22 → 2027-04-20 (-2d) | 232.93d → 237.58d |
| A19560 | Dintel Balcon | 2027-04-22 → 2027-04-20 (-2d) | 2027-04-26 → 2027-04-22 (-4d) | 232.93d → 237.58d |
| A18060 | Pañete Interno y Resanes | 2027-05-21 → 2027-04-21 (-30d) | 2027-06-11 → 2027-05-11 (-31d) | 191.7d → 215.13d |
| A18050 | Sobre Muros | 2027-05-25 → 2027-04-23 (-32d) | 2027-05-27 → 2027-04-27 (-30d) | 210.7d → 234.13d |
| A18070 | Poyos Cocina y Labores | 2027-06-04 → 2027-05-04 (-31d) | 2027-06-14 → 2027-05-12 (-33d) | 191.7d → 215.13d |
| A18080 | Viga Baranda | 2027-06-08 → 2027-05-05 (-34d) | 2027-06-22 → 2027-05-20 (-33d) | 191.7d → 215.13d |
| A18090 | Dintel descolgado | 2027-06-10 → 2027-05-07 (-34d) | 2027-06-24 → 2027-05-24 (-31d) | 191.7d → 215.13d |
| A18100 | Impermeabilizacion Zonas Humedas | 2027-06-14 → 2027-05-12 (-33d) | 2027-06-21 → 2027-05-19 (-33d) | 191.7d → 215.13d |
| A18110 | Afinado de Pisos | 2027-06-15 → 2027-05-13 (-33d) | 2027-06-25 → 2027-05-25 (-31d) | 191.7d → 215.13d |
| Est_Pin01 | **Estuco y Pintura-01** | 2026-08-04 → 2026-08-03 (-1d) | 2027-07-12 → 2027-07-09 (-3d) |  |
| P03 | **Piso 03** | 2026-08-04 → 2026-08-03 (-1d) | 2026-09-03 → 2026-09-02 (-1d) |  |
| A3360 | Estuco | 2026-08-04 → 2026-08-03 (-1d) | 2026-09-01 → 2026-08-31 (-1d) | 31.93d → 35.06d |
| A3370 | Primera mano de pintura | 2026-08-06 → 2026-08-05 (-1d) | 2026-09-03 → 2026-09-02 (-1d) | 31.93d → 35.06d |
| P04 | **Piso 04** | 2026-09-01 → 2026-08-31 (-1d) | 2026-09-29 → 2026-09-28 (-1d) |  |

| ID | Task | Start | Finish | Complete | Total float |
| --- | --- | --- | --- | --- | --- |
| A3390 | Estuco | 2026-09-01 → 2026-08-31 (-1d) | 2026-09-25 → 2026-09-24 (-1d) |  | 181.33d → 185.58d |
| A3400 | Primera mano de pintura | 2026-09-03 → 2026-09-02 (-1d) | 2026-09-29 → 2026-09-28 (-1d) |  | 359.33d → 363.58d |
| P05 | **Piso 05** | 2026-09-25 → 2026-09-24 (-1d) | 2026-10-26 → 2026-10-23 (-3d) |  |  |
| A3420 | Estuco | 2026-09-25 → 2026-09-24 (-1d) | 2026-10-22 → 2026-10-21 (-1d) |  | 181.33d → 185.58d |
| A3430 | Primera mano de pintura | 2026-09-29 → 2026-09-28 (-1d) | 2026-10-26 → 2026-10-23 (-3d) |  | 341.33d → 345.58d |
| P06 | **Piso 06** | 2026-10-22 → 2026-10-21 (-1d) | 2026-11-23 → 2026-11-20 (-3d) |  |  |
| A3450 | Estuco | 2026-10-22 → 2026-10-21 (-1d) | 2026-11-19 → 2026-11-18 (-1d) |  | 181.33d → 185.58d |
| A3460 | Primera mano de pintura | 2026-10-26 → 2026-10-23 (-3d) | 2026-11-23 → 2026-11-20 (-3d) |  | 323.33d → 327.58d |
| P07 | **Piso 07** | 2026-11-19 → 2026-11-18 (-1d) | 2026-12-18 → 2026-12-17 (-1d) |  |  |
| A3480 | Estuco | 2026-11-19 → 2026-11-18 (-1d) | 2026-12-16 → 2026-12-15 (-1d) |  | 181.33d → 185.58d |
| A3490 | Primera mano de pintura | 2026-11-23 → 2026-11-20 (-3d) | 2026-12-18 → 2026-12-17 (-1d) |  | 305.33d → 309.58d |
| P08 | **Piso 08** | 2026-12-16 → 2026-12-15 (-1d) | 2027-02-01 → 2027-01-29 (-3d) |  |  |
| A3510 | Estuco | 2026-12-16 → 2026-12-15 (-1d) | 2027-01-28 → 2027-01-27 (-1d) |  | 181.33d → 185.58d |
| A3520 | Primera mano de pintura | 2026-12-18 → 2026-12-17 (-1d) | 2027-02-01 → 2027-01-29 (-3d) |  | 287.33d → 291.58d |
| P09 | **Piso 09** | 2027-01-28 → 2027-01-27 (-1d) | 2027-02-23 → 2027-02-22 (-1d) |  |  |
| A3540 | Estuco | 2027-01-28 → 2027-01-27 (-1d) | 2027-02-19 → 2027-02-18 (-1d) |  | 181.33d → 185.58d |
| A3550 | Primera mano de pintura | 2027-02-01 → 2027-01-29 (-3d) | 2027-02-23 → 2027-02-22 (-1d) |  | 271.33d → 275.58d |
| P10 | **Piso 10** | 2027-02-19 → 2027-02-18 (-1d) | 2027-03-17 → 2027-03-16 (-1d) |  |  |
| A3570 | Estuco | 2027-02-19 → 2027-02-18 (-1d) | 2027-03-15 → 2027-03-12 (-3d) |  | 181.33d → 185.58d |
| A3580 | Primera mano de pintura | 2027-02-23 → 2027-02-22 (-1d) | 2027-03-17 → 2027-03-16 (-1d) |  | 255.33d → 259.58d |
| P11 | **Piso 11** | 2027-03-15 → 2027-03-12 (-3d) | 2027-04-13 → 2027-04-12 (-1d) |  |  |
| A3600 | Estuco | 2027-03-15 → 2027-03-12 (-3d) | 2027-04-09 → 2027-04-08 (-1d) |  | 181.33d → 185.58d |
| A3610 | Primera mano de pintura | 2027-03-17 → 2027-03-16 (-1d) | 2027-04-13 → 2027-04-12 (-1d) |  | 241.33d → 245.58d |
| P12 | **Piso 12** | 2027-04-09 → 2027-04-08 (-1d) | 2027-05-03 → 2027-04-30 (-3d) |  |  |
| A3630 | Estuco | 2027-04-09 → 2027-04-08 (-1d) | 2027-04-29 → 2027-04-28 (-1d) |  | 181.33d → 185.58d |
| A3640 | Primera mano de pintura | 2027-04-13 → 2027-04-12 (-1d) | 2027-05-03 → 2027-04-30 (-3d) |  | 227.33d → 231.58d |
| P13 | **Piso 13** | 2027-04-29 → 2027-04-28 (-1d) | 2027-05-21 → 2027-05-20 (-1d) |  |  |
| A3660 | Estuco | 2027-04-29 → 2027-04-28 (-1d) | 2027-05-20 → 2027-05-19 (-1d) |  | 181.33d → 185.58d |
| A3670 | Primera mano de pintura | 2027-05-03 → 2027-04-30 (-3d) | 2027-05-21 → 2027-05-20 (-1d) |  | 214.33d → 218.58d |
| P14 | **Piso 14** | 2027-05-13 → 2027-05-12 (-1d) | 2027-06-04 → 2027-06-03 (-1d) |  |  |
| A3690 | Estuco | 2027-05-13 → 2027-05-12 (-1d) | 2027-06-02 → 2027-06-01 (-1d) |  | 181.33d → 185.58d |
| A3700 | Primera mano de pintura | 2027-05-17 → 2027-05-14 (-3d) | 2027-06-04 → 2027-06-03 (-1d) |  | 205.33d → 209.58d |
| P15 | **Piso 15** | 2027-06-02 → 2027-06-01 (-1d) | 2027-06-23 → 2027-06-22 (-1d) |  |  |
| A3720 | Estuco | 2027-06-02 → 2027-06-01 (-1d) | 2027-06-21 → 2027-06-18 (-3d) |  | 181.33d → 185.58d |
| A3730 | Primera mano de pintura | 2027-06-04 → 2027-06-03 (-1d) | 2027-06-23 → 2027-06-22 (-1d) |  | 193.33d → 197.58d |
| P16 | **Piso 16** | 2027-06-21 → 2027-06-18 (-3d) | 2027-07-12 → 2027-07-09 (-3d) |  |  |
| A15130 | Estuco | 2027-06-21 → 2027-06-18 (-3d) | 2027-07-08 → 2027-07-07 (-1d) |  | 181.33d → 185.58d |
| A15140 | Primera mano de pintura | 2027-06-23 → 2027-06-22 (-1d) | 2027-07-12 → 2027-07-09 (-3d) |  | 181.33d → 185.58d |
| Cie_Ras | **Cielo Raso** | 2026-07-14 → 2026-09-08 (+56d) | 2027-06-23 → 2027-06-22 (-1d) |  |  |
| Est_Cielo Raso | **Estructura Cielo Raso** | 2026-07-14 → 2026-09-08 (+56d) | 2027-03-04 → 2027-03-02 (-2d) |  |  |
| P03 | **Piso 03** | 2026-07-14 → 2026-09-08 (+56d) | 2026-10-19 → 2026-10-14 (-5d) |  |  |
| A4190 | Estructura Baños | 2026-07-14 A → 2026-09-08 A (+56d) | 2026-09-14 → 2026-09-10 (-4d) | 20% → 16% | 31.93d → 35.06d |
| A18120 | Estructura Cocina y labores | 2026-07-14 A → 2026-09-18 A (+66d) | 2026-09-17 → 2026-09-16 (-1d) | 20% → 16% | 31.93d → 35.06d |
| A18130 | Estructura Hall de acceso | 2026-07-15 A → 2026-09-24 A (+71d) | 2026-09-22 → 2026-09-21 (-1d) | 20% → 16% | 31.93d → 35.06d |
| A18140 | Estructura Alcobas | 2026-07-15 A → 2026-09-30 A (+77d) |  | 20% → 16% | 31.93d → 35.06d |
| A18150 | Estructura Salon Comedor | 2026-07-15 A → 2026-10-13 A (+90d) | 2026-10-06 → 2026-10-05 (-1d) | 20% → 16% | 31.93d → 35.06d |
| A18160 | Estructura Balcon | 2026-10-06 → 2026-10-19 A (+13d) | 2026-10-13 → 2026-10-09 (-4d) | 0% → 16% | 346.93d → 351.98d |
| A18170 | Estructura Sobre Muros concreto | 2026-10-06 → 2026-10-19 A (+13d) | 2026-10-19 → 2026-10-14 (-5d) | 0% → 16% | 346.93d → 351.98d |
| P04 | **Piso 04** | 2026-09-14 → 2026-09-10 (-4d) | 2026-11-05 → 2026-11-03 (-2d) |  |  |
| A18180 | Estructura Baños | 2026-09-14 → 2026-09-10 (-4d) | 2026-09-24 → 2026-09-22 (-2d) |  | 264.93d → 268.86d |
| A18190 | Estructura Cocina y labores | 2026-09-24 → 2026-09-22 (-2d) | 2026-09-30 → 2026-09-28 (-2d) |  | 334.93d → 338.86d |
| A18200 | Estructura Hall de acceso | 2026-09-30 → 2026-09-28 (-2d) | 2026-10-06 → 2026-10-02 (-4d) |  | 334.93d → 338.86d |
| A18210 | Estructura Alcobas | 2026-10-06 → 2026-10-02 (-4d) | 2026-10-19 → 2026-10-15 (-4d) |  | 334.93d → 338.86d |
| A18220 | Estructura Salon Comedor | 2026-10-19 → 2026-10-15 (-4d) | 2026-10-23 → 2026-10-21 (-2d) |  | 334.93d → 338.86d |
| A18230 | Estructura Balcon | 2026-10-23 → 2026-10-21 (-2d) | 2026-10-29 → 2026-10-27 (-2d) |  | 334.93d → 338.86d |
| A18240 | Estructura Sobre Muros concreto | 2026-10-23 → 2026-10-21 (-2d) | 2026-11-05 → 2026-11-03 (-2d) |  | 334.93d → 338.86d |
| P05 | **Piso 05** | 2026-09-24 → 2026-09-22 (-2d) | 2026-11-18 → 2026-11-13 (-5d) |  |  |
| A18250 | Estructura Baños | 2026-09-24 → 2026-09-22 (-2d) | 2026-10-06 → 2026-10-02 (-4d) |  | 264.93d → 268.86d |
| A18260 | Estructura Cocina y labores | 2026-10-06 → 2026-10-02 (-4d) | 2026-10-13 → 2026-10-08 (-5d) |  | 326.93d → 330.86d |
| A18270 | Estructura Hall de acceso | 2026-10-13 → 2026-10-08 (-5d) | 2026-10-19 → 2026-10-15 (-4d) |  | 326.93d → 330.86d |
| A18280 | Estructura Alcobas | 2026-10-19 → 2026-10-15 (-4d) | 2026-10-29 → 2026-10-27 (-2d) |  | 326.93d → 330.86d |
| A18290 | Estructura Salon Comedor | 2026-10-29 → 2026-10-27 (-2d) | 2026-11-05 → 2026-11-03 (-2d) |  | 326.93d → 330.86d |
| A18300 | Estructura Balcon | 2026-11-05 → 2026-11-03 (-2d) | 2026-11-11 → 2026-11-09 (-2d) |  | 326.93d → 330.86d |
| A18310 | Estructura Sobre Muros concreto | 2026-11-05 → 2026-11-03 (-2d) | 2026-11-18 → 2026-11-13 (-5d) |  | 326.93d → 330.86d |
| P06 | **Piso 06** | 2026-10-06 → 2026-10-02 (-4d) | 2026-11-30 → 2026-11-26 (-4d) |  |  |
| A18320 | Estructura Baños | 2026-10-06 → 2026-10-02 (-4d) | 2026-10-19 → 2026-10-15 (-4d) |  | 264.93d → 268.86d |
| A18330 | Estructura Cocina y labores | 2026-10-19 → 2026-10-15 (-4d) | 2026-10-23 → 2026-10-21 (-2d) |  | 318.93d → 322.86d |
| A18340 | Estructura Hall de acceso | 2026-10-23 → 2026-10-21 (-2d) | 2026-10-29 → 2026-10-27 (-2d) |  | 318.93d → 322.86d |
| A18350 | Estructura Alcobas | 2026-10-29 → 2026-10-27 (-2d) | 2026-11-11 → 2026-11-09 (-2d) |  | 318.93d → 322.86d |
| A18360 | Estructura Salon Comedor | 2026-11-11 → 2026-11-09 (-2d) | 2026-11-18 → 2026-11-13 (-5d) |  | 318.93d → 322.86d |

| ID | Task | Start | Finish | Total float |
| --- | --- | --- | --- | --- |
| A18370 | Estructura Balcon | 2026-11-18 → 2026-11-13 (-5d) | 2026-11-24 → 2026-11-20 (-4d) | 318.93d → 322.86d |
| A18380 | Estructura Sobre Muros concreto | 2026-11-18 → 2026-11-13 (-5d) | 2026-11-30 → 2026-11-26 (-4d) | 318.93d → 322.86d |
| P07 | **Piso 07** | 2026-10-19 → 2026-10-15 (-4d) | 2026-12-11 → 2026-12-09 (-2d) |  |
| A18390 | Estructura Baños | 2026-10-19 → 2026-10-15 (-4d) | 2026-10-29 → 2026-10-27 (-2d) | 264.93d → 268.86d |
| A18400 | Estructura Cocina y labores | 2026-10-29 → 2026-10-27 (-2d) | 2026-11-05 → 2026-11-03 (-2d) | 310.93d → 314.86d |
| A18410 | Estructura Hall de acceso | 2026-11-05 → 2026-11-03 (-2d) | 2026-11-11 → 2026-11-09 (-2d) | 310.93d → 314.86d |
| A18420 | Estructura Alcobas | 2026-11-11 → 2026-11-09 (-2d) | 2026-11-24 → 2026-11-20 (-4d) | 310.93d → 314.86d |
| A18430 | Estructura Salon Comedor | 2026-11-24 → 2026-11-20 (-4d) | 2026-11-30 → 2026-11-26 (-4d) | 310.93d → 314.86d |
| A18440 | Estructura Balcon | 2026-11-30 → 2026-11-26 (-4d) | 2026-12-04 → 2026-12-02 (-2d) | 310.93d → 314.86d |
| A18450 | Estructura Sobre Muros concreto | 2026-11-30 → 2026-11-26 (-4d) | 2026-12-11 → 2026-12-09 (-2d) | 310.93d → 314.86d |
| P08 | **Piso 08** | 2026-10-29 → 2026-10-27 (-2d) | 2026-12-23 → 2026-12-21 (-2d) |  |
| A18460 | Estructura Baños | 2026-10-29 → 2026-10-27 (-2d) | 2026-11-11 → 2026-11-09 (-2d) | 264.93d → 268.86d |
| A18470 | Estructura Cocina y labores | 2026-11-11 → 2026-11-09 (-2d) | 2026-11-18 → 2026-11-13 (-5d) | 302.93d → 306.86d |
| A18480 | Estructura Hall de acceso | 2026-11-18 → 2026-11-13 (-5d) | 2026-11-24 → 2026-11-20 (-4d) | 302.93d → 306.86d |
| A18490 | Estructura Alcobas | 2026-11-24 → 2026-11-20 (-4d) | 2026-12-04 → 2026-12-02 (-2d) | 302.93d → 306.86d |
| A18500 | Estructura Salon Comedor | 2026-12-04 → 2026-12-02 (-2d) | 2026-12-11 → 2026-12-09 (-2d) | 302.93d → 306.86d |
| A18510 | Estructura Balcon | 2026-12-11 → 2026-12-09 (-2d) | 2026-12-17 → 2026-12-15 (-2d) | 302.93d → 306.86d |
| A18520 | Estructura Sobre Muros concreto | 2026-12-11 → 2026-12-09 (-2d) | 2026-12-23 → 2026-12-21 (-2d) | 302.93d → 306.86d |
| P09 | **Piso 09** | 2026-11-11 → 2026-11-09 (-2d) | 2027-01-12 → 2026-12-22 (-21d) |  |
| A18530 | Estructura Baños | 2026-11-11 → 2026-11-09 (-2d) | 2026-11-23 → 2026-11-19 (-4d) | 264.93d → 268.86d |
| A18540 | Estructura Cocina y labores | 2026-11-23 → 2026-11-19 (-4d) | 2026-11-26 → 2026-11-24 (-2d) | 301.93d → 305.86d |
| A18550 | Estructura Hall de acceso | 2026-11-26 → 2026-11-24 (-2d) | 2026-12-01 → 2026-11-27 (-4d) | 301.93d → 305.86d |
| A18560 | Estructura Alcobas | 2026-12-01 → 2026-11-27 (-4d) | 2026-12-11 → 2026-12-09 (-2d) | 301.93d → 305.86d |
| A18570 | Estructura Salon Comedor | 2026-12-11 → 2026-12-09 (-2d) | 2026-12-16 → 2026-12-14 (-2d) | 301.93d → 305.86d |
| A18590 | Estructura Sobre Muros concreto | 2026-12-15 → 2026-12-11 (-4d) | 2027-01-12 → 2026-12-22 (-21d) | 301.93d → 305.86d |
| A18580 | Estructura Balcon | 2026-12-16 → 2026-12-14 (-2d) | 2026-12-21 → 2026-12-17 (-4d) | 301.93d → 305.86d |
| P10 | **Piso 10** | 2026-11-23 → 2026-11-19 (-4d) | 2027-01-21 → 2027-01-19 (-2d) |  |
| A18600 | Estructura Baños | 2026-11-23 → 2026-11-19 (-4d) | 2026-12-02 → 2026-11-30 (-2d) | 264.93d → 268.86d |
| A18610 | Estructura Cocina y labores | 2026-12-02 → 2026-11-30 (-2d) | 2026-12-07 → 2026-12-03 (-4d) | 294.93d → 298.86d |
| A18620 | Estructura Hall de acceso | 2026-12-07 → 2026-12-03 (-4d) | 2026-12-11 → 2026-12-09 (-2d) | 294.93d → 298.86d |
| A18630 | Estructura Alcobas | 2026-12-11 → 2026-12-09 (-2d) | 2026-12-22 → 2026-12-18 (-4d) | 294.93d → 298.86d |
| A18640 | Estructura Salon Comedor | 2026-12-22 → 2026-12-18 (-4d) | 2027-01-13 → 2026-12-23 (-21d) | 294.93d → 298.86d |
| A18660 | Estructura Sobre Muros concreto | 2027-01-12 → 2026-12-22 (-21d) | 2027-01-21 → 2027-01-19 (-2d) | 294.93d → 298.86d |
| A18650 | Estructura Balcon | 2027-01-13 → 2026-12-23 (-21d) | 2027-01-18 → 2027-01-14 (-4d) | 294.93d → 298.86d |
| P11 | **Piso 11** | 2026-12-02 → 2026-11-30 (-2d) | 2027-01-28 → 2027-01-26 (-2d) |  |
| A18670 | Estructura Baños | 2026-12-02 → 2026-11-30 (-2d) | 2026-12-11 → 2026-12-09 (-2d) | 264.93d → 268.86d |
| A18680 | Estructura Cocina y labores | 2026-12-11 → 2026-12-09 (-2d) | 2026-12-16 → 2026-12-14 (-2d) | 289.93d → 293.86d |
| A18690 | Estructura Hall de acceso | 2026-12-16 → 2026-12-14 (-2d) | 2026-12-21 → 2026-12-17 (-4d) | 289.93d → 293.86d |
| A18700 | Estructura Alcobas | 2026-12-21 → 2026-12-17 (-4d) | 2027-01-15 → 2027-01-13 (-2d) | 289.93d → 293.86d |
| A18710 | Estructura Salon Comedor | 2027-01-15 → 2027-01-13 (-2d) | 2027-01-20 → 2027-01-18 (-2d) | 289.93d → 293.86d |
| A18720 | Estructura Balcon | 2027-01-20 → 2027-01-18 (-2d) | 2027-01-25 → 2027-01-21 (-4d) | 289.93d → 293.86d |
| A18730 | Estructura Sobre Muros concreto | 2027-01-20 → 2027-01-18 (-2d) | 2027-01-28 → 2027-01-26 (-2d) | 289.93d → 293.86d |
| P12 | **Piso 12** | 2026-12-11 → 2026-12-09 (-2d) | 2027-02-05 → 2027-02-03 (-2d) |  |
| A18740 | Estructura Baños | 2026-12-11 → 2026-12-09 (-2d) | 2026-12-21 → 2026-12-17 (-4d) | 264.93d → 268.86d |
| A18750 | Estructura Cocina y labores | 2026-12-21 → 2026-12-17 (-4d) | 2027-01-12 → 2026-12-22 (-21d) | 283.93d → 287.86d |
| A18760 | Estructura Hall de acceso | 2027-01-12 → 2026-12-22 (-21d) | 2027-01-15 → 2027-01-13 (-2d) | 283.93d → 287.86d |
| A18770 | Estructura Alcobas | 2027-01-15 → 2027-01-13 (-2d) | 2027-01-25 → 2027-01-21 (-4d) | 283.93d → 287.86d |
| A18780 | Estructura Salon Comedor | 2027-01-25 → 2027-01-21 (-4d) | 2027-01-28 → 2027-01-26 (-2d) | 283.93d → 287.86d |
| A18790 | Estructura Balcon | 2027-01-28 → 2027-01-26 (-2d) | 2027-02-02 → 2027-01-29 (-4d) | 283.93d → 287.86d |
| A18800 | Estructura Sobre Muros concreto | 2027-01-28 → 2027-01-26 (-2d) | 2027-02-05 → 2027-02-03 (-2d) | 283.93d → 287.86d |
| P13 | **Piso 13** | 2026-12-21 → 2026-12-17 (-4d) | 2027-02-15 → 2027-02-11 (-4d) |  |
| A18810 | Estructura Baños | 2026-12-21 → 2026-12-17 (-4d) | 2027-01-15 → 2027-01-13 (-2d) | 264.93d → 268.86d |
| A18820 | Estructura Cocina y labores | 2027-01-15 → 2027-01-13 (-2d) | 2027-01-20 → 2027-01-18 (-2d) | 277.93d → 281.86d |
| A18830 | Estructura Hall de acceso | 2027-01-20 → 2027-01-18 (-2d) | 2027-01-25 → 2027-01-21 (-4d) | 277.93d → 281.86d |
| A18840 | Estructura Alcobas | 2027-01-25 → 2027-01-21 (-4d) | 2027-02-02 → 2027-01-29 (-4d) | 277.93d → 281.86d |
| A18850 | Estructura Salon Comedor | 2027-02-02 → 2027-01-29 (-4d) | 2027-02-05 → 2027-02-03 (-2d) | 277.93d → 281.86d |
| A18860 | Estructura Balcon | 2027-02-05 → 2027-02-03 (-2d) | 2027-02-10 → 2027-02-08 (-2d) | 277.93d → 281.86d |
| A18870 | Estructura Sobre Muros concreto | 2027-02-05 → 2027-02-03 (-2d) | 2027-02-15 → 2027-02-11 (-4d) | 277.93d → 281.86d |
| P14 | **Piso 14** | 2027-01-15 → 2027-01-13 (-2d) | 2027-02-23 → 2027-02-19 (-4d) |  |
| A18880 | Estructura Baños | 2027-01-15 → 2027-01-13 (-2d) | 2027-01-25 → 2027-01-21 (-4d) | 264.93d → 268.86d |
| A18890 | Estructura Cocina y labores | 2027-01-25 → 2027-01-21 (-4d) | 2027-01-28 → 2027-01-26 (-2d) | 271.93d → 275.86d |
| A18900 | Estructura Hall de acceso | 2027-01-28 → 2027-01-26 (-2d) | 2027-02-02 → 2027-01-29 (-4d) | 271.93d → 275.86d |
| A18910 | Estructura Alcobas | 2027-02-02 → 2027-01-29 (-4d) | 2027-02-10 → 2027-02-08 (-2d) | 271.93d → 275.86d |
| A18920 | Estructura Salon Comedor | 2027-02-10 → 2027-02-08 (-2d) | 2027-02-15 → 2027-02-11 (-4d) | 271.93d → 275.86d |
| A18930 | Estructura Balcon | 2027-02-15 → 2027-02-11 (-4d) | 2027-02-18 → 2027-02-16 (-2d) | 271.93d → 275.86d |
| A18940 | Estructura Sobre Muros concreto | 2027-02-15 → 2027-02-11 (-4d) | 2027-02-23 → 2027-02-19 (-4d) | 271.93d → 275.86d |
| P15 | **Piso 15** | 2027-01-25 → 2027-01-21 (-4d) | 2027-02-25 → 2027-02-23 (-2d) |  |
| A18950 | Estructura Baños | 2027-01-25 → 2027-01-21 (-4d) | 2027-02-01 → 2027-01-28 (-4d) | 264.93d → 268.86d |
| A18960 | Estructura Cocina y labores | 2027-02-01 → 2027-01-28 (-4d) | 2027-02-03 → 2027-02-01 (-2d) | 269.93d → 273.86d |
| A18970 | Estructura Hall de acceso | 2027-02-03 → 2027-02-01 (-2d) | 2027-02-05 → 2027-02-03 (-2d) | 269.93d → 273.86d |

| ID | Task | Start | Finish | Total float |
| --- | --- | --- | --- | --- |
| A18980 | Estructura Alcobas | 2027-02-05 → 2027-02-03 (-2d) | 2027-02-12 → 2027-02-10 (-2d) | 269.93d → 273.86d |
| A18990 | Estructura Salon Comedor | 2027-02-12 → 2027-02-10 (-2d) | 2027-02-16 → 2027-02-12 (-4d) | 269.93d → 273.86d |
| A19000 | Estructura Balcon | 2027-02-16 → 2027-02-12 (-4d) | 2027-02-18 → 2027-02-16 (-2d) | 269.93d → 273.86d |
| A19010 | Estructura Sobre Muros concreto | 2027-02-18 → 2027-02-16 (-2d) | 2027-02-25 → 2027-02-23 (-2d) | 269.93d → 273.86d |
| P16 | **Piso 16** | 2027-02-01 → 2027-01-28 (-4d) | 2027-03-04 → 2027-03-02 (-2d) |  |
| A19020 | Estructura Baños | 2027-02-01 → 2027-01-28 (-4d) | 2027-02-08 → 2027-02-04 (-4d) | 264.93d → 268.86d |
| A19030 | Estructura Cocina y labores | 2027-02-08 → 2027-02-04 (-4d) | 2027-02-10 → 2027-02-08 (-2d) | 264.93d → 268.86d |
| A19040 | Estructura Hall de acceso | 2027-02-10 → 2027-02-08 (-2d) | 2027-02-12 → 2027-02-10 (-2d) | 264.93d → 268.86d |
| A19050 | Estructura Alcobas | 2027-02-12 → 2027-02-10 (-2d) | 2027-02-19 → 2027-02-17 (-2d) | 264.93d → 268.86d |
| A19060 | Estructura Salon Comedor | 2027-02-19 → 2027-02-17 (-2d) | 2027-02-23 → 2027-02-19 (-4d) | 264.93d → 268.86d |
| A19070 | Estructura Balcon | 2027-02-23 → 2027-02-19 (-4d) | 2027-02-25 → 2027-02-23 (-2d) | 264.93d → 268.86d |
| A19080 | Estructura Sobre Muros concreto | 2027-02-25 → 2027-02-23 (-2d) | 2027-03-04 → 2027-03-02 (-2d) | 264.93d → 268.86d |
| Inst Soportes | **Inst Soportes** | 2027-01-28 → 2027-01-26 (-2d) | 2027-05-07 → 2027-05-05 (-2d) |  |
| P03 | **Piso 03** | 2027-01-28 → 2027-01-26 (-2d) | 2027-02-05 → 2027-02-03 (-2d) |  |
| A3810 | Ventiladores | 2027-01-28 → 2027-01-26 (-2d) | 2027-02-05 → 2027-02-03 (-2d) | 223.93d → 228.58d |
| A3820 | Campana | 2027-01-28 → 2027-01-26 (-2d) | 2027-02-05 → 2027-02-03 (-2d) | 223.93d → 228.58d |
| P04 | **Piso 04** | 2027-02-05 → 2027-02-03 (-2d) | 2027-02-15 → 2027-02-11 (-4d) |  |
| A3830 | Ventiladores | 2027-02-05 → 2027-02-03 (-2d) | 2027-02-15 → 2027-02-11 (-4d) | 223.93d → 228.58d |
| A3840 | Campana | 2027-02-05 → 2027-02-03 (-2d) | 2027-02-15 → 2027-02-11 (-4d) | 223.93d → 228.58d |
| P05 | **Piso 05** | 2027-02-15 → 2027-02-11 (-4d) | 2027-02-23 → 2027-02-19 (-4d) |  |
| A3850 | Campana | 2027-02-15 → 2027-02-11 (-4d) | 2027-02-23 → 2027-02-19 (-4d) | 223.93d → 228.58d |
| A3860 | Ventiladores | 2027-02-15 → 2027-02-11 (-4d) | 2027-02-23 → 2027-02-19 (-4d) | 223.93d → 228.58d |
| P06 | **Piso 06** | 2027-02-23 → 2027-02-19 (-4d) | 2027-03-03 → 2027-03-01 (-2d) |  |
| A3870 | Ventiladores | 2027-02-23 → 2027-02-19 (-4d) | 2027-03-03 → 2027-03-01 (-2d) | 223.93d → 228.58d |
| A3880 | Campana | 2027-02-23 → 2027-02-19 (-4d) | 2027-03-03 → 2027-03-01 (-2d) | 223.93d → 228.58d |
| P07 | **Piso 07** | 2027-03-03 → 2027-03-01 (-2d) | 2027-03-11 → 2027-03-09 (-2d) |  |
| A3890 | Ventiladores | 2027-03-03 → 2027-03-01 (-2d) | 2027-03-11 → 2027-03-09 (-2d) | 223.93d → 228.58d |
| A3900 | Campana | 2027-03-03 → 2027-03-01 (-2d) | 2027-03-11 → 2027-03-09 (-2d) | 223.93d → 228.58d |
| P08 | **Piso 08** | 2027-03-11 → 2027-03-09 (-2d) | 2027-03-19 → 2027-03-17 (-2d) |  |
| A3910 | Ventiladores | 2027-03-11 → 2027-03-09 (-2d) | 2027-03-19 → 2027-03-17 (-2d) | 223.93d → 228.58d |
| A3920 | Campana | 2027-03-11 → 2027-03-09 (-2d) | 2027-03-19 → 2027-03-17 (-2d) | 223.93d → 228.58d |
| P09 | **Piso 09** | 2027-03-19 → 2027-03-17 (-2d) | 2027-04-01 → 2027-03-30 (-2d) |  |
| A3930 | Ventiladores | 2027-03-19 → 2027-03-17 (-2d) | 2027-04-01 → 2027-03-30 (-2d) | 223.93d → 228.58d |
| A3940 | Campana | 2027-03-19 → 2027-03-17 (-2d) | 2027-04-01 → 2027-03-30 (-2d) | 223.93d → 228.58d |
| P10 | **Piso 10** | 2027-04-01 → 2027-03-30 (-2d) | 2027-04-07 → 2027-04-05 (-2d) |  |
| A3950 | Ventiladores | 2027-04-01 → 2027-03-30 (-2d) | 2027-04-07 → 2027-04-05 (-2d) | 223.93d → 228.58d |
| A3960 | Campana | 2027-04-01 → 2027-03-30 (-2d) | 2027-04-07 → 2027-04-05 (-2d) | 223.93d → 228.58d |
| P11 | **Piso 11** | 2027-04-07 → 2027-04-05 (-2d) | 2027-04-13 → 2027-04-09 (-4d) |  |
| A3970 | Campana | 2027-04-07 → 2027-04-05 (-2d) | 2027-04-13 → 2027-04-09 (-4d) | 223.93d → 228.58d |
| A3980 | Ventiladores | 2027-04-07 → 2027-04-05 (-2d) | 2027-04-13 → 2027-04-09 (-4d) | 223.93d → 228.58d |
| P12 | **Piso 12** | 2027-04-13 → 2027-04-09 (-4d) | 2027-04-19 → 2027-04-15 (-4d) |  |
| A3990 | Ventiladores | 2027-04-13 → 2027-04-09 (-4d) | 2027-04-19 → 2027-04-15 (-4d) | 223.93d → 228.58d |
| A4000 | Campana | 2027-04-13 → 2027-04-09 (-4d) | 2027-04-19 → 2027-04-15 (-4d) | 223.93d → 228.58d |
| P13 | **Piso 13** | 2027-04-19 → 2027-04-15 (-4d) | 2027-04-23 → 2027-04-21 (-2d) |  |
| A4010 | Ventiladores | 2027-04-19 → 2027-04-15 (-4d) | 2027-04-23 → 2027-04-21 (-2d) | 223.93d → 228.58d |
| A4020 | Campana | 2027-04-19 → 2027-04-15 (-4d) | 2027-04-23 → 2027-04-21 (-2d) | 223.93d → 228.58d |
| P14 | **Piso 14** | 2027-04-23 → 2027-04-21 (-2d) | 2027-04-29 → 2027-04-27 (-2d) |  |
| A4030 | Ventiladores | 2027-04-23 → 2027-04-21 (-2d) | 2027-04-29 → 2027-04-27 (-2d) | 223.93d → 228.58d |
| A4040 | Campana | 2027-04-23 → 2027-04-21 (-2d) | 2027-04-29 → 2027-04-27 (-2d) | 223.93d → 228.58d |
| P15 | **Piso 15** | 2027-04-29 → 2027-04-27 (-2d) | 2027-05-04 → 2027-04-30 (-4d) |  |
| A4050 | Ventiladores | 2027-04-29 → 2027-04-27 (-2d) | 2027-05-04 → 2027-04-30 (-4d) | 223.93d → 228.58d |
| A4060 | Campana | 2027-04-29 → 2027-04-27 (-2d) | 2027-05-04 → 2027-04-30 (-4d) | 223.93d → 228.58d |
| P16 | **Piso 16** | 2027-05-04 → 2027-04-30 (-4d) | 2027-05-07 → 2027-05-05 (-2d) |  |
| A15150 | Campana | 2027-05-04 → 2027-04-30 (-4d) | 2027-05-07 → 2027-05-05 (-2d) | 223.93d → 228.58d |
| A15160 | Ventiladores | 2027-05-04 → 2027-04-30 (-4d) | 2027-05-07 → 2027-05-05 (-2d) | 223.93d → 228.58d |
| Laminado Pintura Cielo Raso | **Laminado Pintura Cielo Raso** | 2026-10-06 → 2026-10-05 (-1d) | 2027-06-23 → 2027-06-22 (-1d) |  |
| P03 | **Piso 03** | 2026-10-06 → 2026-10-05 (-1d) | 2026-12-09 → 2026-12-07 (-2d) |  |
| A4800 | Instalacion Lamina y Pintura | 2026-10-06 → 2026-10-05 (-1d) | 2026-12-09 → 2026-12-07 (-2d) | 31.93d → 35.06d |
| P04 | **Piso 04** | 2026-10-21 → 2026-10-20 (-1d) | 2026-12-23 → 2026-12-22 (-1d) |  |
| A4830 | Instalacion Lamina y Pintura | 2026-10-21 → 2026-10-20 (-1d) | 2026-12-23 → 2026-12-22 (-1d) | 193.93d → 197.06d |
| P05 | **Piso 05** | 2026-11-05 → 2026-11-04 (-1d) | 2027-01-25 → 2027-01-22 (-3d) |  |
| A4860 | Instalacion Lamina y Pintura | 2026-11-05 → 2026-11-04 (-1d) | 2027-01-25 → 2027-01-22 (-3d) | 193.93d → 197.06d |
| P06 | **Piso 06** | 2026-11-20 → 2026-11-19 (-1d) | 2027-02-08 → 2027-02-05 (-3d) |  |
| A4890 | Instalacion Lamina y Pintura | 2026-11-20 → 2026-11-19 (-1d) | 2027-02-08 → 2027-02-05 (-3d) | 193.93d → 197.06d |
| P07 | **Piso 07** | 2026-12-04 → 2026-12-03 (-1d) | 2027-02-22 → 2027-02-19 (-3d) |  |
| A4920 | Instalacion Lamina y Pintura | 2026-12-04 → 2026-12-03 (-1d) | 2027-02-22 → 2027-02-19 (-3d) | 193.93d → 197.06d |
| P08 | **Piso 08** | 2026-12-21 → 2026-12-18 (-3d) | 2027-03-08 → 2027-03-05 (-3d) |  |
| A4950 | Instalacion Lamina y Pintura | 2026-12-21 → 2026-12-18 (-3d) | 2027-03-08 → 2027-03-05 (-3d) | 193.93d → 197.06d |
| P09 | **Piso 09** | 2027-02-04 → 2027-02-03 (-1d) | 2027-03-29 → 2027-03-19 (-10d) |  |
| A4980 | Instalacion Lamina y Pintura | 2027-02-04 → 2027-02-03 (-1d) | 2027-03-29 → 2027-03-19 (-10d) | 193.93d → 197.06d |

| ID | Task | Start | Finish | Total float |
| --- | --- | --- | --- | --- |
| P10 | **Piso 10** | 2027-02-18 → 2027-02-17 (-1d) | 2027-04-12 → 2027-04-09 (-3d) |  |
| A5010 | Instalacion Lamina y Pintura | 2027-02-18 → 2027-02-17 (-1d) | 2027-04-12 → 2027-04-09 (-3d) | 193.93d → 197.06d |
| P11 | **Piso 11** | 2027-03-04 → 2027-03-03 (-1d) | 2027-04-26 → 2027-04-23 (-3d) |  |
| A5040 | Instalacion Lamina y Pintura | 2027-03-04 → 2027-03-03 (-1d) | 2027-04-26 → 2027-04-23 (-3d) | 193.93d → 197.06d |
| P12 | **Piso 12** | 2027-03-18 → 2027-03-17 (-1d) | 2027-05-11 → 2027-05-07 (-4d) |  |
| A5070 | Instalacion Lamina y Pintura | 2027-03-18 → 2027-03-17 (-1d) | 2027-05-11 → 2027-05-07 (-4d) | 193.93d → 197.06d |
| P13 | **Piso 13** | 2027-04-08 → 2027-04-07 (-1d) | 2027-05-25 → 2027-05-24 (-1d) |  |
| A5100 | Instalacion Lamina y Pintura | 2027-04-08 → 2027-04-07 (-1d) | 2027-05-25 → 2027-05-24 (-1d) | 193.93d → 197.06d |
| P14 | **Piso 14** | 2027-04-22 → 2027-04-21 (-1d) | 2027-06-10 → 2027-06-09 (-1d) |  |
| A5130 | Instalacion Lamina y Pintura | 2027-04-22 → 2027-04-21 (-1d) | 2027-06-10 → 2027-06-09 (-1d) | 193.93d → 197.06d |
| P15 | **Piso 15** | 2027-05-06 → 2027-05-05 (-1d) | 2027-06-09 → 2027-06-08 (-1d) |  |
| A5160 | Instalacion Lamina y Pintura | 2027-05-06 → 2027-05-05 (-1d) | 2027-06-09 → 2027-06-08 (-1d) | 193.93d → 197.06d |
| P16 | **Piso 16** | 2027-05-21 → 2027-05-20 (-1d) | 2027-06-23 → 2027-06-22 (-1d) |  |
| A15210 | Instalacion Lamina y Pintura | 2027-05-21 → 2027-05-20 (-1d) | 2027-06-23 → 2027-06-22 (-1d) | 193.93d → 197.06d |
| Estuco y Pintura-02 | **Estuco y Pintura-02** | 2026-11-09 → 2026-11-06 (-3d) | 2027-08-17 → 2027-08-13 (-4d) |  |
| P03 | **Piso 03** | 2026-11-09 → 2026-11-06 (-3d) | 2026-11-30 → 2026-11-27 (-3d) |  |
| A19630 | Segunda Mano de pintura | 2026-11-09 → 2026-11-06 (-3d) | 2026-11-30 → 2026-11-27 (-3d) | 31.93d → 35.06d |
| P04 | **Piso 04** | 2026-11-30 → 2026-11-27 (-3d) | 2026-12-21 → 2026-12-18 (-3d) |  |
| A19640 | Segunda Mano de pintura | 2026-11-30 → 2026-11-27 (-3d) | 2026-12-21 → 2026-12-18 (-3d) | 31.93d → 35.06d |
| P05 | **Piso 05** | 2026-12-21 → 2026-12-18 (-3d) | 2027-01-27 → 2027-01-26 (-1d) |  |
| A19650 | Segunda Mano de pintura | 2026-12-21 → 2026-12-18 (-3d) | 2027-01-27 → 2027-01-26 (-1d) | 31.93d → 35.06d |
| P06 | **Piso 06** | 2027-01-27 → 2027-01-26 (-1d) | 2027-02-16 → 2027-02-15 (-1d) |  |
| A19670 | Segunda Mano de pintura | 2027-01-27 → 2027-01-26 (-1d) | 2027-02-16 → 2027-02-15 (-1d) | 157.93d → 161.06d |
| P07 | **Piso 07** | 2027-02-16 → 2027-02-15 (-1d) | 2027-03-08 → 2027-03-05 (-3d) |  |
| A19680 | Segunda Mano de pintura | 2027-02-16 → 2027-02-15 (-1d) | 2027-03-08 → 2027-03-05 (-3d) | 157.93d → 161.06d |
| P08 | **Piso 08** | 2027-03-08 → 2027-03-05 (-3d) | 2027-04-02 → 2027-04-01 (-1d) |  |
| A19690 | Segunda Mano de pintura | 2027-03-08 → 2027-03-05 (-3d) | 2027-04-02 → 2027-04-01 (-1d) | 157.93d → 161.06d |
| P09 | **Piso 09** | 2027-04-02 → 2027-04-01 (-1d) | 2027-04-20 → 2027-04-19 (-1d) |  |
| A19700 | Segunda Mano de pintura | 2027-04-02 → 2027-04-01 (-1d) | 2027-04-20 → 2027-04-19 (-1d) | 157.93d → 161.06d |
| P10 | **Piso 10** | 2027-04-20 → 2027-04-19 (-1d) | 2027-05-06 → 2027-05-05 (-1d) |  |
| A19710 | Segunda Mano de pintura | 2027-04-20 → 2027-04-19 (-1d) | 2027-05-06 → 2027-05-05 (-1d) | 157.93d → 161.06d |
| P11 | **Piso 11** | 2027-05-06 → 2027-05-05 (-1d) | 2027-05-24 → 2027-05-21 (-3d) |  |
| A19720 | Segunda Mano de pintura | 2027-05-06 → 2027-05-05 (-1d) | 2027-05-24 → 2027-05-21 (-3d) | 157.93d → 161.06d |
| P12 | **Piso 12** | 2027-05-24 → 2027-05-21 (-3d) | 2027-06-10 → 2027-06-09 (-1d) |  |
| A19730 | Segunda Mano de pintura | 2027-05-24 → 2027-05-21 (-3d) | 2027-06-10 → 2027-06-09 (-1d) | 157.93d → 161.06d |
| P13 | **Piso 13** | 2027-06-10 → 2027-06-09 (-1d) | 2027-06-25 → 2027-06-24 (-1d) |  |
| A19750 | Segunda Mano de pintura | 2027-06-10 → 2027-06-09 (-1d) | 2027-06-25 → 2027-06-24 (-1d) | 157.93d → 161.06d |
| P14 | **Piso 14** | 2027-06-25 → 2027-06-24 (-1d) | 2027-07-13 → 2027-07-12 (-1d) |  |
| A19760 | Segunda Mano de pintura | 2027-06-25 → 2027-06-24 (-1d) | 2027-07-13 → 2027-07-12 (-1d) | 157.93d → 161.06d |
| P15 | **Piso 15** | 2027-07-13 → 2027-07-12 (-1d) | 2027-07-27 → 2027-07-26 (-1d) |  |
| A19770 | Segunda Mano de pintura | 2027-07-13 → 2027-07-12 (-1d) | 2027-07-27 → 2027-07-26 (-1d) | 157.93d → 161.06d |
| P16 | **Piso 16** | 2027-08-03 → 2027-08-02 (-1d) | 2027-08-17 → 2027-08-13 (-4d) |  |
| A19780 | Segunda Mano de pintura | 2027-08-03 → 2027-08-02 (-1d) | 2027-08-17 → 2027-08-13 (-4d) | 157.93d → 161.06d |
| Ceramica y Enchapes | **Ceramica y Enchapes** | 2026-10-13 → 2026-10-09 (-4d) | 2027-08-03 → 2027-08-02 (-1d) |  |
| P03 | **Piso 03** | 2026-10-13 → 2026-10-09 (-4d) | 2026-12-04 → 2026-12-03 (-1d) |  |
| A5690 | Muros y piso de Baño | 2026-10-13 → 2026-10-09 (-4d) | 2026-10-29 → 2026-10-28 (-1d) | 31.93d → 35.06d |
| A5700 | Piso de Alcobas | 2026-10-29 → 2026-10-28 (-1d) | 2026-11-11 → 2026-11-10 (-1d) | 31.93d → 35.06d |
| A5710 | Piso Sala | 2026-11-11 → 2026-11-10 (-1d) | 2026-11-18 → 2026-11-17 (-1d) | 31.93d → 35.06d |
| A5720 | Piso cocina y labores | 2026-11-18 → 2026-11-17 (-1d) | 2026-11-24 → 2026-11-23 (-1d) | 264.93d → 268.06d |
| A5730 | Piso Balcon | 2026-11-24 → 2026-11-23 (-1d) | 2026-11-30 → 2026-11-27 (-3d) | 264.93d → 268.06d |
| A5740 | Salpicadero Lavadero | 2026-11-30 → 2026-11-27 (-3d) | 2026-12-04 → 2026-12-03 (-1d) | 264.93d → 268.06d |
| P04 | **Piso 04** | 2026-11-30 → 2026-11-27 (-3d) | 2027-02-08 → 2027-02-05 (-3d) |  |
| A5750 | Muros y piso de Baño | 2026-11-30 → 2026-11-27 (-3d) | 2026-12-17 → 2026-12-16 (-1d) | 166.93d → 170.06d |
| A5760 | Piso de Alcobas | 2026-12-17 → 2026-12-16 (-1d) | 2027-01-15 → 2027-01-14 (-1d) | 201.93d → 205.06d |
| A5770 | Piso Sala | 2027-01-15 → 2027-01-14 (-1d) | 2027-01-21 → 2027-01-20 (-1d) | 236.93d → 240.06d |
| A5780 | Piso cocina y labores | 2027-01-21 → 2027-01-20 (-1d) | 2027-01-27 → 2027-01-26 (-1d) | 236.93d → 240.06d |
| A5790 | Piso Balcon | 2027-01-27 → 2027-01-26 (-1d) | 2027-02-02 → 2027-02-01 (-1d) | 236.93d → 240.06d |
| A5800 | Salpicadero Lavadero | 2027-02-02 → 2027-02-01 (-1d) | 2027-02-08 → 2027-02-05 (-3d) | 236.93d → 240.06d |
| P05 | **Piso 05** | 2026-12-17 → 2026-12-16 (-1d) | 2027-02-24 → 2027-02-23 (-1d) |  |
| A5810 | Muros y piso de Baño | 2026-12-17 → 2026-12-16 (-1d) | 2027-01-21 → 2027-01-20 (-1d) | 166.93d → 170.06d |
| A5820 | Piso de Alcobas | 2027-01-21 → 2027-01-20 (-1d) | 2027-02-02 → 2027-02-01 (-1d) | 197.93d → 201.06d |
| A5830 | Piso Sala | 2027-02-02 → 2027-02-01 (-1d) | 2027-02-08 → 2027-02-05 (-3d) | 228.93d → 232.06d |
| A5840 | Piso cocina y labores | 2027-02-08 → 2027-02-05 (-3d) | 2027-02-12 → 2027-02-11 (-1d) | 228.93d → 232.06d |
| A5850 | Piso Balcon | 2027-02-12 → 2027-02-11 (-1d) | 2027-02-18 → 2027-02-17 (-1d) | 228.93d → 232.06d |
| A5860 | Salpicadero Lavadero | 2027-02-18 → 2027-02-17 (-1d) | 2027-02-24 → 2027-02-23 (-1d) | 228.93d → 232.06d |
| P06 | **Piso 06** | 2027-01-21 → 2027-01-20 (-1d) | 2027-03-12 → 2027-03-11 (-1d) |  |
| A5870 | Muros y piso de Baño | 2027-01-21 → 2027-01-20 (-1d) | 2027-02-08 → 2027-02-05 (-3d) | 166.93d → 170.06d |
| A5880 | Piso de Alcobas | 2027-02-08 → 2027-02-05 (-3d) | 2027-02-18 → 2027-02-17 (-1d) | 193.93d → 197.06d |
| A5890 | Piso Sala | 2027-02-18 → 2027-02-17 (-1d) | 2027-02-24 → 2027-02-23 (-1d) | 220.93d → 224.06d |
| A5900 | Piso cocina y labores | 2027-02-24 → 2027-02-23 (-1d) | 2027-03-02 → 2027-03-01 (-1d) | 220.93d → 224.06d |

| ID | Task | Start | Finish | Total float |
| --- | --- | --- | --- | --- |
| A5910 | Piso Balcon | 2027-03-02 → 2027-03-01 (-1d) | 2027-03-08 → 2027-03-05 (-3d) | 220.93d → 224.06d |
| A5920 | Salpicadero Lavadero | 2027-03-08 → 2027-03-05 (-3d) | 2027-03-12 → 2027-03-11 (-1d) | 220.93d → 224.06d |
| P07 | **Piso 07** | 2027-02-08 → 2027-02-05 (-3d) | 2027-04-06 → 2027-04-05 (-1d) |  |
| A5930 | Muros y piso de Baño | 2027-02-08 → 2027-02-05 (-3d) | 2027-02-24 → 2027-02-23 (-1d) | 166.93d → 170.06d |
| A5940 | Piso de Alcobas | 2027-02-24 → 2027-02-23 (-1d) | 2027-03-08 → 2027-03-05 (-3d) | 189.93d → 193.06d |
| A5950 | Piso Sala | 2027-03-08 → 2027-03-05 (-3d) | 2027-03-12 → 2027-03-11 (-1d) | 212.93d → 216.06d |
| A5960 | Piso cocina y labores | 2027-03-12 → 2027-03-11 (-1d) | 2027-03-18 → 2027-03-17 (-1d) | 212.93d → 216.06d |
| A5970 | Piso Balcon | 2027-03-18 → 2027-03-17 (-1d) | 2027-03-31 → 2027-03-30 (-1d) | 212.93d → 216.06d |
| A5980 | Salpicadero Lavadero | 2027-03-31 → 2027-03-30 (-1d) | 2027-04-06 → 2027-04-05 (-1d) | 212.93d → 216.06d |
| P08 | **Piso 08** | 2027-02-24 → 2027-02-23 (-1d) | 2027-04-22 → 2027-04-21 (-1d) |  |
| A5990 | Muros y piso de Baño | 2027-02-24 → 2027-02-23 (-1d) | 2027-03-12 → 2027-03-11 (-1d) | 166.93d → 170.06d |
| A6000 | Piso de Alcobas | 2027-03-12 → 2027-03-11 (-1d) | 2027-03-31 → 2027-03-30 (-1d) | 185.93d → 189.06d |
| A6010 | Piso Sala | 2027-03-31 → 2027-03-30 (-1d) | 2027-04-06 → 2027-04-05 (-1d) | 204.93d → 208.06d |
| A6020 | Piso cocina y labores | 2027-04-06 → 2027-04-05 (-1d) | 2027-04-12 → 2027-04-09 (-3d) | 204.93d → 208.06d |
| A6030 | Piso Balcon | 2027-04-12 → 2027-04-09 (-3d) | 2027-04-16 → 2027-04-15 (-1d) | 204.93d → 208.06d |
| A6040 | Salpicadero Lavadero | 2027-04-16 → 2027-04-15 (-1d) | 2027-04-22 → 2027-04-21 (-1d) | 204.93d → 208.06d |
| P09 | **Piso 09** | 2027-03-12 → 2027-03-11 (-1d) | 2027-04-29 → 2027-04-28 (-1d) |  |
| A6050 | Muros y piso de Baño | 2027-03-12 → 2027-03-11 (-1d) | 2027-04-02 → 2027-04-01 (-1d) | 166.93d → 170.06d |
| A6060 | Piso de Alcobas | 2027-04-02 → 2027-04-01 (-1d) | 2027-04-13 → 2027-04-12 (-1d) | 183.93d → 187.06d |
| A6070 | Piso Sala | 2027-04-13 → 2027-04-12 (-1d) | 2027-04-16 → 2027-04-15 (-1d) | 202.93d → 206.06d |
| A6080 | Piso cocina y labores | 2027-04-16 → 2027-04-15 (-1d) | 2027-04-21 → 2027-04-20 (-1d) | 202.93d → 206.06d |
| A6090 | Piso Balcon | 2027-04-21 → 2027-04-20 (-1d) | 2027-04-26 → 2027-04-23 (-3d) | 202.93d → 206.06d |
| A6100 | Salpicadero Lavadero | 2027-04-26 → 2027-04-23 (-3d) | 2027-04-29 → 2027-04-28 (-1d) | 202.93d → 206.06d |
| P10 | **Piso 10** | 2027-04-02 → 2027-04-01 (-1d) | 2027-05-14 → 2027-05-13 (-1d) |  |
| A6110 | Muros y piso de Baño | 2027-04-02 → 2027-04-01 (-1d) | 2027-04-16 → 2027-04-15 (-1d) | 166.93d → 170.06d |
| A6120 | Piso de Alcobas | 2027-04-16 → 2027-04-15 (-1d) | 2027-04-27 → 2027-04-26 (-1d) | 180.93d → 184.06d |
| A6130 | Piso Sala | 2027-04-27 → 2027-04-26 (-1d) | 2027-04-30 → 2027-04-29 (-1d) | 195.93d → 199.06d |
| A6140 | Piso cocina y labores | 2027-04-30 → 2027-04-29 (-1d) | 2027-05-05 → 2027-05-04 (-1d) | 195.93d → 199.06d |
| A6150 | Piso Balcon | 2027-05-05 → 2027-05-04 (-1d) | 2027-05-11 → 2027-05-07 (-4d) | 195.93d → 199.06d |
| A6160 | Salpicadero Lavadero | 2027-05-11 → 2027-05-07 (-4d) | 2027-05-14 → 2027-05-13 (-1d) | 195.93d → 199.06d |
| P11 | **Piso 11** | 2027-04-16 → 2027-04-15 (-1d) | 2027-05-26 → 2027-05-25 (-1d) |  |
| A6170 | Muros y piso de Baño | 2027-04-16 → 2027-04-15 (-1d) | 2027-04-29 → 2027-04-28 (-1d) | 166.93d → 170.06d |
| A6180 | Piso de Alcobas | 2027-04-29 → 2027-04-28 (-1d) | 2027-05-07 → 2027-05-06 (-1d) | 178.93d → 182.06d |
| A6190 | Piso Sala | 2027-05-07 → 2027-05-06 (-1d) | 2027-05-13 → 2027-05-12 (-1d) | 190.93d → 194.06d |
| A6200 | Piso cocina y labores | 2027-05-13 → 2027-05-12 (-1d) | 2027-05-18 → 2027-05-17 (-1d) | 190.93d → 194.06d |
| A6210 | Piso Balcon | 2027-05-18 → 2027-05-17 (-1d) | 2027-05-21 → 2027-05-20 (-1d) | 190.93d → 194.06d |
| A6220 | Salpicadero Lavadero | 2027-05-21 → 2027-05-20 (-1d) | 2027-05-26 → 2027-05-25 (-1d) | 190.93d → 194.06d |
| P12 | **Piso 12** | 2027-04-29 → 2027-04-28 (-1d) | 2027-06-10 → 2027-06-09 (-1d) |  |
| A6230 | Muros y piso de Baño | 2027-04-29 → 2027-04-28 (-1d) | 2027-05-13 → 2027-05-12 (-1d) | 166.93d → 170.06d |
| A6240 | Piso de Alcobas | 2027-05-13 → 2027-05-12 (-1d) | 2027-05-21 → 2027-05-20 (-1d) | 175.93d → 179.06d |
| A6250 | Piso Sala | 2027-05-21 → 2027-05-20 (-1d) | 2027-05-26 → 2027-05-25 (-1d) | 184.93d → 188.06d |
| A6260 | Piso cocina y labores | 2027-05-26 → 2027-05-25 (-1d) | 2027-06-01 → 2027-05-28 (-4d) | 184.93d → 188.06d |
| A6270 | Piso Balcon | 2027-06-01 → 2027-05-28 (-4d) | 2027-06-04 → 2027-06-03 (-1d) | 184.93d → 188.06d |
| A6280 | Salpicadero Lavadero | 2027-06-04 → 2027-06-03 (-1d) | 2027-06-10 → 2027-06-09 (-1d) | 184.93d → 188.06d |
| P13 | **Piso 13** | 2027-05-13 → 2027-05-12 (-1d) | 2027-06-23 → 2027-06-22 (-1d) |  |
| A6290 | Muros y piso de Baño | 2027-05-13 → 2027-05-12 (-1d) | 2027-05-26 → 2027-05-25 (-1d) | 166.93d → 170.06d |
| A6300 | Piso de Alcobas | 2027-05-26 → 2027-05-25 (-1d) | 2027-06-04 → 2027-06-03 (-1d) | 172.93d → 176.06d |
| A6310 | Piso Sala | 2027-06-04 → 2027-06-03 (-1d) | 2027-06-10 → 2027-06-09 (-1d) | 178.93d → 182.06d |
| A6320 | Piso cocina y labores | 2027-06-10 → 2027-06-09 (-1d) | 2027-06-15 → 2027-06-14 (-1d) | 178.93d → 182.06d |
| A6330 | Piso Balcon | 2027-06-15 → 2027-06-14 (-1d) | 2027-06-18 → 2027-06-17 (-1d) | 178.93d → 182.06d |
| A6340 | Salpicadero Lavadero | 2027-06-18 → 2027-06-17 (-1d) | 2027-06-23 → 2027-06-22 (-1d) | 178.93d → 182.06d |
| P14 | **Piso 14** | 2027-05-26 → 2027-05-25 (-1d) | 2027-07-06 → 2027-07-02 (-4d) |  |
| A6350 | Muros y piso de Baño | 2027-05-26 → 2027-05-25 (-1d) | 2027-06-09 → 2027-06-08 (-1d) | 166.93d → 170.06d |
| A6360 | Piso de Alcobas | 2027-06-09 → 2027-06-08 (-1d) | 2027-06-17 → 2027-06-16 (-1d) | 170.93d → 174.06d |
| A6370 | Piso Sala | 2027-06-17 → 2027-06-16 (-1d) | 2027-06-22 → 2027-06-21 (-1d) | 173.93d → 177.06d |
| A6380 | Piso cocina y labores | 2027-06-22 → 2027-06-21 (-1d) | 2027-06-25 → 2027-06-24 (-1d) | 173.93d → 177.06d |
| A6390 | Piso Balcon | 2027-06-25 → 2027-06-24 (-1d) | 2027-06-30 → 2027-06-29 (-1d) | 173.93d → 177.06d |
| A6400 | Salpicadero Lavadero | 2027-06-30 → 2027-06-29 (-1d) | 2027-07-06 → 2027-07-02 (-4d) | 173.93d → 177.06d |
| P15 | **Piso 15** | 2027-06-09 → 2027-06-08 (-1d) | 2027-07-16 → 2027-07-15 (-1d) |  |
| A6410 | Muros y piso de Baño | 2027-06-09 → 2027-06-08 (-1d) | 2027-06-21 → 2027-06-18 (-3d) | 166.93d → 170.06d |
| A6420 | Piso de Alcobas | 2027-06-21 → 2027-06-18 (-3d) | 2027-06-29 → 2027-06-28 (-1d) | 168.93d → 172.06d |
| A6430 | Piso Sala | 2027-06-29 → 2027-06-28 (-1d) | 2027-07-02 → 2027-07-01 (-1d) | 168.93d → 172.06d |
| A6440 | Piso cocina y labores | 2027-07-02 → 2027-07-01 (-1d) | 2027-07-08 → 2027-07-07 (-1d) | 168.93d → 172.06d |
| A6450 | Piso Balcon | 2027-07-08 → 2027-07-07 (-1d) | 2027-07-13 → 2027-07-12 (-1d) | 168.93d → 172.06d |
| A6460 | Salpicadero Lavadero | 2027-07-13 → 2027-07-12 (-1d) | 2027-07-16 → 2027-07-15 (-1d) | 168.93d → 172.06d |
| P16 | **Piso 16** | 2027-06-21 → 2027-06-18 (-3d) | 2027-08-03 → 2027-08-02 (-1d) |  |
| A15240 | Muros y piso de Baño | 2027-06-21 → 2027-06-18 (-3d) | 2027-07-01 → 2027-06-30 (-1d) | 166.93d → 170.06d |
| A15250 | Piso de Alcobas | 2027-07-01 → 2027-06-30 (-1d) | 2027-07-12 → 2027-07-09 (-3d) | 166.93d → 170.06d |
| A15260 | Piso Sala | 2027-07-12 → 2027-07-09 (-3d) | 2027-07-15 → 2027-07-14 (-1d) | 166.93d → 170.06d |
| A15270 | Piso cocina y labores | 2027-07-15 → 2027-07-14 (-1d) | 2027-07-21 → 2027-07-19 (-2d) | 166.93d → 170.06d |

| ID | Task | Start | Finish | Total float |
| --- | --- | --- | --- | --- |
| A15280 | Piso Balcon y Terraza | 2027-07-21 → 2027-07-19 (-2d) | 2027-07-29 → 2027-07-28 (-1d) | 166.93d → 170.06d |
| A15290 | Salpicadero Lavadero | 2027-07-29 → 2027-07-28 (-1d) | 2027-08-03 → 2027-08-02 (-1d) | 166.93d → 170.06d |
| Inst. Ventaneria | **Inst. Ventaneria** | 2026-11-18 → 2026-11-17 (-1d) | 2027-08-03 → 2027-08-02 (-1d) |  |
| P03 | **Piso 03** | 2026-11-18 → 2026-11-17 (-1d) | 2026-12-17 → 2026-12-16 (-1d) |  |
| A6560 | Inst. Puertas Ventanas | 2026-11-18 → 2026-11-17 (-1d) | 2026-11-30 → 2026-11-27 (-3d) | 31.93d → 35.06d |
| A6580 | Inst. Ventanas | 2026-11-30 → 2026-11-27 (-3d) | 2026-12-17 → 2026-12-16 (-1d) | 31.93d → 35.06d |
| P04 | **Piso 04** | 2026-11-30 → 2026-11-27 (-3d) | 2027-01-21 → 2027-01-20 (-1d) |  |
| A6590 | Inst. Puertas Ventanas | 2026-11-30 → 2026-11-27 (-3d) | 2026-12-11 → 2026-12-10 (-1d) | 35.93d → 39.06d |
| A6610 | Inst. Ventanas | 2026-12-17 → 2026-12-16 (-1d) | 2027-01-21 → 2027-01-20 (-1d) | 31.93d → 35.06d |
| P05 | **Piso 05** | 2026-12-11 → 2026-12-10 (-1d) | 2027-02-08 → 2027-02-05 (-3d) |  |
| A6620 | Inst. Puertas Ventanas | 2026-12-11 → 2026-12-10 (-1d) | 2026-12-23 → 2026-12-22 (-1d) | 39.93d → 43.06d |
| A6640 | Inst. Ventanas | 2027-01-21 → 2027-01-20 (-1d) | 2027-02-08 → 2027-02-05 (-3d) | 31.93d → 35.06d |
| P06 | **Piso 06** | 2026-12-23 → 2026-12-22 (-1d) | 2027-02-24 → 2027-02-23 (-1d) |  |
| A6650 | Inst. Puertas Ventanas | 2026-12-23 → 2026-12-22 (-1d) | 2027-01-21 → 2027-01-20 (-1d) | 43.93d → 47.06d |
| A6670 | Inst. Ventanas | 2027-02-08 → 2027-02-05 (-3d) | 2027-02-24 → 2027-02-23 (-1d) | 31.93d → 35.06d |
| P07 | **Piso 07** | 2027-01-21 → 2027-01-20 (-1d) | 2027-03-12 → 2027-03-11 (-1d) |  |
| A6680 | Inst. Puertas Ventanas | 2027-01-21 → 2027-01-20 (-1d) | 2027-02-02 → 2027-02-01 (-1d) | 47.93d → 51.06d |
| A6700 | Inst. Ventanas | 2027-02-24 → 2027-02-23 (-1d) | 2027-03-12 → 2027-03-11 (-1d) | 31.93d → 35.06d |
| P08 | **Piso 08** | 2027-02-02 → 2027-02-01 (-1d) | 2027-04-06 → 2027-04-05 (-1d) |  |
| A6710 | Inst. Puertas Ventanas | 2027-02-02 → 2027-02-01 (-1d) | 2027-02-12 → 2027-02-11 (-1d) | 51.93d → 55.06d |
| A6730 | Inst. Ventanas | 2027-03-12 → 2027-03-11 (-1d) | 2027-04-06 → 2027-04-05 (-1d) | 31.93d → 35.06d |
| P09 | **Piso 09** | 2027-02-12 → 2027-02-11 (-1d) | 2027-04-20 → 2027-04-19 (-1d) |  |
| A6740 | Inst. Puertas Ventanas | 2027-02-12 → 2027-02-11 (-1d) | 2027-02-22 → 2027-02-19 (-3d) | 57.93d → 61.06d |
| A6760 | Inst. Ventanas | 2027-04-06 → 2027-04-05 (-1d) | 2027-04-20 → 2027-04-19 (-1d) | 31.93d → 35.06d |
| P10 | **Piso 10** | 2027-02-22 → 2027-02-19 (-3d) | 2027-05-04 → 2027-05-03 (-1d) |  |
| A6770 | Inst. Puertas Ventanas | 2027-02-22 → 2027-02-19 (-3d) | 2027-03-02 → 2027-03-01 (-1d) | 61.93d → 65.06d |
| A6790 | Inst. Ventanas | 2027-04-20 → 2027-04-19 (-1d) | 2027-05-04 → 2027-05-03 (-1d) | 31.93d → 35.06d |
| P11 | **Piso 11** | 2027-03-02 → 2027-03-01 (-1d) | 2027-05-19 → 2027-05-18 (-1d) |  |
| A6800 | Inst. Puertas Ventanas | 2027-03-02 → 2027-03-01 (-1d) | 2027-03-10 → 2027-03-09 (-1d) | 65.93d → 69.06d |
| A6820 | Inst. Ventanas | 2027-05-04 → 2027-05-03 (-1d) | 2027-05-19 → 2027-05-18 (-1d) | 31.93d → 35.06d |
| P12 | **Piso 12** | 2027-03-10 → 2027-03-09 (-1d) | 2027-06-03 → 2027-06-02 (-1d) |  |
| A6830 | Inst. Puertas Ventanas | 2027-03-10 → 2027-03-09 (-1d) | 2027-03-18 → 2027-03-17 (-1d) | 72.93d → 76.06d |
| A6850 | Inst. Ventanas | 2027-05-19 → 2027-05-18 (-1d) | 2027-06-03 → 2027-06-02 (-1d) | 34.93d → 38.06d |
| P13 | **Piso 13** | 2027-03-18 → 2027-03-17 (-1d) | 2027-06-18 → 2027-06-17 (-1d) |  |
| A6860 | Inst. Puertas Ventanas | 2027-03-18 → 2027-03-17 (-1d) | 2027-04-02 → 2027-04-01 (-1d) | 76.93d → 80.06d |
| A6880 | Inst. Ventanas | 2027-06-03 → 2027-06-02 (-1d) | 2027-06-18 → 2027-06-17 (-1d) | 34.93d → 38.06d |
| P14 | **Piso 14** | 2027-04-02 → 2027-04-01 (-1d) | 2027-07-02 → 2027-07-01 (-1d) |  |
| A6890 | Inst. Puertas Ventanas | 2027-04-02 → 2027-04-01 (-1d) | 2027-04-12 → 2027-04-09 (-3d) | 80.93d → 84.06d |
| A6910 | Inst. Ventanas | 2027-06-18 → 2027-06-17 (-1d) | 2027-07-02 → 2027-07-01 (-1d) | 34.93d → 38.06d |
| P15 | **Piso 15** | 2027-04-12 → 2027-04-09 (-3d) | 2027-07-19 → 2027-07-16 (-3d) |  |
| A6920 | Inst. Puertas Ventanas | 2027-04-12 → 2027-04-09 (-3d) | 2027-04-20 → 2027-04-19 (-1d) | 84.93d → 88.06d |
| A6940 | Inst. Ventanas | 2027-07-02 → 2027-07-01 (-1d) | 2027-07-19 → 2027-07-16 (-3d) | 34.93d → 38.06d |
| P16 | **Piso 16** | 2027-04-20 → 2027-04-19 (-1d) | 2027-08-03 → 2027-08-02 (-1d) |  |
| A15060 | Inst. Puertas Ventanas | 2027-04-20 → 2027-04-19 (-1d) | 2027-04-28 → 2027-04-27 (-1d) | 88.93d → 92.06d |
| A15300 | Inst. Ventanas | 2027-07-19 → 2027-07-16 (-3d) | 2027-08-03 → 2027-08-02 (-1d) | 34.93d → 38.06d |
| Cableado | **Cableado** | 2026-12-10 → 2026-12-09 (-1d) | 2027-09-07 → 2027-09-06 (-1d) |  |
| P03 | **Piso 03** | 2026-12-10 → 2026-12-09 (-1d) | 2027-03-01 → 2027-02-26 (-3d) |  |
| A7070 | Inst. elec-comun | 2026-12-10 → 2026-12-09 (-1d) | 2027-03-01 → 2027-02-26 (-3d) | 267.93d → 271.06d |
| P04 | **Piso 04** | 2027-01-14 → 2027-01-13 (-1d) | 2027-03-17 → 2027-03-16 (-1d) |  |
| A7110 | Inst. elec-comun | 2027-01-14 → 2027-01-13 (-1d) | 2027-03-17 → 2027-03-16 (-1d) | 255.93d → 259.06d |
| P05 | **Piso 05** | 2027-02-01 → 2027-01-29 (-3d) | 2027-04-09 → 2027-04-08 (-1d) |  |
| A7150 | Inst. elec-comun | 2027-02-01 → 2027-01-29 (-3d) | 2027-04-09 → 2027-04-08 (-1d) | 243.93d → 247.06d |
| P06 | **Piso 06** | 2027-02-17 → 2027-02-16 (-1d) | 2027-04-27 → 2027-04-26 (-1d) |  |
| A7190 | Inst. elec-comun | 2027-02-17 → 2027-02-16 (-1d) | 2027-04-27 → 2027-04-26 (-1d) | 231.93d → 235.06d |
| P07 | **Piso 07** | 2027-03-05 → 2027-03-04 (-1d) | 2027-05-14 → 2027-05-13 (-1d) |  |
| A7230 | Inst. elec-comun | 2027-03-05 → 2027-03-04 (-1d) | 2027-05-14 → 2027-05-13 (-1d) | 219.93d → 223.06d |
| P08 | **Piso 08** | 2027-03-30 → 2027-03-29 (-1d) | 2027-06-02 → 2027-06-01 (-1d) |  |
| A7270 | Inst. elec-comun | 2027-03-30 → 2027-03-29 (-1d) | 2027-06-02 → 2027-06-01 (-1d) | 207.93d → 211.06d |
| P09 | **Piso 09** | 2027-04-13 → 2027-04-12 (-1d) | 2027-06-11 → 2027-06-10 (-1d) |  |
| A7310 | Inst. elec-comun | 2027-04-13 → 2027-04-12 (-1d) | 2027-06-11 → 2027-06-10 (-1d) | 201.93d → 205.06d |
| P10 | **Piso 10** | 2027-04-27 → 2027-04-26 (-1d) | 2027-06-25 → 2027-06-24 (-1d) |  |
| A7350 | Inst. elec-comun | 2027-04-27 → 2027-04-26 (-1d) | 2027-06-25 → 2027-06-24 (-1d) | 191.93d → 88.36d |
| P11 | **Piso 11** | 2027-05-12 → 2027-05-11 (-1d) | 2027-07-06 → 2027-07-02 (-4d) |  |
| A7390 | Inst. elec-comun | 2027-05-12 → 2027-05-11 (-1d) | 2027-07-06 → 2027-07-02 (-4d) | 185.93d → 189.06d |
| P12 | **Piso 12** | 2027-05-26 → 2027-05-25 (-1d) | 2027-07-21 → 2027-07-19 (-2d) |  |
| A7430 | Inst. elec-comun | 2027-05-26 → 2027-05-25 (-1d) | 2027-07-21 → 2027-07-19 (-2d) | 175.93d → 179.06d |
| P13 | **Piso 13** | 2027-06-11 → 2027-06-10 (-1d) | 2027-07-30 → 2027-07-29 (-1d) |  |
| A7470 | Inst. elec-comun | 2027-06-11 → 2027-06-10 (-1d) | 2027-07-30 → 2027-07-29 (-1d) | 168.93d → 172.06d |
| P14 | **Piso 14** | 2027-06-25 → 2027-06-24 (-1d) | 2027-08-13 → 2027-08-12 (-1d) |  |
| A7510 | Inst. elec-comun | 2027-06-25 → 2027-06-24 (-1d) | 2027-08-13 → 2027-08-12 (-1d) | 158.93d → 162.06d |

| ID | Task | Start | Finish | Total float |
| --- | --- | --- | --- | --- |
| P15 | **Piso 15** | 2027-07-12 → 2027-07-09 (-3d) | 2027-08-24 → 2027-08-23 (-1d) |  |
| A7550 | Inst. elec-comun | 2027-07-12 → 2027-07-09 (-3d) | 2027-08-24 → 2027-08-23 (-1d) | 152.93d → 156.06d |
| P16 | **Piso 16** | 2027-07-27 → 2027-07-26 (-1d) | 2027-09-07 → 2027-09-06 (-1d) |  |
| A15310 | Inst. elec-comun | 2027-07-27 → 2027-07-26 (-1d) | 2027-09-07 → 2027-09-06 (-1d) | 142.93d → 146.06d |
| Carpinteria Madera | **Carpinteria Madera** | 2027-01-26 → 2027-01-25 (-1d) | 2027-10-26 → 2027-10-25 (-1d) |  |
| P03 | **Piso 03** | 2027-01-26 → 2027-01-25 (-1d) | 2027-04-09 → 2027-04-08 (-1d) |  |
| A19850 | Muebles de cocina | 2027-01-26 → 2027-01-25 (-1d) | 2027-02-01 → 2027-01-29 (-3d) | 168.93d → 96.36d |
| A19860 | Mueble lavadero | 2027-02-01 → 2027-01-29 (-3d) | 2027-02-05 → 2027-02-04 (-1d) | 168.93d → 96.36d |
| A19870 | Muebles de baño | 2027-02-05 → 2027-02-04 (-1d) | 2027-03-01 → 2027-02-26 (-3d) | 168.93d → 96.36d |
| A19880 | Closets | 2027-03-01 → 2027-02-26 (-3d) | 2027-03-05 → 2027-03-04 (-1d) | 168.93d → 96.36d |
| A19890 | Muebles de lino | 2027-03-05 → 2027-03-04 (-1d) | 2027-03-17 → 2027-03-16 (-1d) | 168.93d → 96.36d |
| A19900 | Puertas | 2027-03-17 → 2027-03-16 (-1d) | 2027-04-09 → 2027-04-08 (-1d) | 168.93d → 96.36d |
| P04 | **Piso 04** | 2027-03-04 → 2027-03-03 (-1d) | 2027-05-19 → 2027-05-18 (-1d) |  |
| A19910 | Muebles de cocina | 2027-03-04 → 2027-03-03 (-1d) | 2027-03-10 → 2027-03-09 (-1d) | 125.93d → 129.06d |
| A19920 | Mueble lavadero | 2027-03-10 → 2027-03-09 (-1d) | 2027-03-16 → 2027-03-15 (-1d) | 125.93d → 129.06d |
| A19930 | Muebles de baño | 2027-03-16 → 2027-03-15 (-1d) | 2027-04-14 → 2027-04-13 (-1d) | 125.93d → 129.06d |
| A19940 | Closets | 2027-04-14 → 2027-04-13 (-1d) | 2027-04-20 → 2027-04-19 (-1d) | 125.93d → 129.06d |
| A19950 | Muebles de lino | 2027-04-20 → 2027-04-19 (-1d) | 2027-04-30 → 2027-04-29 (-1d) | 125.93d → 129.06d |
| A19960 | Puertas | 2027-04-30 → 2027-04-29 (-1d) | 2027-05-19 → 2027-05-18 (-1d) | 125.93d → 129.06d |
| P05 | **Piso 05** | 2027-03-29 → 2027-03-19 (-10d) | 2027-06-08 → 2027-06-04 (-4d) |  |
| A19990 | Muebles de cocina | 2027-03-29 → 2027-03-19 (-10d) | 2027-04-02 → 2027-04-01 (-1d) | 108.93d → 112.06d |
| A20000 | Mueble lavadero | 2027-04-02 → 2027-04-01 (-1d) | 2027-04-08 → 2027-04-07 (-1d) | 108.93d → 112.06d |
| A20010 | Muebles de baño | 2027-04-08 → 2027-04-07 (-1d) | 2027-04-30 → 2027-04-29 (-1d) | 108.93d → 112.06d |
| A20020 | Closets | 2027-04-30 → 2027-04-29 (-1d) | 2027-05-06 → 2027-05-05 (-1d) | 108.93d → 112.06d |
| A20030 | Muebles de lino | 2027-05-06 → 2027-05-05 (-1d) | 2027-05-19 → 2027-05-18 (-1d) | 108.93d → 112.06d |
| A20040 | Puertas | 2027-05-19 → 2027-05-18 (-1d) | 2027-06-08 → 2027-06-04 (-4d) | 108.93d → 112.06d |
| P06 | **Piso 06** | 2027-04-14 → 2027-04-13 (-1d) | 2027-06-24 → 2027-06-23 (-1d) |  |
| A20050 | Muebles de cocina | 2027-04-14 → 2027-04-13 (-1d) | 2027-04-20 → 2027-04-19 (-1d) | 93.93d → 97.06d |
| A20060 | Mueble lavadero | 2027-04-20 → 2027-04-19 (-1d) | 2027-04-26 → 2027-04-23 (-3d) | 93.93d → 97.06d |
| A20070 | Muebles de baño | 2027-04-26 → 2027-04-23 (-3d) | 2027-05-19 → 2027-05-18 (-1d) | 93.93d → 97.06d |
| A20080 | Closets | 2027-05-19 → 2027-05-18 (-1d) | 2027-05-25 → 2027-05-24 (-1d) | 93.93d → 97.06d |
| A20090 | Muebles de lino | 2027-05-25 → 2027-05-24 (-1d) | 2027-06-08 → 2027-06-04 (-4d) | 93.93d → 97.06d |
| A20100 | Puertas | 2027-06-08 → 2027-06-04 (-4d) | 2027-06-24 → 2027-06-23 (-1d) | 93.93d → 97.06d |
| P07 | **Piso 07** | 2027-04-30 → 2027-04-29 (-1d) | 2027-07-13 → 2027-07-12 (-1d) |  |
| A20110 | Muebles de cocina | 2027-04-30 → 2027-04-29 (-1d) | 2027-05-06 → 2027-05-05 (-1d) | 77.93d → 91.06d |
| A20120 | Mueble lavadero | 2027-05-06 → 2027-05-05 (-1d) | 2027-05-13 → 2027-05-12 (-1d) | 77.93d → 91.06d |
| A20130 | Muebles de baño | 2027-05-13 → 2027-05-12 (-1d) | 2027-06-08 → 2027-06-04 (-4d) | 77.93d → 91.06d |
| A20140 | Closets | 2027-06-08 → 2027-06-04 (-4d) | 2027-06-14 → 2027-06-11 (-3d) | 77.93d → 91.06d |
| A20150 | Muebles de lino | 2027-06-14 → 2027-06-11 (-3d) | 2027-06-24 → 2027-06-23 (-1d) | 77.93d → 91.06d |
| A20160 | Puertas | 2027-06-24 → 2027-06-23 (-1d) | 2027-07-13 → 2027-07-12 (-1d) | 77.93d → 91.06d |
| P08 | **Piso 08** | 2027-05-19 → 2027-05-18 (-1d) | 2027-07-30 → 2027-07-29 (-1d) |  |
| A20170 | Muebles de cocina | 2027-05-19 → 2027-05-18 (-1d) | 2027-05-25 → 2027-05-24 (-1d) | 67.93d → 71.06d |
| A20180 | Mueble lavadero | 2027-05-25 → 2027-05-24 (-1d) | 2027-06-01 → 2027-05-28 (-4d) | 67.93d → 71.06d |
| A20190 | Muebles de baño | 2027-06-01 → 2027-05-28 (-4d) | 2027-06-24 → 2027-06-23 (-1d) | 67.93d → 71.06d |
| A20200 | Closets | 2027-06-24 → 2027-06-23 (-1d) | 2027-06-30 → 2027-06-29 (-1d) | 67.93d → 71.06d |
| A20210 | Muebles de lino | 2027-06-30 → 2027-06-29 (-1d) | 2027-07-13 → 2027-07-12 (-1d) | 67.93d → 71.06d |
| A20220 | Puertas | 2027-07-13 → 2027-07-12 (-1d) | 2027-07-30 → 2027-07-29 (-1d) | 67.93d → 71.06d |
| P09 | **Piso 09** | 2027-06-03 → 2027-06-02 (-1d) | 2027-08-03 → 2027-08-02 (-1d) |  |
| A20230 | Muebles de cocina | 2027-06-03 → 2027-06-02 (-1d) | 2027-06-09 → 2027-06-08 (-1d) | 64.93d → 68.06d |
| A20240 | Mueble lavadero | 2027-06-09 → 2027-06-08 (-1d) | 2027-06-14 → 2027-06-11 (-3d) | 64.93d → 68.06d |
| A20250 | Muebles de baño | 2027-06-14 → 2027-06-11 (-3d) | 2027-07-02 → 2027-07-01 (-1d) | 64.93d → 68.06d |
| A20260 | Closets | 2027-07-02 → 2027-07-01 (-1d) | 2027-07-08 → 2027-07-07 (-1d) | 64.93d → 68.06d |
| A20270 | Muebles de lino | 2027-07-08 → 2027-07-07 (-1d) | 2027-07-19 → 2027-07-16 (-3d) | 64.93d → 68.06d |
| A20280 | Puertas | 2027-07-19 → 2027-07-16 (-3d) | 2027-08-03 → 2027-08-02 (-1d) | 64.93d → 68.06d |
| P10 | **Piso 10** | 2027-06-18 → 2027-06-17 (-1d) | 2027-08-18 → 2027-08-17 (-1d) |  |
| A20290 | Muebles de cocina | 2027-06-18 → 2027-06-17 (-1d) | 2027-06-23 → 2027-06-22 (-1d) | 59.93d → 63.06d |
| A20300 | Mueble lavadero | 2027-06-23 → 2027-06-22 (-1d) | 2027-06-28 → 2027-06-25 (-3d) | 59.93d → 63.06d |
| A20310 | Muebles de baño | 2027-06-28 → 2027-06-25 (-3d) | 2027-07-19 → 2027-07-16 (-3d) | 59.93d → 63.06d |
| A20320 | Closets | 2027-07-19 → 2027-07-16 (-3d) | 2027-07-23 → 2027-07-22 (-1d) | 59.93d → 63.06d |
| A20330 | Muebles de lino | 2027-07-23 → 2027-07-22 (-1d) | 2027-08-03 → 2027-08-02 (-1d) | 59.93d → 63.06d |
| A20340 | Puertas | 2027-08-03 → 2027-08-02 (-1d) | 2027-08-18 → 2027-08-17 (-1d) | 59.93d → 63.06d |
| P11 | **Piso 11** | 2027-07-02 → 2027-07-01 (-1d) | 2027-08-27 → 2027-08-26 (-1d) |  |
| A20350 | Muebles de cocina | 2027-07-02 → 2027-07-01 (-1d) | 2027-07-08 → 2027-07-07 (-1d) | 31.93d → 35.06d |
| A20360 | Mueble lavadero | 2027-07-08 → 2027-07-07 (-1d) | 2027-07-13 → 2027-07-12 (-1d) | 31.93d → 35.06d |
| A20370 | Muebles de baño | 2027-07-13 → 2027-07-12 (-1d) | 2027-08-02 → 2027-07-30 (-3d) | 31.93d → 35.06d |
| A20380 | Closets | 2027-08-02 → 2027-07-30 (-3d) | 2027-08-05 → 2027-08-04 (-1d) | 31.93d → 35.06d |
| A20390 | Muebles de lino | 2027-08-05 → 2027-08-04 (-1d) | 2027-08-13 → 2027-08-12 (-1d) | 31.93d → 35.06d |
| A20400 | Puertas | 2027-08-13 → 2027-08-12 (-1d) | 2027-08-27 → 2027-08-26 (-1d) | 31.93d → 35.06d |
| P12 | **Piso 12** | 2027-07-19 → 2027-07-16 (-3d) | 2027-09-10 → 2027-09-09 (-1d) |  |
| A20410 | Muebles de cocina | 2027-07-19 → 2027-07-16 (-3d) | 2027-07-23 → 2027-07-22 (-1d) | 66.93d → 70.06d |

| ID | Task | Start | Finish | Total float |
| --- | --- | --- | --- | --- |
| A20420 | Mueble lavadero | 2027-07-23 → 2027-07-22 (-1d) | 2027-07-28 → 2027-07-27 (-1d) | 66.93d → 70.06d |
| A20430 | Muebles de baño | 2027-07-28 → 2027-07-27 (-1d) | 2027-08-17 → 2027-08-13 (-4d) | 66.93d → 70.06d |
| A20440 | Closets | 2027-08-17 → 2027-08-13 (-4d) | 2027-08-20 → 2027-08-19 (-1d) | 66.93d → 70.06d |
| A20450 | Muebles de lino | 2027-08-20 → 2027-08-19 (-1d) | 2027-08-30 → 2027-08-27 (-3d) | 66.93d → 70.06d |
| A20460 | Puertas | 2027-08-30 → 2027-08-27 (-3d) | 2027-09-10 → 2027-09-09 (-1d) | 66.93d → 70.06d |
| P13 | **Piso 13** | 2027-08-03 → 2027-08-02 (-1d) | 2027-09-22 → 2027-09-21 (-1d) |  |
| A20470 | Muebles de cocina | 2027-08-03 → 2027-08-02 (-1d) | 2027-08-06 → 2027-08-05 (-1d) | 55.93d → 59.06d |
| A20480 | Mueble lavadero | 2027-08-06 → 2027-08-05 (-1d) | 2027-08-11 → 2027-08-10 (-1d) | 55.93d → 59.06d |
| A20490 | Muebles de baño | 2027-08-11 → 2027-08-10 (-1d) | 2027-08-30 → 2027-08-27 (-3d) | 55.93d → 59.06d |
| A20500 | Closets | 2027-08-30 → 2027-08-27 (-3d) | 2027-09-02 → 2027-09-01 (-1d) | 55.93d → 59.06d |
| A20510 | Muebles de lino | 2027-09-02 → 2027-09-01 (-1d) | 2027-09-10 → 2027-09-09 (-1d) | 55.93d → 59.06d |
| A20520 | Puertas | 2027-09-10 → 2027-09-09 (-1d) | 2027-09-22 → 2027-09-21 (-1d) | 55.93d → 59.06d |
| P14 | **Piso 14** | 2027-08-18 → 2027-08-17 (-1d) | 2027-10-06 → 2027-10-05 (-1d) |  |
| A20530 | Muebles de cocina | 2027-08-18 → 2027-08-17 (-1d) | 2027-08-23 → 2027-08-20 (-3d) | 50.93d → 54.06d |
| A20540 | Mueble lavadero | 2027-08-23 → 2027-08-20 (-3d) | 2027-08-26 → 2027-08-25 (-1d) | 50.93d → 54.06d |
| A20550 | Muebles de baño | 2027-08-26 → 2027-08-25 (-1d) | 2027-09-13 → 2027-09-10 (-3d) | 50.93d → 54.06d |
| A20560 | Closets | 2027-09-13 → 2027-09-10 (-3d) | 2027-09-16 → 2027-09-15 (-1d) | 50.93d → 54.06d |
| A20570 | Muebles de lino | 2027-09-16 → 2027-09-15 (-1d) | 2027-09-24 → 2027-09-23 (-1d) | 50.93d → 54.06d |
| A20580 | Puertas | 2027-09-24 → 2027-09-23 (-1d) | 2027-10-06 → 2027-10-05 (-1d) | 50.93d → 54.06d |
| P15 | **Piso 15** | 2027-09-01 → 2027-08-31 (-1d) | 2027-10-11 → 2027-10-08 (-3d) |  |
| A20590 | Muebles de cocina | 2027-09-01 → 2027-08-31 (-1d) | 2027-09-03 → 2027-09-02 (-1d) | 39.93d → 43.06d |
| A20600 | Mueble lavadero | 2027-09-03 → 2027-09-02 (-1d) | 2027-09-07 → 2027-09-06 (-1d) | 39.93d → 43.06d |
| A20610 | Muebles de baño | 2027-09-07 → 2027-09-06 (-1d) | 2027-09-21 → 2027-09-20 (-1d) | 39.93d → 43.06d |
| A20620 | Closets | 2027-09-21 → 2027-09-20 (-1d) | 2027-09-23 → 2027-09-22 (-1d) | 39.93d → 43.06d |
| A20630 | Muebles de lino | 2027-09-23 → 2027-09-22 (-1d) | 2027-09-30 → 2027-09-29 (-1d) | 39.93d → 43.06d |
| A20640 | Puertas | 2027-09-30 → 2027-09-29 (-1d) | 2027-10-11 → 2027-10-08 (-3d) | 39.93d → 43.06d |
| P16 | **Piso 16** | 2027-09-15 → 2027-09-14 (-1d) | 2027-10-26 → 2027-10-25 (-1d) |  |
| A20650 | Muebles de cocina | 2027-09-15 → 2027-09-14 (-1d) | 2027-09-17 → 2027-09-16 (-1d) | 34.93d → 38.06d |
| A20660 | Mueble lavadero | 2027-09-17 → 2027-09-16 (-1d) | 2027-09-21 → 2027-09-20 (-1d) | 34.93d → 38.06d |
| A20670 | Muebles de baño | 2027-09-21 → 2027-09-20 (-1d) | 2027-10-05 → 2027-10-04 (-1d) | 34.93d → 38.06d |
| A20680 | Closets | 2027-10-05 → 2027-10-04 (-1d) | 2027-10-07 → 2027-10-06 (-1d) | 34.93d → 38.06d |
| A20690 | Muebles de lino | 2027-10-07 → 2027-10-06 (-1d) | 2027-10-14 → 2027-10-13 (-1d) | 34.93d → 38.06d |
| A20700 | Puertas | 2027-10-14 → 2027-10-13 (-1d) | 2027-10-26 → 2027-10-25 (-1d) | 34.93d → 38.06d |
| Mesones | **Mesones** | 2027-04-01 → 2027-03-31 (-1d) | 2027-11-03 → 2027-11-02 (-1d) |  |
| P03 | **Piso 03** | 2027-04-01 → 2027-03-31 (-1d) | 2027-04-27 → 2027-04-26 (-1d) |  |
| A20710 | Mesones de baño | 2027-04-01 → 2027-03-31 (-1d) | 2027-04-07 → 2027-04-06 (-1d) | 168.93d → 96.36d |
| A20720 | Mesones de cocina | 2027-04-05 → 2027-04-02 (-3d) | 2027-04-27 → 2027-04-26 (-1d) | 231.93d → 144.36d |
| P04 | **Piso 04** | 2027-05-12 → 2027-05-11 (-1d) | 2027-06-09 → 2027-06-08 (-1d) |  |
| A20750 | Mesones de baño | 2027-05-12 → 2027-05-11 (-1d) | 2027-05-18 → 2027-05-17 (-1d) | 125.93d → 129.06d |
| A20760 | Mesones de cocina | 2027-05-14 → 2027-05-13 (-1d) | 2027-06-09 → 2027-06-08 (-1d) | 203.93d → 207.06d |
| P05 | **Piso 05** | 2027-05-28 → 2027-05-27 (-1d) | 2027-06-25 → 2027-06-24 (-1d) |  |
| A20770 | Mesones de baño | 2027-05-28 → 2027-05-27 (-1d) | 2027-06-04 → 2027-06-03 (-1d) | 108.93d → 112.06d |
| A20780 | Mesones de cocina | 2027-06-02 → 2027-06-01 (-1d) | 2027-06-25 → 2027-06-24 (-1d) | 191.93d → 195.06d |
| P06 | **Piso 06** | 2027-06-17 → 2027-06-16 (-1d) | 2027-07-14 → 2027-07-13 (-1d) |  |
| A20790 | Mesones de baño | 2027-06-17 → 2027-06-16 (-1d) | 2027-06-23 → 2027-06-22 (-1d) | 93.93d → 97.06d |
| A20800 | Mesones de cocina | 2027-06-21 → 2027-06-18 (-3d) | 2027-07-14 → 2027-07-13 (-1d) | 179.93d → 183.06d |
| P07 | **Piso 07** | 2027-07-06 → 2027-07-02 (-4d) | 2027-08-02 → 2027-07-30 (-3d) |  |
| A20810 | Mesones de baño | 2027-07-06 → 2027-07-02 (-4d) | 2027-07-12 → 2027-07-09 (-3d) | 77.93d → 91.06d |
| A20820 | Mesones de cocina | 2027-07-08 → 2027-07-07 (-1d) | 2027-08-02 → 2027-07-30 (-3d) | 167.93d → 171.06d |
| P08 | **Piso 08** | 2027-07-23 → 2027-07-22 (-1d) | 2027-08-19 → 2027-08-18 (-1d) |  |
| A20840 | Mesones de baño | 2027-07-23 → 2027-07-22 (-1d) | 2027-07-29 → 2027-07-28 (-1d) | 67.93d → 71.06d |
| A20850 | Mesones de cocina | 2027-07-27 → 2027-07-26 (-1d) | 2027-08-19 → 2027-08-18 (-1d) | 155.93d → 159.06d |
| P09 | **Piso 09** | 2027-07-27 → 2027-07-26 (-1d) | 2027-08-18 → 2027-08-17 (-1d) |  |
| A20860 | Mesones de baño | 2027-07-27 → 2027-07-26 (-1d) | 2027-07-30 → 2027-07-29 (-1d) | 64.93d → 68.06d |
| A20870 | Mesones de cocina | 2027-07-28 → 2027-07-27 (-1d) | 2027-08-18 → 2027-08-17 (-1d) | 156.93d → 160.06d |
| P10 | **Piso 10** | 2027-08-10 → 2027-08-09 (-1d) | 2027-09-01 → 2027-08-31 (-1d) |  |
| A20880 | Mesones de baño | 2027-08-10 → 2027-08-09 (-1d) | 2027-08-13 → 2027-08-12 (-1d) | 59.93d → 63.06d |
| A20890 | Mesones de cocina | 2027-08-11 → 2027-08-10 (-1d) | 2027-09-01 → 2027-08-31 (-1d) | 146.93d → 150.06d |
| P11 | **Piso 11** | 2027-08-20 → 2027-08-19 (-1d) | 2027-09-09 → 2027-09-08 (-1d) |  |
| A20900 | Mesones de baño | 2027-08-20 → 2027-08-19 (-1d) | 2027-08-25 → 2027-08-24 (-1d) | 31.93d → 35.06d |
| A20910 | Mesones de cocina | 2027-08-23 → 2027-08-20 (-3d) | 2027-09-09 → 2027-09-08 (-1d) | 140.93d → 144.06d |
| P12 | **Piso 12** | 2027-09-03 → 2027-09-02 (-1d) | 2027-09-23 → 2027-09-22 (-1d) |  |
| A20920 | Mesones de baño | 2027-09-03 → 2027-09-02 (-1d) | 2027-09-08 → 2027-09-07 (-1d) | 66.93d → 70.06d |
| A20930 | Mesones de cocina | 2027-09-06 → 2027-09-03 (-3d) | 2027-09-23 → 2027-09-22 (-1d) | 130.93d → 134.06d |
| P13 | **Piso 13** | 2027-09-15 → 2027-09-14 (-1d) | 2027-10-04 → 2027-10-01 (-3d) |  |
| A20940 | Mesones de baño | 2027-09-15 → 2027-09-14 (-1d) | 2027-09-20 → 2027-09-17 (-3d) | 55.93d → 59.06d |
| A20950 | Mesones de cocina | 2027-09-16 → 2027-09-15 (-1d) | 2027-10-04 → 2027-10-01 (-3d) | 123.93d → 127.06d |
| P14 | **Piso 14** | 2027-09-29 → 2027-09-28 (-1d) | 2027-10-19 → 2027-10-15 (-4d) |  |
| A20960 | Mesones de baño | 2027-09-29 → 2027-09-28 (-1d) | 2027-10-04 → 2027-10-01 (-3d) | 50.93d → 54.06d |
| A20970 | Mesones de cocina | 2027-09-30 → 2027-09-29 (-1d) | 2027-10-19 → 2027-10-15 (-4d) | 113.93d → 117.06d |

| ID | Task | Start | Finish | Total float |
| --- | --- | --- | --- | --- |
| P15 | **Piso 15** | 2027-10-04 → 2027-10-01 (-3d) | 2027-10-19 → 2027-10-15 (-4d) |  |
| A20980 | Mesones de baño | 2027-10-04 → 2027-10-01 (-3d) | 2027-10-06 → 2027-10-05 (-1d) | 39.93d → 43.06d |
| A20990 | Mesones de cocina | 2027-10-04 → 2027-10-01 (-3d) | 2027-10-19 → 2027-10-15 (-4d) | 113.93d → 117.06d |
| P16 | **Piso 16** | 2027-10-19 → 2027-10-15 (-4d) | 2027-11-03 → 2027-11-02 (-1d) |  |
| A21000 | Mesones de baño | 2027-10-19 → 2027-10-15 (-4d) | 2027-10-21 → 2027-10-20 (-1d) | 34.93d → 38.06d |
| A21010 | Mesones de cocina | 2027-10-19 → 2027-10-15 (-4d) | 2027-11-03 → 2027-11-02 (-1d) | 103.93d → 107.06d |
| Inst. Baranda Divisiones Banos y Espejos | **Inst. Baranda Divisiones Banos y Espejos** | 2027-04-21 → 2027-04-20 (-1d) | 2027-12-02 → 2027-12-01 (-1d) |  |
| P03 | **Piso 03** | 2027-04-21 → 2027-04-20 (-1d) | 2027-07-01 → 2027-06-30 (-1d) |  |
| A21020 | Division de duchas | 2027-04-21 → 2027-04-20 (-1d) | 2027-05-20 → 2027-05-19 (-1d) | 168.93d → 96.36d |
| A21030 | Espejos de baño | 2027-04-27 → 2027-04-26 (-1d) | 2027-05-14 → 2027-05-13 (-1d) | 219.93d → 223.06d |
| A21040 | Barandas balcon | 2027-05-20 → 2027-05-19 (-1d) | 2027-07-01 → 2027-06-30 (-1d) | 187.93d → 191.06d |
| P04 | **Piso 04** | 2027-05-18 → 2027-05-17 (-1d) | 2027-07-29 → 2027-07-28 (-1d) |  |
| A21080 | Division de duchas | 2027-05-18 → 2027-05-17 (-1d) | 2027-06-17 → 2027-06-16 (-1d) | 125.93d → 129.06d |
| A21090 | Espejos de baño | 2027-05-24 → 2027-05-21 (-3d) | 2027-06-11 → 2027-06-10 (-1d) | 201.93d → 205.06d |
| A21100 | Barandas balcon | 2027-06-17 → 2027-06-16 (-1d) | 2027-07-29 → 2027-07-28 (-1d) | 169.93d → 173.06d |
| P05 | **Piso 05** | 2027-06-04 → 2027-06-03 (-1d) | 2027-08-17 → 2027-08-13 (-4d) |  |
| A21050 | Division de duchas | 2027-06-04 → 2027-06-03 (-1d) | 2027-07-06 → 2027-07-02 (-4d) | 108.93d → 112.06d |
| A21060 | Espejos de baño | 2027-06-11 → 2027-06-10 (-1d) | 2027-06-29 → 2027-06-28 (-1d) | 189.93d → 193.06d |
| A21070 | Barandas balcon | 2027-07-06 → 2027-07-02 (-4d) | 2027-08-17 → 2027-08-13 (-4d) | 157.93d → 161.06d |
| P06 | **Piso 06** | 2027-06-23 → 2027-06-22 (-1d) | 2027-09-02 → 2027-09-01 (-1d) |  |
| A21110 | Division de duchas | 2027-06-23 → 2027-06-22 (-1d) | 2027-07-23 → 2027-07-22 (-1d) | 93.93d → 97.06d |
| A21120 | Espejos de baño | 2027-06-29 → 2027-06-28 (-1d) | 2027-07-16 → 2027-07-15 (-1d) | 177.93d → 181.06d |
| A21130 | Barandas balcon | 2027-07-23 → 2027-07-22 (-1d) | 2027-09-02 → 2027-09-01 (-1d) | 145.93d → 149.06d |
| P07 | **Piso 07** | 2027-07-12 → 2027-07-09 (-3d) | 2027-09-20 → 2027-09-17 (-3d) |  |
| A21140 | Division de duchas | 2027-07-12 → 2027-07-09 (-3d) | 2027-08-10 → 2027-08-09 (-1d) | 77.93d → 91.06d |
| A21150 | Espejos de baño | 2027-07-16 → 2027-07-15 (-1d) | 2027-08-04 → 2027-08-03 (-1d) | 165.93d → 169.06d |
| A21160 | Barandas balcon | 2027-08-10 → 2027-08-09 (-1d) | 2027-09-20 → 2027-09-17 (-3d) | 133.93d → 137.06d |
| P08 | **Piso 08** | 2027-07-29 → 2027-07-28 (-1d) | 2027-10-06 → 2027-10-05 (-1d) |  |
| A21170 | Division de duchas | 2027-07-29 → 2027-07-28 (-1d) | 2027-08-27 → 2027-08-26 (-1d) | 67.93d → 71.06d |
| A21180 | Espejos de baño | 2027-08-04 → 2027-08-03 (-1d) | 2027-08-23 → 2027-08-20 (-3d) | 153.93d → 157.06d |
| A21190 | Barandas balcon | 2027-08-27 → 2027-08-26 (-1d) | 2027-10-06 → 2027-10-05 (-1d) | 121.93d → 125.06d |
| P09 | **Piso 09** | 2027-07-30 → 2027-07-29 (-1d) | 2027-09-29 → 2027-09-28 (-1d) |  |
| A21200 | Division de duchas | 2027-07-30 → 2027-07-29 (-1d) | 2027-08-25 → 2027-08-24 (-1d) | 64.93d → 68.06d |
| A21210 | Espejos de baño | 2027-08-05 → 2027-08-04 (-1d) | 2027-08-19 → 2027-08-18 (-1d) | 155.93d → 159.06d |
| A21220 | Barandas balcon | 2027-08-25 → 2027-08-24 (-1d) | 2027-09-29 → 2027-09-28 (-1d) | 126.93d → 130.06d |
| P10 | **Piso 10** | 2027-08-13 → 2027-08-12 (-1d) | 2027-10-13 → 2027-10-12 (-1d) |  |
| A21230 | Division de duchas | 2027-08-13 → 2027-08-12 (-1d) | 2027-09-08 → 2027-09-07 (-1d) | 59.93d → 63.06d |
| A21240 | Espejos de baño | 2027-08-20 → 2027-08-19 (-1d) | 2027-09-02 → 2027-09-01 (-1d) | 145.93d → 149.06d |
| A21250 | Barandas balcon | 2027-09-08 → 2027-09-07 (-1d) | 2027-10-13 → 2027-10-12 (-1d) | 116.93d → 120.06d |
| P11 | **Piso 11** | 2027-08-25 → 2027-08-24 (-1d) | 2027-10-19 → 2027-10-15 (-4d) |  |
| A21260 | Division de duchas | 2027-08-25 → 2027-08-24 (-1d) | 2027-09-15 → 2027-09-14 (-1d) | 31.93d → 35.06d |
| A21270 | Espejos de baño | 2027-08-31 → 2027-08-30 (-1d) | 2027-09-13 → 2027-09-10 (-3d) | 138.93d → 142.06d |
| A21280 | Barandas balcon | 2027-09-15 → 2027-09-14 (-1d) | 2027-10-19 → 2027-10-15 (-4d) | 113.93d → 117.06d |
| P12 | **Piso 12** | 2027-09-08 → 2027-09-07 (-1d) | 2027-11-03 → 2027-11-02 (-1d) |  |
| A21290 | Division de duchas | 2027-09-08 → 2027-09-07 (-1d) | 2027-09-29 → 2027-09-28 (-1d) | 66.93d → 70.06d |
| A21300 | Espejos de baño | 2027-09-14 → 2027-09-13 (-1d) | 2027-09-27 → 2027-09-24 (-3d) | 128.93d → 132.06d |
| A21310 | Barandas balcon | 2027-09-29 → 2027-09-28 (-1d) | 2027-11-03 → 2027-11-02 (-1d) | 103.93d → 107.06d |
| P13 | **Piso 13** | 2027-09-20 → 2027-09-17 (-3d) | 2027-11-11 → 2027-11-10 (-1d) |  |
| A21320 | Division de duchas | 2027-09-20 → 2027-09-17 (-3d) | 2027-10-11 → 2027-10-08 (-3d) | 55.93d → 59.06d |
| A21330 | Espejos de baño | 2027-09-24 → 2027-09-23 (-1d) | 2027-10-07 → 2027-10-06 (-1d) | 120.93d → 124.06d |
| A21340 | Barandas balcon | 2027-10-11 → 2027-10-08 (-3d) | 2027-11-11 → 2027-11-10 (-1d) | 97.93d → 101.06d |
| P14 | **Piso 14** | 2027-10-04 → 2027-10-01 (-3d) | 2027-11-26 → 2027-11-25 (-1d) |  |
| A21350 | Division de duchas | 2027-10-04 → 2027-10-01 (-3d) | 2027-10-26 → 2027-10-25 (-1d) | 50.93d → 54.06d |
| A21360 | Espejos de baño | 2027-10-08 → 2027-10-07 (-1d) | 2027-10-22 → 2027-10-21 (-1d) | 110.93d → 114.06d |
| A21370 | Barandas balcon | 2027-10-26 → 2027-10-25 (-1d) | 2027-11-26 → 2027-11-25 (-1d) | 87.93d → 91.06d |
| P15 | **Piso 15** | 2027-10-06 → 2027-10-05 (-1d) | 2027-11-22 → 2027-11-19 (-3d) |  |
| A21380 | Division de duchas | 2027-10-06 → 2027-10-05 (-1d) | 2027-10-25 → 2027-10-22 (-3d) | 39.93d → 43.06d |
| A21390 | Espejos de baño | 2027-10-12 → 2027-10-11 (-1d) | 2027-10-21 → 2027-10-20 (-1d) | 111.93d → 115.06d |
| A21400 | Barandas balcon | 2027-10-25 → 2027-10-22 (-3d) | 2027-11-22 → 2027-11-19 (-3d) | 91.93d → 95.06d |
| P16 | **Piso 16** | 2027-10-28 → 2027-10-27 (-1d) | 2027-12-02 → 2027-12-01 (-1d) |  |
| A21410 | Division de duchas | 2027-10-28 → 2027-10-27 (-1d) | 2027-11-17 → 2027-11-16 (-1d) | 34.93d → 38.06d |
| A21420 | Espejos de baño | 2027-11-04 → 2027-11-03 (-1d) | 2027-11-12 → 2027-11-11 (-1d) | 96.93d → 100.06d |
| A21430 | Barandas balcon 1 | 2027-11-17 → 2027-11-16 (-1d) | 2027-11-29 → 2027-11-26 (-3d) | 83.93d → 87.06d |
| A21440 | Barandas balcon 2 | 2027-11-22 → 2027-11-19 (-3d) | 2027-12-02 → 2027-12-01 (-1d) | 83.93d → 87.06d |
| Dotacion | **Dotacion** | 2027-04-21 → 2027-04-20 (-1d) | 2028-01-27 → 2028-01-26 (-1d) |  |
| P03 | **Piso 03** | 2027-04-21 → 2027-04-20 (-1d) | 2027-07-12 → 2027-07-09 (-3d) |  |
| A21450 | Aparatos sanitarios y griferias | 2027-04-21 → 2027-04-20 (-1d) | 2027-06-21 → 2027-06-18 (-3d) | 168.93d → 96.36d |
| A21460 | Aparatos electricos y comunicaciones | 2027-05-20 → 2027-05-19 (-1d) | 2027-06-23 → 2027-06-22 (-1d) | 168.93d → 96.36d |
| A21470 | Gasodomesticos | 2027-06-09 → 2027-06-08 (-1d) | 2027-07-12 → 2027-07-09 (-3d) | 181.93d → 185.06d |
| P04 | **Piso 04** | 2027-05-18 → 2027-05-17 (-1d) | 2027-08-06 → 2027-08-05 (-1d) |  |

| ID | Task | Start | Finish | Total float |
| --- | --- | --- | --- | --- |
| A21480 | Aparatos sanitarios y griferias | 2027-05-18 → 2027-05-17 (-1d) | 2027-07-16 → 2027-07-15 (-1d) | 125.93d → 129.06d |
| A21490 | Aparatos electricos y comunicaciones | 2027-06-17 → 2027-06-16 (-1d) | 2027-07-21 → 2027-07-19 (-2d) | 125.93d → 129.06d |
| A21500 | Gasodomesticos | 2027-07-06 → 2027-07-02 (-4d) | 2027-08-06 → 2027-08-05 (-1d) | 163.93d → 167.06d |
| P05 | **Piso 05** | 2027-06-04 → 2027-06-03 (-1d) | 2027-08-25 → 2027-08-24 (-1d) |  |
| A21510 | Aparatos sanitarios y griferias | 2027-06-04 → 2027-06-03 (-1d) | 2027-08-04 → 2027-08-03 (-1d) | 108.93d → 112.06d |
| A21520 | Aparatos electricos y comunicaciones | 2027-07-06 → 2027-07-02 (-4d) | 2027-08-06 → 2027-08-05 (-1d) | 108.93d → 112.06d |
| A21530 | Gasodomesticos | 2027-07-23 → 2027-07-22 (-1d) | 2027-08-25 → 2027-08-24 (-1d) | 151.93d → 155.06d |
| P06 | **Piso 06** | 2027-06-23 → 2027-06-22 (-1d) | 2027-09-10 → 2027-09-09 (-1d) |  |
| A21540 | Aparatos sanitarios y griferias | 2027-06-23 → 2027-06-22 (-1d) | 2027-08-23 → 2027-08-20 (-3d) | 93.93d → 97.06d |
| A21550 | Aparatos electricos y comunicaciones | 2027-07-23 → 2027-07-22 (-1d) | 2027-08-25 → 2027-08-24 (-1d) | 93.93d → 97.06d |
| A21560 | Gasodomesticos | 2027-08-10 → 2027-08-09 (-1d) | 2027-09-10 → 2027-09-09 (-1d) | 139.93d → 143.06d |
| P07 | **Piso 07** | 2027-07-12 → 2027-07-09 (-3d) | 2027-09-28 → 2027-09-27 (-1d) |  |
| A21570 | Aparatos sanitarios y griferias | 2027-07-12 → 2027-07-09 (-3d) | 2027-09-08 → 2027-09-07 (-1d) | 77.93d → 91.06d |
| A21580 | Aparatos electricos y comunicaciones | 2027-08-10 → 2027-08-09 (-1d) | 2027-09-10 → 2027-09-09 (-1d) | 77.93d → 91.06d |
| A21590 | Gasodomesticos | 2027-08-27 → 2027-08-26 (-1d) | 2027-09-28 → 2027-09-27 (-1d) | 127.93d → 131.06d |
| P08 | **Piso 08** | 2027-07-29 → 2027-07-28 (-1d) | 2027-10-14 → 2027-10-13 (-1d) |  |
| A21600 | Aparatos sanitarios y griferias | 2027-07-29 → 2027-07-28 (-1d) | 2027-09-24 → 2027-09-23 (-1d) | 67.93d → 71.06d |
| A21610 | Aparatos electricos y comunicaciones | 2027-08-27 → 2027-08-26 (-1d) | 2027-09-28 → 2027-09-27 (-1d) | 67.93d → 71.06d |
| A21620 | Gasodomesticos | 2027-09-14 → 2027-09-13 (-1d) | 2027-10-14 → 2027-10-13 (-1d) | 115.93d → 119.06d |
| P09 | **Piso 09** | 2027-07-27 → 2027-07-26 (-1d) | 2027-09-30 → 2027-09-29 (-1d) |  |
| A21630 | Aparatos sanitarios y griferias | 2027-07-27 → 2027-07-26 (-1d) | 2027-09-14 → 2027-09-13 (-1d) | 64.93d → 68.06d |
| A21640 | Aparatos electricos y comunicaciones | 2027-08-24 → 2027-08-23 (-1d) | 2027-09-16 → 2027-09-15 (-1d) | 64.93d → 68.06d |
| A21650 | Gasodomesticos | 2027-09-07 → 2027-09-06 (-1d) | 2027-09-30 → 2027-09-29 (-1d) | 125.93d → 129.06d |
| P10 | **Piso 10** | 2027-08-10 → 2027-08-09 (-1d) | 2027-10-14 → 2027-10-13 (-1d) |  |
| A21660 | Aparatos sanitarios y griferias | 2027-08-10 → 2027-08-09 (-1d) | 2027-09-28 → 2027-09-27 (-1d) | 59.93d → 63.06d |
| A21670 | Aparatos electricos y comunicaciones | 2027-09-07 → 2027-09-06 (-1d) | 2027-09-30 → 2027-09-29 (-1d) | 59.93d → 63.06d |
| A21680 | Gasodomesticos | 2027-09-21 → 2027-09-20 (-1d) | 2027-10-14 → 2027-10-13 (-1d) | 115.93d → 119.06d |
| P11 | **Piso 11** | 2027-08-18 → 2027-08-17 (-1d) | 2027-10-22 → 2027-10-21 (-1d) |  |
| A21690 | Aparatos sanitarios y griferias | 2027-08-18 → 2027-08-17 (-1d) | 2027-10-05 → 2027-10-04 (-1d) | 31.93d → 35.06d |
| A21700 | Aparatos electricos y comunicaciones | 2027-09-14 → 2027-09-13 (-1d) | 2027-10-07 → 2027-10-06 (-1d) | 31.93d → 35.06d |
| A21710 | Gasodomesticos | 2027-09-28 → 2027-09-27 (-1d) | 2027-10-22 → 2027-10-21 (-1d) | 110.93d → 114.06d |
| P12 | **Piso 12** | 2027-09-01 → 2027-08-31 (-1d) | 2027-11-08 → 2027-11-05 (-3d) |  |
| A21720 | Aparatos sanitarios y griferias | 2027-09-01 → 2027-08-31 (-1d) | 2027-10-20 → 2027-10-19 (-1d) | 66.93d → 70.06d |
| A21730 | Aparatos electricos y comunicaciones | 2027-09-28 → 2027-09-27 (-1d) | 2027-10-22 → 2027-10-21 (-1d) | 66.93d → 70.06d |
| A21740 | Gasodomesticos | 2027-10-12 → 2027-10-11 (-1d) | 2027-11-08 → 2027-11-05 (-3d) | 100.93d → 104.06d |
| P13 | **Piso 13** | 2027-09-13 → 2027-09-10 (-3d) | 2027-11-18 → 2027-11-17 (-1d) |  |
| A21750 | Aparatos sanitarios y griferias | 2027-09-13 → 2027-09-10 (-3d) | 2027-10-26 → 2027-10-25 (-1d) | 55.93d → 59.06d |
| A21760 | Aparatos electricos y comunicaciones | 2027-10-11 → 2027-10-08 (-3d) | 2027-11-03 → 2027-11-02 (-1d) | 55.93d → 59.06d |
| A21770 | Gasodomesticos | 2027-10-26 → 2027-10-25 (-1d) | 2027-11-18 → 2027-11-17 (-1d) | 93.93d → 97.06d |
| P14 | **Piso 14** | 2027-09-27 → 2027-09-24 (-3d) | 2027-12-02 → 2027-12-01 (-1d) |  |
| A21780 | Aparatos sanitarios y griferias | 2027-09-27 → 2027-09-24 (-3d) | 2027-11-10 → 2027-11-09 (-1d) | 50.93d → 54.06d |
| A21790 | Aparatos electricos y comunicaciones | 2027-10-26 → 2027-10-25 (-1d) | 2027-11-18 → 2027-11-17 (-1d) | 50.93d → 54.06d |
| A21800 | Gasodomesticos | 2027-11-10 → 2027-11-09 (-1d) | 2027-12-02 → 2027-12-01 (-1d) | 83.93d → 87.06d |
| P15 | **Piso 15** | 2027-09-24 → 2027-09-23 (-1d) | 2027-12-13 → 2027-12-10 (-3d) |  |
| A21810 | Aparatos sanitarios y griferias | 2027-09-24 → 2027-09-23 (-1d) | 2027-10-29 → 2027-10-28 (-1d) | 39.93d → 43.06d |
| A21820 | Aparatos electricos y comunicaciones | 2027-10-29 → 2027-10-28 (-1d) | 2027-11-22 → 2027-11-19 (-3d) | 39.93d → 43.06d |
| A21830 | Gasodomesticos | 2027-11-22 → 2027-11-19 (-3d) | 2027-12-13 → 2027-12-10 (-3d) | 77.93d → 81.06d |
| P16 | **Piso 16** | 2027-10-15 → 2027-10-14 (-1d) | 2028-01-27 → 2028-01-26 (-1d) |  |
| A21840 | Aparatos sanitarios y griferias | 2027-10-15 → 2027-10-14 (-1d) | 2027-11-23 → 2027-11-22 (-1d) | 34.93d → 38.06d |
| A21850 | Aparatos electricos y comunicaciones | 2027-11-08 → 2027-11-05 (-3d) | 2027-11-29 → 2027-11-26 (-3d) | 34.93d → 38.06d |
| A21860 | Gasodomesticos | 2027-11-22 → 2027-11-19 (-3d) | 2027-12-13 → 2027-12-10 (-3d) | 56.93d → 60.06d |
| A21870 | Jaccuzzi | 2027-12-13 → 2027-12-10 (-3d) | 2028-01-20 → 2028-01-19 (-1d) | 56.93d → 60.06d |
| A21880 | BBQ | 2028-01-20 → 2028-01-19 (-1d) | 2028-01-27 → 2028-01-26 (-1d) | 56.93d → 60.06d |
| Estuco y Pintura-03 | **Estuco y Pintura-03** | 2027-05-07 → 2027-05-06 (-1d) | 2028-02-10 → 2028-02-09 (-1d) |  |
| P03 | **Piso 03** | 2027-05-07 → 2027-05-06 (-1d) | 2027-06-15 → 2027-06-14 (-1d) |  |
| A21890 | Tercera Mano de pintura | 2027-05-07 → 2027-05-06 (-1d) | 2027-06-15 → 2027-06-14 (-1d) | 168.93d → 96.36d |
| P04 | **Piso 04** | 2027-07-06 → 2027-07-02 (-4d) | 2027-08-10 → 2027-08-09 (-1d) |  |
| A21900 | Tercera Mano de pintura | 2027-07-06 → 2027-07-02 (-4d) | 2027-08-10 → 2027-08-09 (-1d) | 125.93d → 129.06d |
| P05 | **Piso 05** | 2027-07-23 → 2027-07-22 (-1d) | 2027-08-27 → 2027-08-26 (-1d) |  |
| A21910 | Tercera Mano de pintura | 2027-07-23 → 2027-07-22 (-1d) | 2027-08-27 → 2027-08-26 (-1d) | 108.93d → 112.06d |
| P06 | **Piso 06** | 2027-08-10 → 2027-08-09 (-1d) | 2027-09-14 → 2027-09-13 (-1d) |  |
| A21920 | Tercera Mano de pintura | 2027-08-10 → 2027-08-09 (-1d) | 2027-09-14 → 2027-09-13 (-1d) | 93.93d → 97.06d |
| P07 | **Piso 07** | 2027-08-27 → 2027-08-26 (-1d) | 2027-09-30 → 2027-09-29 (-1d) |  |
| A21930 | Tercera Mano de pintura | 2027-08-27 → 2027-08-26 (-1d) | 2027-09-30 → 2027-09-29 (-1d) | 77.93d → 91.06d |
| P08 | **Piso 08** | 2027-09-14 → 2027-09-13 (-1d) | 2027-10-19 → 2027-10-15 (-4d) |  |
| A21940 | Tercera Mano de pintura | 2027-09-14 → 2027-09-13 (-1d) | 2027-10-19 → 2027-10-15 (-4d) | 67.93d → 71.06d |
| P09 | **Piso 09** | 2027-09-30 → 2027-09-29 (-1d) | 2027-11-02 → 2027-10-29 (-4d) |  |
| A21950 | Tercera Mano de pintura | 2027-09-30 → 2027-09-29 (-1d) | 2027-11-02 → 2027-10-29 (-4d) | 64.93d → 68.06d |
| P10 | **Piso 10** | 2027-10-14 → 2027-10-13 (-1d) | 2027-11-17 → 2027-11-16 (-1d) |  |
| A21960 | Tercera Mano de pintura | 2027-10-14 → 2027-10-13 (-1d) | 2027-11-17 → 2027-11-16 (-1d) | 59.93d → 63.06d |

| ID | Task | Start | Finish | Complete | Total float |
| --- | --- | --- | --- | --- | --- |
| P11 | **Piso 11** | 2027-10-22 → 2027-10-21 (-1d) | 2027-11-22 → 2027-11-19 (-3d) |  |  |
| A21970 | Tercera Mano de pintura | 2027-10-22 → 2027-10-21 (-1d) | 2027-11-22 → 2027-11-19 (-3d) |  | 31.93d → 35.06d |
| P12 | **Piso 12** | 2027-11-08 → 2027-11-05 (-3d) | 2027-12-06 → 2027-12-03 (-3d) |  |  |
| A21980 | Tercera Mano de pintura | 2027-11-08 → 2027-11-05 (-3d) | 2027-12-06 → 2027-12-03 (-3d) |  | 66.93d → 70.06d |
| P13 | **Piso 13** | 2027-11-25 → 2027-11-24 (-1d) | 2027-12-22 → 2027-12-21 (-1d) |  |  |
| A21990 | Tercera Mano de pintura | 2027-11-25 → 2027-11-24 (-1d) | 2027-12-22 → 2027-12-21 (-1d) |  | 55.93d → 59.06d |
| P14 | **Piso 14** | 2027-12-02 → 2027-12-01 (-1d) | 2028-01-14 → 2028-01-13 (-1d) |  |  |
| A22000 | Tercera Mano de pintura | 2027-12-02 → 2027-12-01 (-1d) | 2028-01-14 → 2028-01-13 (-1d) |  | 50.93d → 54.06d |
| P15 | **Piso 15** | 2028-01-13 → 2028-01-12 (-1d) | 2028-02-03 → 2028-02-02 (-1d) |  |  |
| A22010 | Tercera Mano de pintura | 2028-01-13 → 2028-01-12 (-1d) | 2028-02-03 → 2028-02-02 (-1d) |  | 39.93d → 43.06d |
| P16 | **Piso 16** | 2028-01-20 → 2028-01-19 (-1d) | 2028-02-10 → 2028-02-09 (-1d) |  |  |
| A22020 | Tercera Mano de pintura | 2028-01-20 → 2028-01-19 (-1d) | 2028-02-10 → 2028-02-09 (-1d) |  | 34.93d → 38.06d |
| Detallado y Aseo Apartamento | **Detallado y Aseo Apartamento** | 2027-06-15 → 2027-06-14 (-1d) | 2028-02-28 → 2028-02-25 (-3d) |  |  |
| P03 | **Piso 03** | 2027-06-15 → 2027-06-14 (-1d) | 2027-07-08 → 2027-07-07 (-1d) |  |  |
| A22060 | Detallado | 2027-06-15 → 2027-06-14 (-1d) | 2027-07-01 → 2027-06-30 (-1d) |  | 168.93d → 172.06d |
| A22080 | Aseo | 2027-07-01 → 2027-06-30 (-1d) | 2027-07-08 → 2027-07-07 (-1d) |  | 168.93d → 172.06d |
| P04 | **Piso 04** | 2027-08-10 → 2027-08-09 (-1d) | 2027-09-02 → 2027-09-01 (-1d) |  |  |
| A22110 | Detallado | 2027-08-10 → 2027-08-09 (-1d) | 2027-08-27 → 2027-08-26 (-1d) |  | 125.93d → 129.06d |
| A22120 | Aseo | 2027-08-27 → 2027-08-26 (-1d) | 2027-09-02 → 2027-09-01 (-1d) |  | 125.93d → 129.06d |
| P05 | **Piso 05** | 2027-08-27 → 2027-08-26 (-1d) | 2027-09-20 → 2027-09-17 (-3d) |  |  |
| A22130 | Detallado | 2027-08-27 → 2027-08-26 (-1d) | 2027-09-14 → 2027-09-13 (-1d) |  | 108.93d → 112.06d |
| A22140 | Aseo | 2027-09-14 → 2027-09-13 (-1d) | 2027-09-20 → 2027-09-17 (-3d) |  | 108.93d → 112.06d |
| P06 | **Piso 06** | 2027-09-14 → 2027-09-13 (-1d) | 2027-10-06 → 2027-10-05 (-1d) |  |  |
| A22150 | Detallado | 2027-09-14 → 2027-09-13 (-1d) | 2027-09-30 → 2027-09-29 (-1d) |  | 93.93d → 97.06d |
| A22160 | Aseo | 2027-09-30 → 2027-09-29 (-1d) | 2027-10-06 → 2027-10-05 (-1d) |  | 93.93d → 97.06d |
| P07 | **Piso 07** | 2027-09-30 → 2027-09-29 (-1d) | 2027-10-25 → 2027-10-22 (-3d) |  |  |
| A22170 | Detallado | 2027-09-30 → 2027-09-29 (-1d) | 2027-10-19 → 2027-10-15 (-4d) |  | 77.93d → 91.06d |
| A22180 | Aseo | 2027-10-19 → 2027-10-15 (-4d) | 2027-10-25 → 2027-10-22 (-3d) |  | 77.93d → 91.06d |
| P08 | **Piso 08** | 2027-11-03 → 2027-11-02 (-1d) | 2027-11-26 → 2027-11-25 (-1d) |  |  |
| A22190 | Detallado | 2027-11-03 → 2027-11-02 (-1d) | 2027-11-22 → 2027-11-19 (-3d) |  | 67.93d → 71.06d |
| A22200 | Aseo | 2027-11-22 → 2027-11-19 (-3d) | 2027-11-26 → 2027-11-25 (-1d) |  | 67.93d → 71.06d |
| P09 | **Piso 09** | 2027-11-02 → 2027-10-29 (-4d) | 2027-11-24 → 2027-11-23 (-1d) |  |  |
| A22210 | Detallado | 2027-11-02 → 2027-10-29 (-4d) | 2027-11-19 → 2027-11-18 (-1d) |  | 64.93d → 68.06d |
| A22220 | Aseo | 2027-11-19 → 2027-11-18 (-1d) | 2027-11-24 → 2027-11-23 (-1d) |  | 64.93d → 68.06d |
| P10 | **Piso 10** | 2027-11-17 → 2027-11-16 (-1d) | 2027-12-09 → 2027-12-07 (-2d) |  |  |
| A22230 | Detallado | 2027-11-17 → 2027-11-16 (-1d) | 2027-12-03 → 2027-12-02 (-1d) |  | 59.93d → 63.06d |
| A22240 | Aseo | 2027-12-03 → 2027-12-02 (-1d) | 2027-12-09 → 2027-12-07 (-2d) |  | 59.93d → 63.06d |
| P11 | **Piso 11** | 2027-11-22 → 2027-11-19 (-3d) | 2027-12-14 → 2027-12-13 (-1d) |  |  |
| A22250 | Detallado | 2027-11-22 → 2027-11-19 (-3d) | 2027-12-09 → 2027-12-07 (-2d) |  | 31.93d → 35.06d |
| A22260 | Aseo | 2027-12-09 → 2027-12-07 (-2d) | 2027-12-14 → 2027-12-13 (-1d) |  | 31.93d → 35.06d |
| P12 | **Piso 12** | 2027-12-06 → 2027-12-03 (-3d) | 2028-01-13 → 2028-01-12 (-1d) |  |  |
| A22270 | Detallado | 2027-12-06 → 2027-12-03 (-3d) | 2027-12-23 → 2027-12-22 (-1d) |  | 66.93d → 70.06d |
| A22280 | Aseo | 2027-12-23 → 2027-12-22 (-1d) | 2028-01-13 → 2028-01-12 (-1d) |  | 66.93d → 70.06d |
| P13 | **Piso 13** | 2027-12-22 → 2027-12-21 (-1d) | 2028-01-28 → 2028-01-27 (-1d) |  |  |
| A22290 | Detallado | 2027-12-22 → 2027-12-21 (-1d) | 2028-01-25 → 2028-01-24 (-1d) |  | 55.93d → 59.06d |
| A22300 | Aseo | 2028-01-25 → 2028-01-24 (-1d) | 2028-01-28 → 2028-01-27 (-1d) |  | 55.93d → 59.06d |
| P14 | **Piso 14** | 2028-01-14 → 2028-01-13 (-1d) | 2028-02-04 → 2028-02-03 (-1d) |  |  |
| A22310 | Detallado | 2028-01-14 → 2028-01-13 (-1d) | 2028-02-01 → 2028-01-31 (-1d) |  | 50.93d → 54.06d |
| A22320 | Aseo | 2028-02-01 → 2028-01-31 (-1d) | 2028-02-04 → 2028-02-03 (-1d) |  | 50.93d → 54.06d |
| P15 | **Piso 15** | 2028-02-03 → 2028-02-02 (-1d) | 2028-02-21 → 2028-02-18 (-3d) |  |  |
| A22330 | Detallado | 2028-02-03 → 2028-02-02 (-1d) | 2028-02-17 → 2028-02-16 (-1d) |  | 39.93d → 43.06d |
| A22340 | Aseo | 2028-02-17 → 2028-02-16 (-1d) | 2028-02-21 → 2028-02-18 (-3d) |  | 39.93d → 43.06d |
| P16 | **Piso 16** | 2028-02-10 → 2028-02-09 (-1d) | 2028-02-28 → 2028-02-25 (-3d) |  |  |
| A22350 | Detallado | 2028-02-10 → 2028-02-09 (-1d) | 2028-02-24 → 2028-02-23 (-1d) |  | 34.93d → 38.06d |
| A22360 | Aseo | 2028-02-24 → 2028-02-23 (-1d) | 2028-02-28 → 2028-02-25 (-3d) |  | 34.93d → 38.06d |
| 10Fac | **07. Fachada** | 2026-07-17 → 2026-06-30 (-17d) | 2028-01-26 → 2028-01-17 (-9d) |  |  |
| 01Fachada | **Fachadas** | 2026-07-17 → 2026-06-30 (-17d) | 2028-01-26 → 2028-01-17 (-9d) |  |  |
| FACHADA PISCINA Y MAR | **Fachada Piscina y Mar** | 2026-07-17 → 2026-06-30 (-17d) | 2028-01-26 → 2028-01-17 (-9d) |  |  |
| Paño 1 | **Paño 1** | 2026-07-17 → 2026-06-30 (-17d) | 2026-10-06 → 2026-09-25 (-11d) |  |  |
| A22370 | Mamposteria | 2026-07-17 → 2026-06-30 A (-17d) | 2026-07-31 → 2026-07-22 (-9d) | 0% → 80% | 0d → 8d |
| A22380 | Pañete | 2026-08-03 → 2026-07-23 (-11d) | 2026-08-27 → 2026-08-18 (-9d) |  | 354d → 285d |
| A22390 | Pintura | 2026-08-28 → 2026-08-19 (-9d) | 2026-10-06 → 2026-09-25 (-11d) |  | 354d → 285d |
| Paño 2 | **Paño 2** | 2026-08-03 → 2026-07-23 (-11d) | 2026-10-21 → 2026-10-09 (-12d) |  |  |
| A22460 | Mamposteria | 2026-08-03 → 2026-07-23 (-11d) | 2026-08-18 → 2026-08-05 (-13d) |  | 0d → 8d |
| A22470 | Pañete | 2026-08-19 → 2026-08-06 (-13d) | 2026-09-10 → 2026-09-01 (-9d) |  | 344d → 353.7d |
| A22480 | Pintura | 2026-09-11 → 2026-09-02 (-9d) | 2026-10-21 → 2026-10-09 (-12d) |  | 344d → 353.7d |
| Paño 3 | **Paño 3** | 2026-08-19 → 2026-08-06 (-13d) | 2027-01-14 → 2026-12-17 (-28d) |  |  |
| A22400 | Prolongaciones Elec-Hidr-Hvac-Comu | 2026-08-19 → 2026-08-06 (-13d) | 2026-09-01 → 2026-08-21 (-11d) |  | 0d → 8d |
| A22410 | Mamposteria | 2026-09-02 → 2026-08-24 (-9d) | 2026-09-15 → 2026-09-04 (-11d) |  | 299d → 308.7d |
| A22420 | Superboard | 2026-09-16 → 2026-09-07 (-9d) | 2026-10-21 → 2026-10-09 (-12d) |  | 299d → 308.7d |

| ID | Task | Start | Finish | Total float |
| --- | --- | --- | --- | --- |
| A22440 | Pañetes | 2026-10-22 → 2026-10-13 (-9d) | 2026-11-17 → 2026-11-05 (-12d) | 299d → 308.7d |
| A22450 | Pintura | 2026-11-18 → 2026-11-06 (-12d) | 2027-01-14 → 2026-12-17 (-28d) | 299d → 308.7d |
| Paño 4 | **Paño 4** | 2026-09-02 → 2026-08-24 (-9d) | 2027-01-28 → 2027-01-19 (-9d) |  |
| A22490 | Prolongaciones Elec-Hidr-Hvac-Comu | 2026-09-02 → 2026-08-24 (-9d) | 2026-09-15 → 2026-09-04 (-11d) | 0d → 8d |
| A22500 | Mamposteria | 2026-09-16 → 2026-09-07 (-9d) | 2026-09-29 → 2026-09-18 (-11d) | 289d → 298.7d |
| A22510 | Superboard | 2026-09-30 → 2026-09-21 (-9d) | 2026-11-05 → 2026-10-26 (-10d) | 289d → 298.7d |
| A22520 | Pañetes | 2026-11-06 → 2026-10-27 (-10d) | 2026-12-01 → 2026-11-20 (-11d) | 289d → 298.7d |
| A22530 | Pintura | 2026-12-02 → 2026-11-23 (-9d) | 2027-01-28 → 2027-01-19 (-9d) | 289d → 298.7d |
| Paño 5 | **Paño 5** | 2026-09-16 → 2026-09-07 (-9d) | 2027-03-09 → 2027-02-26 (-11d) |  |
| A22540 | Prolongaciones Elec-Hidr-Hvac-Comu | 2026-09-16 → 2026-09-07 (-9d) | 2026-10-01 → 2026-09-22 (-9d) | 0d → 8d |
| A22550 | Mamposteria | 2026-10-02 → 2026-09-23 (-9d) | 2026-10-20 → 2026-10-08 (-12d) | 261d → 270.7d |
| A22560 | Superboard | 2026-10-21 → 2026-10-09 (-12d) | 2026-12-04 → 2026-11-25 (-9d) | 261d → 270.7d |
| A22570 | Pañetes | 2026-12-07 → 2026-11-26 (-11d) | 2027-01-20 → 2026-12-23 (-28d) | 261d → 270.7d |
| A22580 | Pintura | 2027-01-21 → 2027-01-12 (-9d) | 2027-03-09 → 2027-02-26 (-11d) | 261d → 270.7d |
| Paño 6 | **Paño 6** | 2026-10-02 → 2026-09-23 (-9d) | 2027-04-28 → 2027-04-19 (-9d) |  |
| A22590 | Prolongaciones Elec-Hidr-Hvac-Comu | 2026-10-02 → 2026-09-23 (-9d) | 2026-10-22 → 2026-10-13 (-9d) | 0d → 8d |
| A22600 | Mamposteria | 2026-10-23 → 2026-10-14 (-9d) | 2026-11-12 → 2026-11-03 (-9d) | 230d → 239.7d |
| A22610 | Superboard | 2026-11-13 → 2026-11-04 (-9d) | 2027-01-25 → 2027-01-14 (-11d) | 230d → 239.7d |
| A22620 | Pañetes | 2027-01-26 → 2027-01-15 (-11d) | 2027-02-26 → 2027-02-17 (-9d) | 230d → 239.7d |
| A22630 | Pintura | 2027-03-01 → 2027-02-18 (-11d) | 2027-04-28 → 2027-04-19 (-9d) | 230d → 239.7d |
| Paño 7 | **Paño 7** | 2026-10-23 → 2026-10-14 (-9d) | 2027-06-11 → 2027-06-01 (-10d) |  |
| A22640 | Prolongaciones Elec-Hidr-Hvac-Comu | 2026-10-23 → 2026-10-14 (-9d) | 2026-11-17 → 2026-11-05 (-12d) | 0d → 8d |
| A22650 | Mamposteria | 2026-11-18 → 2026-11-06 (-12d) | 2026-12-10 → 2026-11-30 (-10d) | 201d → 210.7d |
| A22660 | Superboard | 2026-12-11 → 2026-12-01 (-10d) | 2027-02-19 → 2027-02-10 (-9d) | 201d → 210.7d |
| A22670 | Pañetes | 2027-02-22 → 2027-02-11 (-11d) | 2027-04-07 → 2027-03-29 (-9d) | 201d → 210.7d |
| A22680 | Pintura | 2027-04-08 → 2027-03-30 (-9d) | 2027-06-11 → 2027-06-01 (-10d) | 201d → 210.7d |
| Paño 8 | **Paño 8** | 2026-11-18 → 2026-11-06 (-12d) | 2027-07-12 → 2027-06-30 (-12d) |  |
| A22690 | Prolongaciones Elec-Hidr-Hvac-Comu | 2026-11-18 → 2026-11-06 (-12d) | 2026-12-14 → 2026-12-02 (-12d) | 0d → 8d |
| A22700 | Mamposteria | 2026-12-15 → 2026-12-03 (-12d) | 2027-01-26 → 2027-01-15 (-11d) | 181d → 190.7d |
| A22710 | Superboard | 2027-01-27 → 2027-01-18 (-9d) | 2027-03-09 → 2027-02-26 (-11d) | 181d → 190.7d |
| A22720 | Pañetes | 2027-03-10 → 2027-03-01 (-9d) | 2027-04-27 → 2027-04-16 (-11d) | 181d → 190.7d |
| A22730 | Pintura | 2027-04-28 → 2027-04-19 (-9d) | 2027-07-12 → 2027-06-30 (-12d) | 181d → 190.7d |
| Paño 9 | **Paño 9** | 2026-12-15 → 2026-12-03 (-12d) | 2027-08-06 → 2027-07-28 (-9d) |  |
| A22740 | Prolongaciones Elec-Hidr-Hvac-Comu | 2026-12-15 → 2026-12-03 (-12d) | 2027-01-26 → 2027-01-15 (-11d) | 0d → 8d |
| A22750 | Mamposteria | 2027-01-27 → 2027-01-18 (-9d) | 2027-02-19 → 2027-02-10 (-9d) | 163d → 172.7d |
| A22760 | Superboard | 2027-02-22 → 2027-02-11 (-11d) | 2027-04-09 → 2027-03-31 (-9d) | 163d → 172.7d |
| A22770 | Pañetes | 2027-04-12 → 2027-04-01 (-11d) | 2027-05-24 → 2027-05-13 (-11d) | 163d → 172.7d |
| A22780 | Pintura | 2027-05-25 → 2027-05-14 (-11d) | 2027-08-06 → 2027-07-28 (-9d) | 163d → 172.7d |
| Paño 10 | **Paño 10** | 2027-01-27 → 2027-01-18 (-9d) | 2027-09-02 → 2027-08-24 (-9d) |  |
| A22790 | Prolongaciones Elec-Hidr-Hvac-Comu | 2027-01-27 → 2027-01-18 (-9d) | 2027-02-19 → 2027-02-10 (-9d) | 0d → 8d |
| A22800 | Mamposteria | 2027-02-22 → 2027-02-11 (-11d) | 2027-03-17 → 2027-03-08 (-9d) | 145d → 154.7d |
| A22810 | Superboard | 2027-03-18 → 2027-03-09 (-9d) | 2027-05-05 → 2027-04-26 (-9d) | 145d → 154.7d |
| A22820 | Pañetes | 2027-05-06 → 2027-04-27 (-9d) | 2027-06-21 → 2027-06-10 (-11d) | 145d → 154.7d |
| A22830 | Pintura | 2027-06-22 → 2027-06-11 (-11d) | 2027-09-02 → 2027-08-24 (-9d) | 145d → 154.7d |
| Paño 11 | **Paño 11** | 2027-02-22 → 2027-02-11 (-11d) | 2027-09-28 → 2027-09-17 (-11d) |  |
| A22840 | Prolongaciones Elec-Hidr-Hvac-Comu | 2027-02-22 → 2027-02-11 (-11d) | 2027-03-17 → 2027-03-08 (-9d) | 0d → 8d |
| A22850 | Mamposteria | 2027-03-18 → 2027-03-09 (-9d) | 2027-04-19 → 2027-04-08 (-11d) | 127d → 136.7d |
| A22860 | Superboard | 2027-04-20 → 2027-04-09 (-11d) | 2027-06-02 → 2027-05-21 (-12d) | 127d → 136.7d |
| A22870 | Pañetes | 2027-06-03 → 2027-05-24 (-10d) | 2027-07-16 → 2027-07-07 (-9d) | 127d → 136.7d |
| A22880 | Pintura | 2027-07-19 → 2027-07-08 (-11d) | 2027-09-28 → 2027-09-17 (-11d) | 127d → 136.7d |
| Paño 12 | **Paño 12** | 2027-03-18 → 2027-03-09 (-9d) | 2027-10-25 → 2027-10-13 (-12d) |  |
| A22890 | Prolongaciones Elec-Hidr-Hvac-Comu | 2027-03-18 → 2027-03-09 (-9d) | 2027-04-19 → 2027-04-08 (-11d) | 0d → 8d |
| A22900 | Mamposteria | 2027-04-20 → 2027-04-09 (-11d) | 2027-05-14 → 2027-05-04 (-10d) | 109d → 118.7d |
| A22910 | Superboard | 2027-05-17 → 2027-05-05 (-12d) | 2027-06-29 → 2027-06-18 (-11d) | 109d → 118.7d |
| A22920 | Pañetes | 2027-06-30 → 2027-06-21 (-9d) | 2027-08-12 → 2027-08-03 (-9d) | 109d → 118.7d |
| A22930 | Pintura | 2027-08-13 → 2027-08-04 (-9d) | 2027-10-25 → 2027-10-13 (-12d) | 109d → 118.7d |
| Paño 13 | **Paño 13** | 2027-04-20 → 2027-04-09 (-11d) | 2027-11-22 → 2027-11-10 (-12d) |  |
| A22940 | Prolongaciones Elec-Hidr-Hvac-Comu | 2027-04-20 → 2027-04-09 (-11d) | 2027-05-14 → 2027-05-04 (-10d) | 0d → 8d |
| A22950 | Mamposteria | 2027-05-17 → 2027-05-05 (-12d) | 2027-06-11 → 2027-06-01 (-10d) | 91d → 100.7d |
| A22960 | Superboard | 2027-06-14 → 2027-06-02 (-12d) | 2027-07-27 → 2027-07-15 (-12d) | 91d → 100.7d |
| A22970 | Pañetes | 2027-07-28 → 2027-07-16 (-12d) | 2027-09-08 → 2027-08-30 (-9d) | 91d → 100.7d |
| A22980 | Pintura | 2027-09-09 → 2027-08-31 (-9d) | 2027-11-22 → 2027-11-10 (-12d) | 91d → 100.7d |
| Paño 14 | **Paño 14** | 2027-05-17 → 2027-05-05 (-12d) | 2027-12-17 → 2027-12-07 (-10d) |  |
| A22990 | Prolongaciones Elec-Hidr-Hvac-Comu | 2027-05-17 → 2027-05-05 (-12d) | 2027-06-11 → 2027-06-01 (-10d) | 0d → 8d |
| A23000 | Mamposteria | 2027-06-14 → 2027-06-02 (-12d) | 2027-07-08 → 2027-06-28 (-10d) | 73d → 82.7d |
| A23010 | Superboard | 2027-07-09 → 2027-06-29 (-10d) | 2027-08-23 → 2027-08-11 (-12d) | 73d → 82.7d |
| A23020 | Pañetes | 2027-08-24 → 2027-08-12 (-12d) | 2027-10-04 → 2027-09-23 (-11d) | 73d → 82.7d |
| A23030 | Pintura | 2027-10-05 → 2027-09-24 (-11d) | 2027-12-17 → 2027-12-07 (-10d) | 73d → 82.7d |
| Paño 15 | **Paño 15** | 2027-06-14 → 2027-06-02 (-12d) | 2027-12-15 → 2027-12-03 (-12d) |  |
| A23040 | Prolongaciones Elec-Hidr-Hvac-Comu | 2027-06-14 → 2027-06-02 (-12d) | 2027-07-08 → 2027-06-28 (-10d) | 0d → 8d |

| ID | Task | Start | Finish | Total float |
| --- | --- | --- | --- | --- |
| A23050 | Mamposteria | 2027-07-09 → 2027-06-29 (-10d) | 2027-08-04 → 2027-07-26 (-9d) | 75d → 8d |
| A23060 | Superboard | 2027-08-05 → 2027-07-27 (-9d) | 2027-09-16 → 2027-09-07 (-9d) | 75d → 8d |
| A23070 | Pañetes | 2027-09-17 → 2027-09-08 (-9d) | 2027-10-29 → 2027-10-20 (-9d) | 75d → 8d |
| A23080 | Pintura | 2027-11-02 → 2027-10-21 (-12d) | 2027-12-15 → 2027-12-03 (-12d) | 75d → 8d |
| Paño 16 | **Paño 16** | 2027-07-09 → 2027-06-29 (-10d) | 2028-01-26 → 2028-01-17 (-9d) |  |
| A23090 | Prolongaciones Elec-Hidr-Hvac-Comu | 2027-07-09 → 2027-06-29 (-10d) | 2027-08-04 → 2027-07-26 (-9d) | 0d → 42.7d |
| A23100 | Mamposteria | 2027-08-05 → 2027-07-27 (-9d) | 2027-08-31 → 2027-08-20 (-11d) | 57d → 66.7d |
| A23110 | Superboard | 2027-09-01 → 2027-08-23 (-9d) | 2027-10-12 → 2027-10-01 (-11d) | 57d → 66.7d |
| A23120 | Pañetes | 2027-10-13 → 2027-10-04 (-9d) | 2027-11-26 → 2027-11-17 (-9d) | 57d → 66.7d |
| A23130 | Pintura | 2027-11-29 → 2027-11-18 (-11d) | 2028-01-26 → 2028-01-17 (-9d) | 57d → 66.7d |
| Paño 17 | **Paño 17** | 2027-08-05 → 2027-07-27 (-9d) | 2028-01-14 → 2027-12-20 (-25d) |  |
| A23150 | Mamposteria | 2027-08-05 → 2027-07-27 (-9d) | 2027-09-02 → 2027-08-24 (-9d) | 0d → 42.7d |
| A23170 | Pañetes | 2027-09-03 → 2027-08-25 (-9d) | 2027-10-14 → 2027-10-05 (-9d) | 0d → 42.7d |
| A23180 | Pintura | 2027-10-15 → 2027-10-06 (-9d) | 2028-01-14 → 2027-12-20 (-25d) | 0d → 42.7d |
| FACHADA TWO TOWER | **Fachada Two Tower** | 2026-10-29 → 2026-10-30 (+1d) | 2027-11-22 → 2027-11-23 (+1d) |  |
| Paño 1 | **Paño 1** | 2026-10-29 → 2026-10-30 (+1d) | 2027-02-23 → 2027-02-24 (+1d) |  |
| A23190 | Mamposteria | 2026-10-29 → 2026-10-30 (+1d) | 2026-11-17 → 2026-11-18 (+1d) | 51d → 60.7d |
| A23200 | Pañetes | 2026-11-18 → 2026-11-19 (+1d) | 2027-01-13 → 2027-01-14 (+1d) | 300d → 301.7d |
| A23210 | Superboard | 2026-11-18 → 2026-11-19 (+1d) | 2027-01-14 → 2027-01-15 (+1d) | 271d → 272.7d |
| A23220 | Pintura | 2027-01-15 → 2027-01-18 (+3d) | 2027-02-23 → 2027-02-24 (+1d) | 271d → 272.7d |
| Paño 2 | **Paño 2** | 2026-11-18 → 2026-11-19 (+1d) | 2027-03-11 → 2027-03-12 (+1d) |  |
| A23230 | Mamposteria | 2026-11-18 → 2026-11-19 (+1d) | 2026-12-03 → 2026-12-04 (+1d) | 51d → 60.7d |
| A23240 | Pañetes | 2026-12-04 → 2026-12-07 (+3d) | 2027-01-29 → 2027-02-01 (+3d) | 288d → 289.7d |
| A23250 | Superboard | 2026-12-04 → 2026-12-07 (+3d) | 2027-02-01 → 2027-02-02 (+1d) | 259d → 260.7d |
| A23260 | Pintura | 2027-02-02 → 2027-02-03 (+1d) | 2027-03-11 → 2027-03-12 (+1d) | 259d → 260.7d |
| Paño 3 | **Paño 3** | 2026-12-04 → 2026-12-07 (+3d) | 2027-04-05 → 2027-04-06 (+1d) |  |
| A23270 | Mamposteria | 2026-12-04 → 2026-12-07 (+3d) | 2026-12-22 → 2026-12-23 (+1d) | 51d → 60.7d |
| A23280 | Pañetes | 2026-12-23 → 2027-01-12 (+20d) | 2027-02-16 → 2027-02-17 (+1d) | 276d → 277.7d |
| A23290 | Superboard | 2026-12-23 → 2027-01-12 (+20d) | 2027-02-17 → 2027-02-18 (+1d) | 247d → 248.7d |
| A23300 | Pintura | 2027-02-18 → 2027-02-19 (+1d) | 2027-04-05 → 2027-04-06 (+1d) | 247d → 248.7d |
| Paño 4 | **Paño 4** | 2026-12-23 → 2027-01-12 (+20d) | 2027-04-21 → 2027-04-22 (+1d) |  |
| A23310 | Mamposteria | 2026-12-23 → 2027-01-12 (+20d) | 2027-01-26 → 2027-01-27 (+1d) | 51d → 60.7d |
| A23320 | Pañetes | 2027-01-27 → 2027-01-28 (+1d) | 2027-03-04 → 2027-03-05 (+1d) | 264d → 265.7d |
| A23330 | Superboard | 2027-01-27 → 2027-01-28 (+1d) | 2027-03-05 → 2027-03-08 (+3d) | 235d → 236.7d |
| A23340 | Pintura | 2027-03-08 → 2027-03-09 (+1d) | 2027-04-21 → 2027-04-22 (+1d) | 235d → 236.7d |
| Paño 5 | **Paño 5** | 2027-01-27 → 2027-01-28 (+1d) | 2027-05-07 → 2027-05-11 (+4d) |  |
| A23350 | Mamposteria | 2027-01-27 → 2027-01-28 (+1d) | 2027-02-11 → 2027-02-12 (+1d) | 51d → 60.7d |
| A23360 | Pañetes | 2027-02-12 → 2027-02-15 (+3d) | 2027-03-29 → 2027-03-30 (+1d) | 252d → 253.7d |
| A23370 | Superboard | 2027-02-12 → 2027-02-15 (+3d) | 2027-03-30 → 2027-03-31 (+1d) | 223d → 224.7d |
| A23380 | Pintura | 2027-03-31 → 2027-04-01 (+1d) | 2027-05-07 → 2027-05-11 (+4d) | 223d → 224.7d |
| Paño 6 | **Paño 6** | 2027-02-12 → 2027-02-15 (+3d) | 2027-05-26 → 2027-05-27 (+1d) |  |
| A23390 | Mamposteria | 2027-02-12 → 2027-02-15 (+3d) | 2027-03-01 → 2027-03-02 (+1d) | 51d → 60.7d |
| A23400 | Pañetes | 2027-03-02 → 2027-03-03 (+1d) | 2027-04-14 → 2027-04-15 (+1d) | 240d → 241.7d |
| A23410 | Superboard | 2027-03-02 → 2027-03-03 (+1d) | 2027-04-15 → 2027-04-16 (+1d) | 211d → 212.7d |
| A23420 | Pintura | 2027-04-16 → 2027-04-19 (+3d) | 2027-05-26 → 2027-05-27 (+1d) | 211d → 212.7d |
| Paño 7 | **Paño 7** | 2027-03-02 → 2027-03-03 (+1d) | 2027-06-15 → 2027-06-16 (+1d) |  |
| A23430 | Mamposteria | 2027-03-02 → 2027-03-03 (+1d) | 2027-03-17 → 2027-03-18 (+1d) | 51d → 60.7d |
| A23440 | Pañetes | 2027-03-18 → 2027-03-19 (+1d) | 2027-04-30 → 2027-05-03 (+3d) | 228d → 229.7d |
| A23450 | Superboard | 2027-03-18 → 2027-03-19 (+1d) | 2027-05-03 → 2027-05-04 (+1d) | 199d → 200.7d |
| A23460 | Pintura | 2027-05-04 → 2027-05-05 (+1d) | 2027-06-15 → 2027-06-16 (+1d) | 199d → 200.7d |
| Paño 8 | **Paño 8** | 2027-03-18 → 2027-03-19 (+1d) | 2027-07-01 → 2027-07-02 (+1d) |  |
| A23470 | Mamposteria | 2027-03-18 → 2027-03-19 (+1d) | 2027-04-09 → 2027-04-12 (+3d) | 51d → 60.7d |
| A23480 | Pañetes | 2027-04-12 → 2027-04-13 (+1d) | 2027-05-19 → 2027-05-20 (+1d) | 216d → 217.7d |
| A23490 | Superboard | 2027-04-12 → 2027-04-13 (+1d) | 2027-05-20 → 2027-05-21 (+1d) | 187d → 188.7d |
| A23500 | Pintura | 2027-05-21 → 2027-05-24 (+3d) | 2027-07-01 → 2027-07-02 (+1d) | 187d → 188.7d |
| Paño 9 | **Paño 9** | 2027-04-12 → 2027-04-13 (+1d) | 2027-07-21 → 2027-07-22 (+1d) |  |
| A23510 | Mamposteria | 2027-04-12 → 2027-04-13 (+1d) | 2027-04-27 → 2027-04-28 (+1d) | 51d → 60.7d |
| A23520 | Pañetes | 2027-04-28 → 2027-04-29 (+1d) | 2027-06-08 → 2027-06-09 (+1d) | 204d → 205.7d |
| A23530 | Superboard | 2027-04-28 → 2027-04-29 (+1d) | 2027-06-09 → 2027-06-10 (+1d) | 175d → 176.7d |
| A23540 | Pintura | 2027-06-10 → 2027-06-11 (+1d) | 2027-07-21 → 2027-07-22 (+1d) | 175d → 176.7d |
| Paño 10 | **Paño 10** | 2027-04-28 → 2027-04-29 (+1d) | 2027-08-06 → 2027-08-09 (+3d) |  |
| A23550 | Mamposteria | 2027-04-28 → 2027-04-29 (+1d) | 2027-05-14 → 2027-05-17 (+3d) | 51d → 60.7d |
| A23560 | Pañetes | 2027-05-17 → 2027-05-18 (+1d) | 2027-06-24 → 2027-06-25 (+1d) | 192d → 193.7d |
| A23570 | Superboard | 2027-05-17 → 2027-05-18 (+1d) | 2027-06-25 → 2027-06-28 (+3d) | 163d → 164.7d |
| A23580 | Pintura | 2027-06-28 → 2027-06-29 (+1d) | 2027-08-06 → 2027-08-09 (+3d) | 163d → 164.7d |
| Paño 11 | **Paño 11** | 2027-05-17 → 2027-05-18 (+1d) | 2027-08-25 → 2027-08-26 (+1d) |  |
| A23590 | Mamposteria | 2027-05-17 → 2027-05-18 (+1d) | 2027-06-02 → 2027-06-03 (+1d) | 51d → 60.7d |
| A23600 | Pañetes | 2027-06-03 → 2027-06-04 (+1d) | 2027-07-13 → 2027-07-14 (+1d) | 180d → 181.7d |
| A23610 | Superboard | 2027-06-03 → 2027-06-04 (+1d) | 2027-07-14 → 2027-07-15 (+1d) | 151d → 152.7d |
| A23620 | Pintura | 2027-07-15 → 2027-07-16 (+1d) | 2027-08-25 → 2027-08-26 (+1d) | 151d → 152.7d |

| ID | Task | Start | Finish | Complete | Total float | Other |
| --- | --- | --- | --- | --- | --- | --- |
| Paño 12 | **Paño 12** | 2027-06-03 → 2027-06-04 (+1d) | 2027-09-10 → 2027-09-13 (+3d) |  |  |  |
| A23630 | Mamposteria | 2027-06-03 → 2027-06-04 (+1d) | 2027-06-21 → 2027-06-22 (+1d) |  | 51d → 60.7d |  |
| A23640 | Pañetes | 2027-06-22 → 2027-06-23 (+1d) | 2027-07-30 → 2027-08-02 (+3d) |  | 168d → 169.7d |  |
| A23650 | Superboard | 2027-06-22 → 2027-06-23 (+1d) | 2027-08-02 → 2027-08-03 (+1d) |  | 139d → 140.7d |  |
| A23660 | Pintura | 2027-08-03 → 2027-08-04 (+1d) | 2027-09-10 → 2027-09-13 (+3d) |  | 139d → 140.7d |  |
| Paño 13 | **Paño 13** | 2027-06-22 → 2027-06-23 (+1d) | 2027-09-28 → 2027-09-29 (+1d) |  |  |  |
| A23670 | Mamposteria | 2027-06-22 → 2027-06-23 (+1d) | 2027-07-08 → 2027-07-09 (+1d) |  | 51d → 60.7d |  |
| A23680 | Pañetes | 2027-07-09 → 2027-07-12 (+3d) | 2027-08-18 → 2027-08-19 (+1d) |  | 156d → 157.7d |  |
| A23690 | Superboard | 2027-07-09 → 2027-07-12 (+3d) | 2027-08-19 → 2027-08-20 (+1d) |  | 127d → 128.7d |  |
| A23700 | Pintura | 2027-08-20 → 2027-08-23 (+3d) | 2027-09-28 → 2027-09-29 (+1d) |  | 127d → 128.7d |  |
| Paño 14 | **Paño 14** | 2027-07-09 → 2027-07-12 (+3d) | 2027-10-14 → 2027-10-15 (+1d) |  |  |  |
| A23710 | Mamposteria | 2027-07-09 → 2027-07-12 (+3d) | 2027-07-27 → 2027-07-28 (+1d) |  | 51d → 60.7d |  |
| A23720 | Pañetes | 2027-07-28 → 2027-07-29 (+1d) | 2027-09-03 → 2027-09-06 (+3d) |  | 144d → 145.7d |  |
| A23730 | Superboard | 2027-07-28 → 2027-07-29 (+1d) | 2027-09-06 → 2027-09-07 (+1d) |  | 115d → 116.7d |  |
| A23740 | Pintura | 2027-09-07 → 2027-09-08 (+1d) | 2027-10-14 → 2027-10-15 (+1d) |  | 115d → 116.7d |  |
| Paño 15 | **Paño 15** | 2027-07-28 → 2027-07-29 (+1d) | 2027-11-03 → 2027-11-04 (+1d) |  |  |  |
| A23750 | Mamposteria | 2027-07-28 → 2027-07-29 (+1d) | 2027-08-12 → 2027-08-13 (+1d) |  | 51d → 60.7d |  |
| A23760 | Pañetes | 2027-08-13 → 2027-08-17 (+4d) | 2027-09-21 → 2027-09-22 (+1d) |  | 132d → 133.7d |  |
| A23770 | Superboard | 2027-08-13 → 2027-08-17 (+4d) | 2027-09-22 → 2027-09-23 (+1d) |  | 103d → 104.7d |  |
| A23780 | Pintura | 2027-09-23 → 2027-09-24 (+1d) | 2027-11-03 → 2027-11-04 (+1d) |  | 103d → 104.7d |  |
| Paño 16 | **Paño 16** | 2027-08-13 → 2027-08-17 (+4d) | 2027-11-22 → 2027-11-23 (+1d) |  |  |  |
| A23790 | Mamposteria | 2027-08-13 → 2027-08-17 (+4d) | 2027-08-31 → 2027-09-01 (+1d) |  | 51d → 60.7d |  |
| A23800 | Pañetes | 2027-09-01 → 2027-09-02 (+1d) | 2027-10-07 → 2027-10-08 (+1d) |  | 120d → 121.7d |  |
| A23810 | Superboard | 2027-09-01 → 2027-09-02 (+1d) | 2027-10-08 → 2027-10-11 (+3d) |  | 51d → 60.7d |  |
| A23820 | Pintura | 2027-10-11 → 2027-10-12 (+1d) | 2027-11-22 → 2027-11-23 (+1d) |  | 51d → 60.7d |  |
| 11PFJ | **08. Punto Fijo** | 2026-06-01 → 2026-04-28 (-34d) | 2028-03-21 → 2028-04-27 (+37d) |  |  |  |
| 01PfjOG | **Punto Fijo Obra Gris** | 2026-06-01 → 2026-04-28 (-34d) | 2027-12-21 → 2027-09-27 (-85d) |  |  |  |
| P03 | **Piso 03** | 2026-06-01 → 2026-05-18 (-14d) | 2026-09-23 → 2026-08-21 (-33d) |  |  |  |
| A24090 | Descolg. Prolong. Inst. Electricas | 2026-06-09 A → 2026-05-18 A (-22d) | 2026-07-16 A → 2026-05-26 A (-51d) |  |  |  |
| A24100 | Descolg. Prolong. Inst. hidrosanitarias | 2026-07-17 → 2026-05-18 A (-60d) | 2026-07-29 → 2026-07-21 (-8d) | 0% → 100% | 19.4d → 1.62d |  |
| A24110 | Descolg. Prolong. Inst. Comunicaciones | 2026-06-01 A → 2026-05-20 A (-12d) | 2026-06-19 A → 2026-05-28 A (-22d) |  |  |  |
| A24120 | Descolg. Prolong. Inst. Sanitarias | 2026-07-24 → 2026-05-26 A (-59d) | 2026-08-04 → 2026-07-28 (-7d) | 0% → 29% | 19.4d → 1.62d |  |
| A24130 | Descolg. Prolong. HVAC y gas | 2026-07-30 → 2026-05-26 A (-65d) | 2026-08-11 → 2026-07-22 (-20d) | 0% → 75% | 19.4d → 1.62d |  |
| A24160 | Pañete Resanes | 2026-08-13 → 2026-05-28 A (-77d) | 2026-09-01 → 2026-07-21 (-42d) | 0% → 93% | 19.4d → -3.54d |  |
| A24150 | Mamposteria | 2026-06-16 A → 2026-06-01 A (-15d) | 2026-08-24 → 2026-07-21 (-34d) | 20% → 93% | 19.4d → 1.62d | constraint none → start on or after 2026-04-25 |
| A24140 | Descolg. Prolong. Inst. RCI | 2026-07-07 A → 2026-06-22 A (-15d) | 2026-08-13 → 2026-07-24 (-20d) | 25% → 50% | 19.4d → 1.62d |  |
| A24170 | Viga Condensadora | 2026-08-24 → 2026-07-21 (-34d) | 2026-09-07 → 2026-08-03 (-35d) |  | 19.4d → -8.7d |  |
| A24180 | Dintel descolgado | 2026-08-31 → 2026-07-28 (-34d) | 2026-09-14 → 2026-08-11 (-34d) |  | 19.4d → -8.7d |  |
| A24190 | Impermeabilizacion Corredor | 2026-09-07 → 2026-08-04 (-34d) | 2026-09-17 → 2026-08-14 (-34d) |  | 19.4d → -8.7d |  |
| A24200 | Afinado de Pisos | 2026-09-11 → 2026-08-11 (-31d) | 2026-09-23 → 2026-08-21 (-33d) |  | 19.4d → -8.7d |  |
| P04 | **Piso 04** | 2026-06-20 → 2026-04-28 (-53d) | 2026-10-20 → 2027-04-13 (+175d) |  |  |  |
| A24240 | Descolg. Prolong. Inst. Sanitarias | 2026-08-14 → 2026-04-28 A (-108d) | 2026-08-26 → 2026-07-29 (-28d) | 0% → 71% | 71d → 130.7d |  |
| A24250 | Descolg. Prolong. HVAC y gas | 2026-08-21 → 2026-06-02 A (-80d) | 2026-09-01 → 2026-07-30 (-33d) | 0% → 50% | 71d → 130.7d |  |
| A24280 | Pañete Resanes | 2026-09-10 → 2026-06-11 A (-91d) | 2026-09-25 → 2026-07-29 (-58d) | 0% → 70% | 345d → 388.26d |  |
| A24230 | Descolg. Prolong. Inst. Comunicaciones | 2026-06-20 A → 2026-06-12 A (-8d) | 2026-06-27 A → 2026-07-06 A (+9d) |  |  |  |
| A24220 | Descolg. Prolong. Inst. hidrosanitarias | 2026-08-10 → 2026-06-24 A (-47d) | 2026-08-20 → 2026-07-27 (-24d) | 0% → 100% | 71d → 130.7d |  |
| A24290 | Viga Condensadora | 2026-09-18 → 2026-07-21 (-59d) | 2026-10-01 → 2026-08-04 (-58d) |  | 345d → 388.26d |  |
| A24270 | Mamposteria | 2026-09-02 → 2026-07-21 A (-43d) | 2026-09-17 → 2026-07-31 (-48d) | 0% → 93% | 71d → 130.7d |  |
| A24260 | Descolg. Prolong. Inst. RCI | 2026-08-27 → 2026-07-27 (-31d) | 2026-09-07 → 2026-08-05 (-33d) |  | 71d → 130.7d |  |
| A24300 | Dintel descolgado | 2026-09-25 → 2026-07-28 (-59d) | 2026-10-08 → 2026-08-12 (-57d) |  | 345d → 388.26d |  |
| A24310 | Impermeabilizacion Corredor | 2026-10-02 → 2026-08-04 (-59d) | 2026-10-14 → 2026-08-18 (-57d) |  | 345d → 388.26d |  |
| A24320 | Afinado de Pisos | 2026-10-08 → 2026-08-11 (-58d) | 2026-10-20 → 2026-08-24 (-57d) |  | 345d → 388.26d |  |
| A24210 | Descolg. Prolong. Inst. Electricas | 2026-06-22 A → 2027-04-13 A (+295d) | 2026-07-16 A → 2027-04-13 A (+271d) |  |  |  |
| P05 | **Piso 05** | 2026-06-29 → 2026-05-21 (-39d) | 2026-11-12 → 2026-09-03 (-70d) |  |  |  |
| A24480 | Pañete Resanes | 2026-10-02 → 2026-05-21 A (-134d) | 2026-10-20 → 2026-08-11 (-70d) | 0% → 68% | 329d → 380.02d |  |
| A24450 | Descolg. Prolong. HVAC y gas | 2026-09-14 → 2026-06-26 A (-80d) | 2026-09-23 → 2026-08-12 (-42d) | 0% → 50% | 71d → 130.7d |  |
| A24410 | Descolg. Prolong. Inst. Electricas | 2026-07-06 A → 2026-07-02 A (-4d) | 2026-07-16 A → 2026-07-31 (+15d) |  | none → 130.7d |  |
| A24420 | Descolg. Prolong. Inst. hidrosanitarias | 2026-09-02 → 2026-07-03 A (-61d) | 2026-09-11 → 2026-08-12 (-30d) | 0% → 8% | 71d → 130.7d |  |
| A24430 | Descolg. Prolong. Inst. Comunicaciones | 2026-06-29 A → 2026-07-08 A (+9d) | 2026-07-04 A → 2026-08-11 A (+38d) |  |  |  |
| A24440 | Descolg. Prolong. Inst. Sanitarias | 2026-09-08 → 2026-07-31 (-39d) | 2026-09-17 → 2026-08-12 (-36d) |  | 71d → 130.7d |  |
| A24490 | Viga Condensadora | 2026-10-13 → 2026-07-31 (-74d) | 2026-10-26 → 2026-08-18 (-69d) |  | 329d → 380.02d |  |
| A24460 | Descolg. Prolong. Inst. RCI | 2026-09-18 → 2026-08-06 (-43d) | 2026-09-29 → 2026-08-19 (-41d) |  | 71d → 130.7d |  |
| A24500 | Dintel descolgado | 2026-10-20 → 2026-08-10 (-71d) | 2026-11-03 → 2026-08-25 (-70d) |  | 329d → 380.02d |  |
| A24510 | Impermeabilizacion Corredor | 2026-10-27 → 2026-08-18 (-70d) | 2026-11-06 → 2026-08-28 (-70d) |  | 329d → 380.02d |  |
| A24520 | Afinado de Pisos | 2026-11-03 → 2026-08-24 (-71d) | 2026-11-12 → 2026-09-03 (-70d) |  | 329d → 380.02d |  |
| A24470 | Mamposteria | 2026-09-24 → 2026-08-26 A (-29d) | 2026-10-09 → 2026-08-13 (-57d) | 0% → 93% | 71d → 130.7d |  |
| P06 | **Piso 06** | 2026-07-08 → 2026-05-26 (-43d) | 2026-12-11 → 2026-10-16 (-56d) |  |  |  |
| A24550 | Descolg. Prolong. Inst. Comunicaciones | 2026-09-30 → 2026-05-26 A (-127d) | 2026-10-09 → 2026-08-20 (-50d) | 0% → 100% | 71d → 130.7d |  |
| A24530 | Descolg. Prolong. Inst. Electricas | 2026-07-08 A → 2026-06-09 A (-29d) | 2026-07-16 A → 2026-08-13 (+28d) |  | none → 130.7d |  |
| A24570 | Descolg. Prolong. HVAC y gas | 2026-10-13 → 2026-07-03 A (-102d) | 2026-10-22 → 2026-08-31 (-52d) | 0% → 50% | 71d → 130.7d |  |

| ID | Task | Start | Finish | Complete | Total float |
| --- | --- | --- | --- | --- | --- |
| A24540 | Descolg. Prolong. Inst. hidrosanitarias | 2026-09-24 → 2026-08-13 (-42d) | 2026-10-05 → 2026-08-25 (-41d) |  | 71d → 130.7d |
| A24560 | Descolg. Prolong. Inst. Sanitarias | 2026-10-06 → 2026-08-20 (-47d) | 2026-10-16 → 2026-08-31 (-46d) |  | 71d → 130.7d |
| A24580 | Descolg. Prolong. Inst. RCI | 2026-10-19 → 2026-08-26 (-54d) | 2026-10-28 → 2026-09-04 (-54d) |  | 71d → 130.7d |
| A24590 | Mamposteria | 2026-10-21 → 2026-08-28 (-54d) | 2026-11-06 → 2026-09-14 (-53d) |  | 71d → 130.7d |
| A24600 | Pañete Resanes | 2026-10-29 → 2026-09-07 (-52d) | 2026-11-17 → 2026-09-22 (-56d) |  | 310d → 349.7d |
| A24610 | Viga Condensadora | 2026-11-10 → 2026-09-16 (-55d) | 2026-11-24 → 2026-09-29 (-56d) |  | 310d → 349.7d |
| A24620 | Dintel descolgado | 2026-11-18 → 2026-09-23 (-56d) | 2026-12-01 → 2026-10-06 (-56d) |  | 310d → 349.7d |
| A24630 | Impermeabilizacion Corredor | 2026-11-25 → 2026-09-30 (-56d) | 2026-12-04 → 2026-10-09 (-56d) |  | 310d → 349.7d |
| A24640 | Afinado de Pisos | 2026-12-01 → 2026-10-06 (-56d) | 2026-12-11 → 2026-10-16 (-56d) |  | 310d → 349.7d |
| P07 | **Piso 07** | 2026-10-21 → 2026-06-24 (-119d) | 2027-02-01 → 2026-11-04 (-89d) |  |  |
| A24650 | Descolg. Prolong. Inst. Electricas | 2026-10-21 → 2026-06-24 A (-119d) | 2026-10-30 → 2026-08-28 (-63d) | 0% → 100% | 71d → 130.7d |
| A24710 | Mamposteria | 2026-11-26 → 2026-06-30 A (-149d) | 2026-12-14 → 2026-10-01 (-74d) | 0% → 29% | 71d → 130.7d |
| A24690 | Descolg. Prolong. HVAC y gas | 2026-11-13 → 2026-07-10 A (-126d) | 2026-11-25 → 2026-09-18 (-68d) | 0% → 50% | 71d → 130.7d |
| A24660 | Descolg. Prolong. Inst. hidrosanitarias | 2026-10-27 → 2026-08-28 (-60d) | 2026-11-06 → 2026-09-08 (-59d) |  | 71d → 130.7d |
| A24680 | Descolg. Prolong. Inst. Sanitarias | 2026-11-09 → 2026-09-09 (-61d) | 2026-11-19 → 2026-09-18 (-62d) |  | 71d → 130.7d |
| A24700 | Descolg. Prolong. Inst. RCI | 2026-11-20 → 2026-09-15 (-66d) | 2026-12-01 → 2026-09-24 (-68d) |  | 71d → 130.7d |
| A24720 | Pañete Resanes | 2026-12-04 → 2026-09-23 (-72d) | 2026-12-22 → 2026-10-09 (-74d) |  | 287d → 338.18d |
| A24730 | Viga Condensadora | 2026-12-15 → 2026-10-01 (-75d) | 2027-01-14 → 2026-10-16 (-90d) |  | 287d → 338.18d |
| A24740 | Dintel descolgado | 2026-12-22 → 2026-10-08 (-75d) | 2027-01-21 → 2026-10-23 (-90d) |  | 287d → 338.18d |
| A24750 | Impermeabilizacion Corredor | 2027-01-15 → 2026-10-16 (-91d) | 2027-01-26 → 2026-10-28 (-90d) |  | 287d → 338.18d |
| A24670 | Descolg. Prolong. Inst. Comunicaciones | 2026-11-03 → 2026-10-16 A (-18d) | 2026-11-12 → 2026-09-03 (-70d) | 0% → 100% | 71d → 130.7d |
| A24760 | Afinado de Pisos | 2027-01-21 → 2026-10-22 (-91d) | 2027-02-01 → 2026-11-04 (-89d) |  | 287d → 338.18d |
| P08 | **Piso 08** | 2026-11-26 → 2026-06-29 (-150d) | 2027-03-09 → 2026-12-04 (-95d) |  |  |
| A24770 | Descolg. Prolong. Inst. Electricas | 2026-11-26 → 2026-06-29 A (-150d) | 2026-12-07 → 2026-09-21 (-77d) | 0% → 100% | 71d → 130.7d |
| A24790 | Descolg. Prolong. Inst. Comunicaciones | 2026-12-09 → 2026-07-10 A (-152d) | 2026-12-18 → 2026-09-25 (-84d) | 0% → 100% | 71d → 130.7d |
| A24780 | Descolg. Prolong. Inst. hidrosanitarias | 2026-12-02 → 2026-09-21 (-72d) | 2026-12-14 → 2026-09-30 (-75d) |  | 71d → 130.7d |
| A24800 | Descolg. Prolong. Inst. Sanitarias | 2026-12-15 → 2026-09-25 (-81d) | 2027-01-12 → 2026-10-06 (-98d) |  | 71d → 130.7d |
| A24810 | Descolg. Prolong. HVAC y gas | 2026-12-21 → 2026-10-01 (-81d) | 2027-01-18 → 2026-10-13 (-97d) |  | 71d → 130.7d |
| A24820 | Descolg. Prolong. Inst. RCI | 2027-01-13 → 2026-10-07 (-98d) | 2027-01-22 → 2026-10-19 (-95d) |  | 71d → 130.7d |
| A24830 | Mamposteria | 2027-01-19 → 2026-10-14 (-97d) | 2027-02-03 → 2026-10-29 (-97d) |  | 71d → 130.7d |
| A24840 | Pañete Resanes | 2027-01-27 → 2026-10-22 (-97d) | 2027-02-11 → 2026-11-09 (-94d) |  | 261d → 316.7d |
| A24850 | Viga Condensadora | 2027-02-05 → 2026-11-03 (-94d) | 2027-02-18 → 2026-11-17 (-93d) |  | 261d → 316.7d |
| A24860 | Dintel descolgado | 2027-02-12 → 2026-11-10 (-94d) | 2027-02-25 → 2026-11-24 (-93d) |  | 261d → 316.7d |
| A24870 | Impermeabilizacion Corredor | 2027-02-22 → 2026-11-19 (-95d) | 2027-03-03 → 2026-11-30 (-93d) |  | 261d → 316.7d |
| A24880 | Afinado de Pisos | 2027-02-26 → 2026-11-25 (-93d) | 2027-03-09 → 2026-12-04 (-95d) |  | 261d → 316.7d |
| P09 | **Piso 09** | 2027-01-19 → 2026-06-30 (-203d) | 2027-04-15 → 2027-01-19 (-86d) |  |  |
| A24890 | Descolg. Prolong. Inst. Electricas | 2027-01-19 → 2026-06-30 A (-203d) | 2027-01-28 → 2026-10-23 (-97d) | 0% → 8% | 71d → 130.7d |
| A24900 | Descolg. Prolong. Inst. hidrosanitarias | 2027-01-25 → 2026-10-14 (-103d) | 2027-02-03 → 2026-10-23 (-103d) |  | 71d → 130.7d |
| A24910 | Descolg. Prolong. Inst. Comunicaciones | 2027-01-29 → 2026-10-20 (-101d) | 2027-02-09 → 2026-10-29 (-103d) |  | 71d → 130.7d |
| A24920 | Descolg. Prolong. Inst. Sanitarias | 2027-02-04 → 2026-10-26 (-101d) | 2027-02-15 → 2026-11-05 (-102d) |  | 71d → 130.7d |
| A24930 | Descolg. Prolong. HVAC y gas | 2027-02-10 → 2026-10-30 (-103d) | 2027-02-19 → 2026-11-11 (-100d) |  | 71d → 130.7d |
| A24940 | Descolg. Prolong. Inst. RCI | 2027-02-16 → 2026-11-06 (-102d) | 2027-02-25 → 2026-11-18 (-99d) |  | 71d → 130.7d |
| A24950 | Mamposteria | 2027-02-22 → 2026-11-12 (-102d) | 2027-03-09 → 2026-11-30 (-99d) |  | 71d → 130.7d |
| A24960 | Pañete Resanes | 2027-03-02 → 2026-11-23 (-99d) | 2027-03-17 → 2026-12-09 (-98d) |  | 239d → 298.7d |
| A24970 | Viga Condensadora | 2027-03-10 → 2026-12-01 (-99d) | 2027-03-30 → 2026-12-15 (-105d) |  | 239d → 298.7d |
| A24980 | Dintel descolgado | 2027-03-17 → 2026-12-09 (-98d) | 2027-04-06 → 2026-12-22 (-105d) |  | 239d → 298.7d |
| A24990 | Impermeabilizacion Corredor | 2027-03-31 → 2026-12-16 (-105d) | 2027-04-09 → 2027-01-13 (-86d) |  | 239d → 298.7d |
| A25000 | Afinado de Pisos | 2027-04-06 → 2026-12-22 (-105d) | 2027-04-15 → 2027-01-19 (-86d) |  | 239d → 298.7d |
| P10 | **Piso 10** | 2027-02-22 → 2026-11-12 (-102d) | 2027-05-20 → 2027-02-22 (-87d) |  |  |
| A25010 | Descolg. Prolong. Inst. Electricas | 2027-02-22 → 2026-11-12 (-102d) | 2027-03-03 → 2026-11-24 (-99d) |  | 71d → 130.7d |
| A25020 | Descolg. Prolong. Inst. hidrosanitarias | 2027-02-26 → 2026-11-19 (-99d) | 2027-03-09 → 2026-11-30 (-99d) |  | 71d → 130.7d |
| A25030 | Descolg. Prolong. Inst. Comunicaciones | 2027-03-04 → 2026-11-25 (-99d) | 2027-03-15 → 2026-12-04 (-101d) |  | 71d → 130.7d |
| A25040 | Descolg. Prolong. Inst. Sanitarias | 2027-03-10 → 2026-12-01 (-99d) | 2027-03-19 → 2026-12-11 (-98d) |  | 71d → 130.7d |
| A25050 | Descolg. Prolong. HVAC y gas | 2027-03-16 → 2026-12-07 (-99d) | 2027-04-01 → 2026-12-17 (-105d) |  | 71d → 130.7d |
| A25060 | Descolg. Prolong. Inst. RCI | 2027-03-29 → 2026-12-14 (-105d) | 2027-04-07 → 2026-12-23 (-105d) |  | 71d → 130.7d |
| A25070 | Mamposteria | 2027-04-02 → 2026-12-18 (-105d) | 2027-04-19 → 2027-01-21 (-88d) |  | 71d → 130.7d |
| A25080 | Pañete Resanes | 2027-04-12 → 2027-01-14 (-88d) | 2027-04-27 → 2027-01-29 (-88d) |  | 215d → 274.7d |
| A25090 | Viga Condensadora | 2027-04-20 → 2027-01-22 (-88d) | 2027-05-03 → 2027-02-04 (-88d) |  | 215d → 274.7d |
| A25100 | Dintel descolgado | 2027-04-27 → 2027-01-29 (-88d) | 2027-05-11 → 2027-02-11 (-89d) |  | 215d → 274.7d |
| A25110 | Impermeabilizacion Corredor | 2027-05-04 → 2027-02-05 (-88d) | 2027-05-14 → 2027-02-16 (-87d) |  | 215d → 274.7d |
| A25120 | Afinado de Pisos | 2027-05-11 → 2027-02-11 (-89d) | 2027-05-20 → 2027-02-22 (-87d) |  | 215d → 274.7d |
| P11 | **Piso 11** | 2027-04-02 → 2026-12-18 (-105d) | 2027-06-25 → 2027-04-02 (-84d) |  |  |
| A25130 | Descolg. Prolong. Inst. Electricas | 2027-04-02 → 2026-12-18 (-105d) | 2027-04-13 → 2027-01-15 (-88d) |  | 71d → 130.7d |
| A25140 | Descolg. Prolong. Inst. hidrosanitarias | 2027-04-08 → 2027-01-12 (-86d) | 2027-04-19 → 2027-01-21 (-88d) |  | 71d → 130.7d |
| A25150 | Descolg. Prolong. Inst. Comunicaciones | 2027-04-14 → 2027-01-18 (-86d) | 2027-04-23 → 2027-01-27 (-86d) |  | 71d → 130.7d |
| A25160 | Descolg. Prolong. Inst. Sanitarias | 2027-04-20 → 2027-01-22 (-88d) | 2027-04-29 → 2027-02-02 (-86d) |  | 71d → 130.7d |
| A25170 | Descolg. Prolong. HVAC y gas | 2027-04-26 → 2027-01-28 (-88d) | 2027-05-05 → 2027-02-08 (-86d) |  | 71d → 130.7d |
| A25180 | Descolg. Prolong. Inst. RCI | 2027-04-30 → 2027-02-03 (-86d) | 2027-05-12 → 2027-02-12 (-89d) |  | 71d → 130.7d |
| A25190 | Mamposteria | 2027-05-06 → 2027-02-09 (-86d) | 2027-05-24 → 2027-02-24 (-89d) |  | 71d → 130.7d |
| A25200 | Pañete Resanes | 2027-05-17 → 2027-02-17 (-89d) | 2027-06-02 → 2027-03-04 (-90d) |  | 191d → 250.7d |

| ID | Task | Start | Finish | Total float |
| --- | --- | --- | --- | --- |
| A25210 | Viga Condensadora | 2027-05-25 → 2027-02-25 (-89d) | 2027-06-09 → 2027-03-10 (-91d) | 191d → 250.7d |
| A25220 | Dintel descolgado | 2027-06-02 → 2027-03-04 (-90d) | 2027-06-16 → 2027-03-17 (-91d) | 191d → 250.7d |
| A25230 | Impermeabilizacion Corredor | 2027-06-10 → 2027-03-11 (-91d) | 2027-06-21 → 2027-03-29 (-84d) | 191d → 250.7d |
| A25240 | Afinado de Pisos | 2027-06-16 → 2027-03-17 (-91d) | 2027-06-25 → 2027-04-02 (-84d) | 191d → 250.7d |
| P12 | **Piso 12** | 2027-05-06 → 2027-02-09 (-86d) | 2027-08-02 → 2027-05-06 (-88d) |  |
| A25250 | Descolg. Prolong. Inst. Electricas | 2027-05-06 → 2027-02-09 (-86d) | 2027-05-18 → 2027-02-18 (-89d) | 71d → 130.7d |
| A25260 | Descolg. Prolong. Inst. hidrosanitarias | 2027-05-13 → 2027-02-15 (-87d) | 2027-05-24 → 2027-02-24 (-89d) | 71d → 130.7d |
| A25270 | Descolg. Prolong. Inst. Comunicaciones | 2027-05-19 → 2027-02-19 (-89d) | 2027-05-28 → 2027-03-02 (-87d) | 71d → 130.7d |
| A25280 | Descolg. Prolong. Inst. Sanitarias | 2027-05-25 → 2027-02-25 (-89d) | 2027-06-04 → 2027-03-08 (-88d) | 71d → 130.7d |
| A25290 | Descolg. Prolong. HVAC y gas | 2027-06-01 → 2027-03-03 (-90d) | 2027-06-11 → 2027-03-12 (-91d) | 71d → 130.7d |
| A25300 | Descolg. Prolong. Inst. RCI | 2027-06-08 → 2027-03-09 (-91d) | 2027-06-17 → 2027-03-18 (-91d) | 71d → 130.7d |
| A25310 | Mamposteria | 2027-06-14 → 2027-03-15 (-91d) | 2027-06-29 → 2027-04-06 (-84d) | 71d → 130.7d |
| A25320 | Pañete Resanes | 2027-06-22 → 2027-03-30 (-84d) | 2027-07-08 → 2027-04-14 (-85d) | 167d → 226.7d |
| A25330 | Viga Condensadora | 2027-06-30 → 2027-04-07 (-84d) | 2027-07-14 → 2027-04-20 (-85d) | 167d → 226.7d |
| A25340 | Dintel descolgado | 2027-07-08 → 2027-04-14 (-85d) | 2027-07-22 → 2027-04-27 (-86d) | 167d → 226.7d |
| A25350 | Impermeabilizacion Corredor | 2027-07-15 → 2027-04-21 (-85d) | 2027-07-27 → 2027-04-30 (-88d) | 167d → 226.7d |
| A25360 | Afinado de Pisos | 2027-07-22 → 2027-04-27 (-86d) | 2027-08-02 → 2027-05-06 (-88d) | 167d → 226.7d |
| P13 | **Piso 13** | 2027-06-14 → 2027-03-15 (-91d) | 2027-09-06 → 2027-06-14 (-84d) |  |
| A25370 | Descolg. Prolong. Inst. Electricas | 2027-06-14 → 2027-03-15 (-91d) | 2027-06-23 → 2027-03-31 (-84d) | 71d → 130.7d |
| A25380 | Descolg. Prolong. Inst. hidrosanitarias | 2027-06-18 → 2027-03-19 (-91d) | 2027-06-29 → 2027-04-06 (-84d) | 71d → 130.7d |
| A25390 | Descolg. Prolong. Inst. Comunicaciones | 2027-06-24 → 2027-04-01 (-84d) | 2027-07-06 → 2027-04-12 (-85d) | 71d → 130.7d |
| A25400 | Descolg. Prolong. Inst. Sanitarias | 2027-06-30 → 2027-04-07 (-84d) | 2027-07-12 → 2027-04-16 (-87d) | 71d → 130.7d |
| A25410 | Descolg. Prolong. HVAC y gas | 2027-07-07 → 2027-04-13 (-85d) | 2027-07-16 → 2027-04-22 (-85d) | 71d → 130.7d |
| A25420 | Descolg. Prolong. Inst. RCI | 2027-07-13 → 2027-04-19 (-85d) | 2027-07-23 → 2027-04-28 (-86d) | 71d → 130.7d |
| A25430 | Mamposteria | 2027-07-19 → 2027-04-23 (-87d) | 2027-08-04 → 2027-05-11 (-85d) | 71d → 130.7d |
| A25440 | Pañete Resanes | 2027-07-28 → 2027-05-03 (-86d) | 2027-08-12 → 2027-05-19 (-85d) | 143d → 202.7d |
| A25450 | Viga Condensadora | 2027-08-05 → 2027-05-12 (-85d) | 2027-08-19 → 2027-05-25 (-86d) | 143d → 202.7d |
| A25460 | Dintel descolgado | 2027-08-12 → 2027-05-19 (-85d) | 2027-08-26 → 2027-06-02 (-85d) | 143d → 202.7d |
| A25470 | Impermeabilizacion Corredor | 2027-08-20 → 2027-05-26 (-86d) | 2027-08-31 → 2027-06-08 (-84d) | 143d → 202.7d |
| A25480 | Afinado de Pisos | 2027-08-26 → 2027-06-02 (-85d) | 2027-09-06 → 2027-06-14 (-84d) | 143d → 202.7d |
| P14 | **Piso 14** | 2027-07-19 → 2027-04-23 (-87d) | 2027-10-08 → 2027-07-19 (-81d) |  |
| A25490 | Descolg. Prolong. Inst. Electricas | 2027-07-19 → 2027-04-23 (-87d) | 2027-07-29 → 2027-05-04 (-86d) | 71d → 130.7d |
| A25500 | Descolg. Prolong. Inst. hidrosanitarias | 2027-07-26 → 2027-04-29 (-88d) | 2027-08-04 → 2027-05-11 (-85d) | 71d → 130.7d |
| A25510 | Descolg. Prolong. Inst. Comunicaciones | 2027-07-30 → 2027-05-05 (-86d) | 2027-08-10 → 2027-05-17 (-85d) | 71d → 130.7d |
| A25520 | Descolg. Prolong. Inst. Sanitarias | 2027-08-05 → 2027-05-12 (-85d) | 2027-08-17 → 2027-05-21 (-88d) | 71d → 130.7d |
| A25530 | Descolg. Prolong. HVAC y gas | 2027-08-11 → 2027-05-18 (-85d) | 2027-08-23 → 2027-05-27 (-88d) | 71d → 130.7d |
| A25540 | Descolg. Prolong. Inst. RCI | 2027-08-18 → 2027-05-24 (-86d) | 2027-08-27 → 2027-06-03 (-85d) | 71d → 130.7d |
| A25550 | Mamposteria | 2027-08-24 → 2027-05-28 (-88d) | 2027-09-08 → 2027-06-16 (-84d) | 71d → 130.7d |
| A25560 | Pañete Resanes | 2027-09-01 → 2027-06-09 (-84d) | 2027-09-16 → 2027-06-24 (-84d) | 119d → 178.7d |
| A25570 | Viga Condensadora | 2027-09-09 → 2027-06-17 (-84d) | 2027-09-22 → 2027-06-30 (-84d) | 119d → 178.7d |
| A25580 | Dintel descolgado | 2027-09-16 → 2027-06-24 (-84d) | 2027-09-29 → 2027-07-08 (-83d) | 119d → 178.7d |
| A25590 | Impermeabilizacion Corredor | 2027-09-23 → 2027-07-01 (-84d) | 2027-10-04 → 2027-07-13 (-83d) | 119d → 178.7d |
| A25600 | Afinado de Pisos | 2027-09-29 → 2027-07-08 (-83d) | 2027-10-08 → 2027-07-19 (-81d) | 119d → 178.7d |
| P15 | **Piso 15** | 2027-08-24 → 2027-05-28 (-88d) | 2027-11-16 → 2027-08-24 (-84d) |  |
| A25610 | Descolg. Prolong. Inst. Electricas | 2027-08-24 → 2027-05-28 (-88d) | 2027-09-02 → 2027-06-10 (-84d) | 71d → 130.7d |
| A25620 | Descolg. Prolong. Inst. hidrosanitarias | 2027-08-30 → 2027-06-04 (-87d) | 2027-09-08 → 2027-06-16 (-84d) | 71d → 130.7d |
| A25630 | Descolg. Prolong. Inst. Comunicaciones | 2027-09-03 → 2027-06-11 (-84d) | 2027-09-14 → 2027-06-22 (-84d) | 71d → 130.7d |
| A25640 | Descolg. Prolong. Inst. Sanitarias | 2027-09-09 → 2027-06-17 (-84d) | 2027-09-20 → 2027-06-28 (-84d) | 71d → 130.7d |
| A25650 | Descolg. Prolong. HVAC y gas | 2027-09-15 → 2027-06-23 (-84d) | 2027-09-24 → 2027-07-02 (-84d) | 71d → 130.7d |
| A25660 | Descolg. Prolong. Inst. RCI | 2027-09-21 → 2027-06-29 (-84d) | 2027-09-30 → 2027-07-09 (-83d) | 71d → 130.7d |
| A25670 | Mamposteria | 2027-09-27 → 2027-07-06 (-83d) | 2027-10-12 → 2027-07-22 (-82d) | 71d → 130.7d |
| A25680 | Pañete Resanes | 2027-10-05 → 2027-07-14 (-83d) | 2027-10-21 → 2027-07-30 (-83d) | 95d → 154.7d |
| A25690 | Viga Condensadora | 2027-10-13 → 2027-07-23 (-82d) | 2027-10-27 → 2027-08-05 (-83d) | 95d → 154.7d |
| A25700 | Dintel descolgado | 2027-10-21 → 2027-07-30 (-83d) | 2027-11-04 → 2027-08-12 (-84d) | 95d → 154.7d |
| A25710 | Impermeabilizacion Corredor | 2027-10-28 → 2027-08-06 (-83d) | 2027-11-09 → 2027-08-18 (-83d) | 95d → 154.7d |
| A25720 | Afinado de Pisos | 2027-11-04 → 2027-08-12 (-84d) | 2027-11-16 → 2027-08-24 (-84d) | 95d → 154.7d |
| P16 | **Piso 16** | 2027-09-27 → 2027-07-06 (-83d) | 2027-12-21 → 2027-09-27 (-85d) |  |
| A25730 | Descolg. Prolong. Inst. Electricas | 2027-09-27 → 2027-07-06 (-83d) | 2027-10-06 → 2027-07-15 (-83d) | 71d → 130.7d |
| A25740 | Descolg. Prolong. Inst. hidrosanitarias | 2027-10-01 → 2027-07-12 (-81d) | 2027-10-12 → 2027-07-22 (-82d) | 71d → 130.7d |
| A25750 | Descolg. Prolong. Inst. Comunicaciones | 2027-10-07 → 2027-07-16 (-83d) | 2027-10-19 → 2027-07-28 (-83d) | 71d → 130.7d |
| A25760 | Descolg. Prolong. Inst. Sanitarias | 2027-10-13 → 2027-07-23 (-82d) | 2027-10-25 → 2027-08-03 (-83d) | 71d → 130.7d |
| A25770 | Descolg. Prolong. HVAC y gas | 2027-10-20 → 2027-07-29 (-83d) | 2027-10-29 → 2027-08-09 (-81d) | 71d → 130.7d |
| A25780 | Descolg. Prolong. Inst. RCI | 2027-10-26 → 2027-08-04 (-83d) | 2027-11-05 → 2027-08-13 (-84d) | 71d → 130.7d |
| A25790 | Mamposteria | 2027-11-02 → 2027-08-10 (-84d) | 2027-11-18 → 2027-08-26 (-84d) | 71d → 130.7d |
| A25800 | Pañete Resanes | 2027-11-10 → 2027-08-19 (-83d) | 2027-11-26 → 2027-09-03 (-84d) | 71d → 130.7d |
| A25810 | Viga Condensadora | 2027-11-19 → 2027-08-27 (-84d) | 2027-12-02 → 2027-09-09 (-84d) | 71d → 130.7d |
| A25820 | Dintel descolgado | 2027-11-26 → 2027-09-03 (-84d) | 2027-12-10 → 2027-09-16 (-85d) | 71d → 130.7d |
| A25830 | Impermeabilizacion Corredor | 2027-12-03 → 2027-09-10 (-84d) | 2027-12-15 → 2027-09-21 (-85d) | 71d → 130.7d |
| A25840 | Afinado de Pisos | 2027-12-10 → 2027-09-16 (-85d) | 2027-12-21 → 2027-09-27 (-85d) | 71d → 130.7d |
| 02PfjACA | **Punto Fijo Acabados** | 2026-10-09 → 2026-06-30 (-101d) | 2028-03-21 → 2028-04-27 (+37d) |  |

| ID | Task | Start | Finish | Duration | Complete | Total float | Predecessors | Other |
| --- | --- | --- | --- | --- | --- | --- | --- | --- |
| P03 | **Piso 03** | 2026-10-09 → 2026-06-30 (-101d) | 2027-02-04 → 2026-12-15 (-51d) |  |  |  |  |  |
| A25910 | Inst cableado elec-com | 2026-12-03 → 2026-06-30 A (-156d) | 2026-12-16 → 2026-10-26 (-51d) | 8d → 10d | 0% → 58% | 284.4d → 220.1d |  |  |
| A25850 | Estructura cielo rasos | 2026-10-22 → 2026-07-10 A (-104d) | 2026-11-04 → 2026-09-08 (-57d) | 8d → 10d | 0% → 8% | 19.4d → -8.7d |  | resources Dummy [0.01 h] → Dummy [0.02 h] |
| A25860 | Dinteles borde losa | 2026-10-27 → 2026-07-10 A (-109d) | 2026-11-09 → 2026-09-14 (-56d) | 8d → 10d | 0% → 5% | 19.4d → -8.7d |  | resources Dummy [0.01 h] → Dummy [0.02 h] |
| A11970 | Estuco y primera mano | 2026-10-09 → 2026-08-11 (-59d) | 2026-10-22 → 2026-08-25 (-58d) | 8d → 10d |  | 19.4d → -8.7d | A24200 SS+20d → A24200 SS | resources Dummy [0.05 h] → Dummy [0.06 h] |
| A25870 | Inst lamina y pintura cielos rasos u muros | 2026-11-09 → 2026-09-14 (-56d) | 2026-11-20 → 2026-09-28 (-53d) | 8d → 10d |  | 284.4d → 220.1d |  | resources Dummy [0.01 h] → Dummy [0.02 h] |
| A25880 | Segunda mano | 2026-11-13 → 2026-09-22 (-52d) | 2026-11-26 → 2026-10-06 (-51d) | 8d → 10d |  | 284.4d → 220.1d |  | resources Dummy [0.01 h] → Dummy [0.02 h] |
| A25890 | Ceramina y guarda escobas | 2026-11-19 → 2026-09-29 (-51d) | 2026-12-01 → 2026-10-14 (-48d) | 8d → 10d |  | 284.4d → 220.1d |  | resources Dummy [0.01 h] → Dummy [0.02 h] |
| A25900 | Instalacion materas | 2026-11-26 → 2026-10-08 (-49d) | 2026-12-09 → 2026-10-23 (-47d) | 8d → 10d |  | 284.4d → 220.1d |  |  |
| A25920 | Inst apa elec-com | 2026-12-11 → 2026-10-21 (-51d) | 2026-12-23 → 2026-11-05 (-48d) | 8d → 10d |  | 284.4d → 220.1d |  |  |
| A25930 | Carpinteria metalica | 2026-12-23 → 2026-11-05 (-48d) | 2027-01-21 → 2026-11-20 (-62d) | 8d → 10d |  | 284.4d → 220.1d |  | resources Dummy [0.02 h] → Dummy [0.03 h] |
| A25940 | Tercera mano | 2026-12-21 → 2026-11-05 (-46d) | 2027-01-19 → 2026-11-20 (-60d) | 8d → 10d |  | 284.4d → 310.8d |  |  |
| A25950 | Detallado PF | 2027-01-13 → 2026-11-13 (-61d) | 2027-01-25 → 2026-11-30 (-56d) | 8d → 10d |  | 284.4d → 310.8d |  | resources Dummy [0.02 h] → Dummy [0.03 h] |
| A25960 | Aseo | 2027-01-25 → 2026-11-30 (-56d) | 2027-02-04 → 2026-12-15 (-51d) | 8d → 10d |  | 284.4d → 310.8d |  | resources Dummy [0.01 h] → Dummy [0.02 h] |
| P04 | **Piso 04** | 2026-10-30 → 2026-09-07 (-53d) | 2027-04-05 → 2027-03-11 (-25d) |  |  |  |  |  |
| A25970 | Estuco y primera mano | 2026-10-30 → 2026-09-07 (-53d) | 2026-11-12 → 2026-09-21 (-52d) | 8d → 10d |  | 19.4d → -8.7d |  | resources Dummy [0.05 h] → Dummy [0.06 h] |
| A25980 | Estructura cielo rasos | 2026-11-12 → 2026-09-21 (-52d) | 2026-11-25 → 2026-10-05 (-51d) | 8d → 10d |  | 19.4d → -8.7d |  | resources Dummy [0.01 h] → Dummy [0.02 h] |
| A25990 | Dinteles borde losa | 2026-11-25 → 2026-10-05 (-51d) | 2026-12-07 → 2026-10-20 (-48d) | 8d → 10d |  | 19.4d → -8.7d |  | resources Dummy [0.01 h] → Dummy [0.02 h] |
| A26000 | Inst lamina y pintura cielos rasos u muros | 2026-12-07 → 2026-10-20 (-48d) | 2026-12-18 → 2026-11-04 (-44d) | 8d → 10d |  | 247.4d → 262d |  | resources Dummy [0.01 h] → Dummy [0.02 h] |
| A26010 | Segunda mano | 2026-12-18 → 2026-11-04 (-44d) | 2027-01-18 → 2026-11-19 (-60d) | 8d → 10d |  | 247.4d → 262d |  | resources Dummy [0.01 h] → Dummy [0.02 h] |
| A26020 | Ceramina y guarda escobas | 2027-01-18 → 2026-11-19 (-60d) | 2027-01-28 → 2026-12-03 (-56d) | 8d → 10d |  | 247.4d → 262d |  | resources Dummy [0.01 h] → Dummy [0.02 h] |
| A26030 | Instalacion materas | 2027-01-28 → 2026-12-03 (-56d) | 2027-02-09 → 2026-12-18 (-53d) | 8d → 10d |  | 247.4d → 262d |  |  |
| A26040 | Inst cableado elec-com | 2027-02-09 → 2026-12-18 (-53d) | 2027-02-19 → 2027-01-20 (-30d) | 8d → 10d |  | 247.4d → 262d |  |  |
| A26050 | Inst apa elec-com | 2027-02-19 → 2027-01-20 (-30d) | 2027-03-03 → 2027-02-03 (-28d) | 8d → 10d |  | 247.4d → 262d |  |  |
| A26060 | Carpinteria metalica | 2027-03-03 → 2027-02-03 (-28d) | 2027-03-15 → 2027-02-17 (-26d) | 8d → 10d |  | 247.4d → 262d |  | resources Dummy [0.02 h] → Dummy [0.03 h] |
| A26070 | Tercera mano | 2027-03-01 → 2027-02-03 (-26d) | 2027-03-11 → 2027-02-17 (-22d) | 8d → 10d |  | 247.4d → 262d |  |  |
| A26080 | Detallado PF | 2027-03-05 → 2027-02-11 (-22d) | 2027-03-17 → 2027-02-25 (-20d) | 8d → 10d |  | 247.4d → 262d |  | resources Dummy [0.02 h] → Dummy [0.03 h] |
| A26090 | Aseo | 2027-03-17 → 2027-02-25 (-20d) | 2027-04-05 → 2027-03-11 (-25d) | 8d → 10d |  | 247.4d → 262d |  | resources Dummy [0.01 h] → Dummy [0.02 h] |
| P05 | **Piso 05** | 2026-11-30 → 2026-10-13 (-48d) | 2027-04-30 → 2027-04-22 (-8d) |  |  |  |  |  |
| A26100 | Estuco y primera mano | 2026-11-30 → 2026-10-13 (-48d) | 2026-12-11 → 2026-10-27 (-45d) | 8d → 10d |  | 19.4d → -8.7d |  | resources Dummy [0.05 h] → Dummy [0.06 h] |
| A26110 | Estructura cielo rasos | 2026-12-11 → 2026-10-27 (-45d) | 2026-12-23 → 2026-11-11 (-42d) | 8d → 10d |  | 19.4d → -8.7d |  | resources Dummy [0.01 h] → Dummy [0.02 h] |
| A26120 | Dinteles borde losa | 2026-12-23 → 2026-11-11 (-42d) | 2027-01-21 → 2026-11-26 (-56d) | 8d → 10d |  | 19.4d → -8.7d |  | resources Dummy [0.01 h] → Dummy [0.02 h] |
| A26130 | Inst lamina y pintura cielos rasos u muros | 2027-01-21 → 2026-11-26 (-56d) | 2027-02-02 → 2026-12-11 (-53d) | 8d → 10d |  | 228.4d → 118.3d |  | resources Dummy [0.01 h] → Dummy [0.02 h] |
| A26140 | Segunda mano | 2027-02-02 → 2026-12-11 (-53d) | 2027-02-12 → 2027-01-13 (-30d) | 8d → 10d |  | 228.4d → 118.3d |  | resources Dummy [0.01 h] → Dummy [0.02 h] |
| A26150 | Ceramina y guarda escobas | 2027-02-12 → 2027-01-13 (-30d) | 2027-02-24 → 2027-01-27 (-28d) | 8d → 10d |  | 228.4d → 118.3d |  | resources Dummy [0.01 h] → Dummy [0.02 h] |
| A26160 | Instalacion materas | 2027-02-24 → 2027-01-27 (-28d) | 2027-03-08 → 2027-02-10 (-26d) | 8d → 10d |  | 228.4d → 118.3d |  |  |
| A26170 | Inst cableado elec-com | 2027-03-08 → 2027-02-10 (-26d) | 2027-03-18 → 2027-02-24 (-22d) | 8d → 10d |  | 228.4d → 118.3d |  |  |
| A26180 | Inst apa elec-com | 2027-03-18 → 2027-02-24 (-22d) | 2027-04-06 → 2027-03-10 (-27d) | 8d → 10d |  | 228.4d → 118.3d |  |  |
| A26190 | Carpinteria metalica | 2027-04-06 → 2027-03-10 (-27d) | 2027-04-16 → 2027-03-31 (-16d) | 8d → 10d |  | 228.4d → 237d |  | resources Dummy [0.02 h] → Dummy [0.03 h] |
| A26200 | Tercera mano | 2027-04-02 → 2027-03-10 (-23d) | 2027-04-14 → 2027-03-31 (-14d) | 8d → 10d |  | 228.4d → 237d |  |  |
| A26210 | Detallado PF | 2027-04-08 → 2027-03-18 (-21d) | 2027-04-20 → 2027-04-08 (-12d) | 8d → 10d |  | 228.4d → 237d |  | resources Dummy [0.02 h] → Dummy [0.03 h] |
| A26220 | Aseo | 2027-04-20 → 2027-04-08 (-12d) | 2027-04-30 → 2027-04-22 (-8d) | 8d → 10d |  | 228.4d → 237d |  | resources Dummy [0.01 h] → Dummy [0.02 h] |
| P06 | **Piso 06** | 2027-01-14 → 2026-11-19 (-56d) |  |  |  |  |  |  |
| A26230 | Estuco y primera mano | 2027-01-14 → 2026-11-19 (-56d) | 2027-01-26 → 2026-12-03 (-54d) | 8d → 10d |  | 19.4d → -8.7d |  | resources Dummy [0.05 h] → Dummy [0.06 h] |
| A26240 | Estructura cielo rasos | 2027-01-26 → 2026-12-03 (-54d) | 2027-02-05 → 2026-12-18 (-49d) | 8d → 10d |  | 19.4d → -8.7d |  | resources Dummy [0.01 h] → Dummy [0.02 h] |
| A26250 | Dinteles borde losa | 2027-02-05 → 2026-12-18 (-49d) | 2027-02-17 → 2027-01-20 (-28d) | 8d → 10d |  | 19.4d → -8.7d |  | resources Dummy [0.01 h] → Dummy [0.02 h] |
| A26260 | Inst lamina y pintura cielos rasos u muros | 2027-02-17 → 2027-01-20 (-28d) | 2027-03-01 → 2027-02-03 (-26d) | 8d → 10d |  | 209.4d → 125.3d |  | resources Dummy [0.01 h] → Dummy [0.02 h] |
| A26270 | Segunda mano | 2027-03-01 → 2027-02-03 (-26d) | 2027-03-11 → 2027-02-17 (-22d) | 8d → 10d |  | 209.4d → 125.3d |  | resources Dummy [0.01 h] → Dummy [0.02 h] |
| A26280 | Ceramina y guarda escobas | 2027-03-11 → 2027-02-17 (-22d) | 2027-03-30 → 2027-03-03 (-27d) | 8d → 10d |  | 209.4d → 125.3d |  | resources Dummy [0.01 h] → Dummy [0.02 h] |
| A26290 | Instalacion materas | 2027-03-30 → 2027-03-03 (-27d) | 2027-04-09 → 2027-03-17 (-23d) | 8d → 10d |  | 209.4d → 125.3d |  |  |
| A26300 | Inst cableado elec-com | 2027-04-09 → 2027-03-17 (-23d) | 2027-04-21 → 2027-04-07 (-14d) | 8d → 10d |  | 209.4d → 125.3d |  |  |
| A26310 | Inst apa elec-com | 2027-04-21 → 2027-04-07 (-14d) | 2027-05-03 → 2027-04-21 (-12d) | 8d → 10d |  | 209.4d → 125.3d |  |  |
| A26320 | Carpinteria metalica | 2027-05-03 → 2027-04-21 (-12d) | 2027-05-14 → 2027-05-05 (-9d) | 8d → 10d |  | 209.4d → 125.3d |  | resources Dummy [0.02 h] → Dummy [0.03 h] |
| A26330 | Tercera mano | 2027-04-29 → 2027-04-21 (-8d) | 2027-05-12 → 2027-05-05 (-7d) | 8d → 10d |  | 209.4d → 125.3d |  |  |
| A26340 | Detallado PF | 2027-05-05 → 2027-04-29 (-6d) | 2027-05-18 → 2027-05-14 (-4d) | 8d → 10d |  | 209.4d → 125.3d |  | resources Dummy [0.02 h] → Dummy [0.03 h] |
| A26350 | Aseo | 2027-05-18 → 2027-05-14 (-4d) |  | 8d → 10d |  | 209.4d → 212d |  | resources Dummy [0.01 h] → Dummy [0.02 h] |
| P07 | **Piso 07** | 2027-02-10 → 2027-01-13 (-28d) | 2027-06-28 → 2027-07-07 (+9d) |  |  |  |  |  |
| A26360 | Estuco y primera mano | 2027-02-10 → 2027-01-13 (-28d) | 2027-02-22 → 2027-01-27 (-26d) | 8d → 10d |  | 19.4d → -8.7d |  | resources Dummy [0.05 h] → Dummy [0.06 h] |
| A26370 | Estructura cielo rasos | 2027-02-22 → 2027-01-27 (-26d) | 2027-03-04 → 2027-02-10 (-22d) | 8d → 10d |  | 19.4d → -8.7d |  | resources Dummy [0.01 h] → Dummy [0.02 h] |
| A26380 | Dinteles borde losa | 2027-03-04 → 2027-02-10 (-22d) | 2027-03-16 → 2027-02-24 (-20d) | 8d → 10d |  | 19.4d → -8.7d |  | resources Dummy [0.01 h] → Dummy [0.02 h] |
| A26390 | Inst lamina y pintura cielos rasos u muros | 2027-03-16 → 2027-02-24 (-20d) | 2027-04-02 → 2027-03-10 (-23d) | 8d → 10d |  | 190.4d → 187d |  | resources Dummy [0.01 h] → Dummy [0.02 h] |
| A26400 | Segunda mano | 2027-04-02 → 2027-03-10 (-23d) | 2027-04-14 → 2027-03-31 (-14d) | 8d → 10d |  | 190.4d → 187d |  | resources Dummy [0.01 h] → Dummy [0.02 h] |
| A26410 | Ceramina y guarda escobas | 2027-04-14 → 2027-03-31 (-14d) | 2027-04-26 → 2027-04-14 (-12d) | 8d → 10d |  | 190.4d → 187d |  | resources Dummy [0.01 h] → Dummy [0.02 h] |
| A26420 | Instalacion materas | 2027-04-26 → 2027-04-14 (-12d) | 2027-05-06 → 2027-04-28 (-8d) | 8d → 10d |  | 190.4d → 187d |  |  |
| A26430 | Inst cableado elec-com | 2027-05-06 → 2027-04-28 (-8d) | 2027-05-19 → 2027-05-13 (-6d) | 8d → 10d |  | 190.4d → 187d |  |  |
| A26440 | Inst apa elec-com | 2027-05-19 → 2027-05-13 (-6d) | 2027-06-01 → 2027-05-27 (-5d) | 8d → 10d |  | 190.4d → 187d |  |  |
| A26450 | Carpinteria metalica | 2027-06-01 → 2027-05-27 (-5d) |  | 8d → 10d |  | 190.4d → 187d |  | resources Dummy [0.02 h] → Dummy [0.03 h] |
| A26460 | Tercera mano |  | 2027-06-10 → 2027-06-14 (+4d) | 8d → 10d |  | 190.4d → 187d |  |  |
| A26470 | Detallado PF | 2027-06-03 → 2027-06-08 (+5d) | 2027-06-16 → 2027-06-22 (+6d) | 8d → 10d |  | 190.4d → 187d |  | resources Dummy [0.02 h] → Dummy [0.03 h] |
| A26480 | Aseo | 2027-06-16 → 2027-06-22 (+6d) | 2027-06-28 → 2027-07-07 (+9d) | 8d → 10d |  | 190.4d → 187d |  | resources Dummy [0.01 h] → Dummy [0.02 h] |

| ID | Task | Start | Finish | Duration | Total float | Other |
| --- | --- | --- | --- | --- | --- | --- |
| P08 | **Piso 08** | 2027-03-09 → 2027-02-17 (-20d) | 2027-07-27 → 2027-08-12 (+16d) |  |  |  |
| A26490 | Estuco y primera mano | 2027-03-09 → 2027-02-17 (-20d) | 2027-03-19 → 2027-03-03 (-16d) | 8d → 10d | 19.4d → -8.7d | resources Dummy [0.05 h] → Dummy [0.06 h] |
| A26500 | Estructura cielo rasos | 2027-03-19 → 2027-03-03 (-16d) | 2027-04-07 → 2027-03-17 (-21d) | 8d → 10d | 19.4d → -8.7d | resources Dummy [0.01 h] → Dummy [0.02 h] |
| A26510 | Dinteles borde losa | 2027-04-07 → 2027-03-17 (-21d) | 2027-04-19 → 2027-04-07 (-12d) | 8d → 10d | 19.4d → -8.7d | resources Dummy [0.01 h] → Dummy [0.02 h] |
| A26520 | Inst lamina y pintura cielos rasos u muros | 2027-04-19 → 2027-04-07 (-12d) | 2027-04-29 → 2027-04-21 (-8d) | 8d → 10d | 171.4d → 162d | resources Dummy [0.01 h] → Dummy [0.02 h] |
| A26530 | Segunda mano | 2027-04-29 → 2027-04-21 (-8d) | 2027-05-12 → 2027-05-05 (-7d) | 8d → 10d | 171.4d → 162d | resources Dummy [0.01 h] → Dummy [0.02 h] |
| A26540 | Ceramina y guarda escobas | 2027-05-12 → 2027-05-05 (-7d) | 2027-05-24 → 2027-05-20 (-4d) | 8d → 10d | 171.4d → 162d | resources Dummy [0.01 h] → Dummy [0.02 h] |
| A26550 | Instalacion materas | 2027-05-24 → 2027-05-20 (-4d) |  | 8d → 10d | 171.4d → 162d |  |
| A26560 | Inst cableado elec-com |  | 2027-06-17 → 2027-06-21 (+4d) | 8d → 10d | 171.4d → 162d |  |
| A26570 | Inst apa elec-com | 2027-06-17 → 2027-06-21 (+4d) | 2027-06-29 → 2027-07-06 (+7d) | 8d → 10d | 171.4d → 162d |  |
| A26580 | Carpinteria metalica | 2027-06-29 → 2027-07-06 (+7d) | 2027-07-12 → 2027-07-21 (+9d) | 8d → 10d | 171.4d → 162d | resources Dummy [0.02 h] → Dummy [0.03 h] |
| A26590 | Tercera mano | 2027-06-25 → 2027-07-06 (+11d) | 2027-07-08 → 2027-07-21 (+13d) | 8d → 10d | 171.4d → 162d |  |
| A26600 | Detallado PF | 2027-07-01 → 2027-07-14 (+13d) | 2027-07-14 → 2027-07-29 (+15d) | 8d → 10d | 171.4d → 162d | resources Dummy [0.02 h] → Dummy [0.03 h] |
| A26610 | Aseo | 2027-07-14 → 2027-07-29 (+15d) | 2027-07-27 → 2027-08-12 (+16d) | 8d → 10d | 171.4d → 162d | resources Dummy [0.01 h] → Dummy [0.02 h] |
| P09 | **Piso 09** | 2027-04-12 → 2027-03-31 (-12d) | 2027-08-24 → 2027-09-17 (+24d) |  |  |  |
| A26620 | Estuco y primera mano | 2027-04-12 → 2027-03-31 (-12d) | 2027-04-22 → 2027-04-14 (-8d) | 8d → 10d | 19.4d → -8.7d | resources Dummy [0.05 h] → Dummy [0.06 h] |
| A26630 | Estructura cielo rasos | 2027-04-22 → 2027-04-14 (-8d) | 2027-05-04 → 2027-04-28 (-6d) | 8d → 10d | 19.4d → -8.7d | resources Dummy [0.01 h] → Dummy [0.02 h] |
| A26640 | Dinteles borde losa | 2027-05-04 → 2027-04-28 (-6d) | 2027-05-17 → 2027-05-13 (-4d) | 8d → 10d | 19.4d → -8.7d | resources Dummy [0.01 h] → Dummy [0.02 h] |
| A26650 | Inst lamina y pintura cielos rasos u muros | 2027-05-17 → 2027-05-13 (-4d) |  | 8d → 10d | 152.4d → 56.3d | resources Dummy [0.01 h] → Dummy [0.02 h] |
| A26660 | Segunda mano |  | 2027-06-10 → 2027-06-14 (+4d) | 8d → 10d | 152.4d → 56.3d | resources Dummy [0.01 h] → Dummy [0.02 h] |
| A26670 | Ceramina y guarda escobas | 2027-06-10 → 2027-06-14 (+4d) | 2027-06-22 → 2027-06-28 (+6d) | 8d → 10d | 152.4d → 56.3d | resources Dummy [0.01 h] → Dummy [0.02 h] |
| A26680 | Instalacion materas | 2027-06-22 → 2027-06-28 (+6d) | 2027-07-02 → 2027-07-13 (+11d) | 8d → 10d | 152.4d → 56.3d |  |
| A26690 | Inst cableado elec-com | 2027-07-02 → 2027-07-13 (+11d) | 2027-07-15 → 2027-07-28 (+13d) | 8d → 10d | 152.4d → 56.3d |  |
| A26700 | Inst apa elec-com | 2027-07-15 → 2027-07-28 (+13d) | 2027-07-28 → 2027-08-11 (+14d) | 8d → 10d | 152.4d → 56.3d |  |
| A26710 | Carpinteria metalica | 2027-07-28 → 2027-08-11 (+14d) | 2027-08-09 → 2027-08-26 (+17d) | 8d → 10d | 152.4d → 56.3d | resources Dummy [0.02 h] → Dummy [0.03 h] |
| A26720 | Tercera mano | 2027-07-26 → 2027-08-11 (+16d) | 2027-08-05 → 2027-08-26 (+21d) | 8d → 10d | 152.4d → 137d |  |
| A26730 | Detallado PF | 2027-07-30 → 2027-08-20 (+21d) | 2027-08-11 → 2027-09-03 (+23d) | 8d → 10d | 152.4d → 137d | resources Dummy [0.02 h] → Dummy [0.03 h] |
| A26740 | Aseo | 2027-08-11 → 2027-09-03 (+23d) | 2027-08-24 → 2027-09-17 (+24d) | 8d → 10d | 152.4d → 137d | resources Dummy [0.01 h] → Dummy [0.02 h] |
| P10 | **Piso 10** | 2027-05-07 → 2027-05-05 (-2d) | 2027-09-20 → 2027-10-25 (+35d) |  |  |  |
| A26750 | Estuco y primera mano | 2027-05-07 → 2027-05-05 (-2d) |  | 8d → 10d | 19.4d → -8.7d | resources Dummy [0.05 h] → Dummy [0.06 h] |
| A26760 | Estructura cielo rasos |  | 2027-06-02 → 2027-06-04 (+2d) | 8d → 10d | 19.4d → -8.7d | resources Dummy [0.01 h] → Dummy [0.02 h] |
| A26770 | Dinteles borde losa | 2027-06-02 → 2027-06-04 (+2d) | 2027-06-15 → 2027-06-21 (+6d) | 8d → 10d | 19.4d → -8.7d | resources Dummy [0.01 h] → Dummy [0.02 h] |
| A26780 | Inst lamina y pintura cielos rasos u muros | 2027-06-15 → 2027-06-21 (+6d) | 2027-06-25 → 2027-07-06 (+11d) | 8d → 10d | 133.4d → 112d | resources Dummy [0.01 h] → Dummy [0.02 h] |
| A26790 | Segunda mano | 2027-06-25 → 2027-07-06 (+11d) | 2027-07-08 → 2027-07-21 (+13d) | 8d → 10d | 133.4d → 112d | resources Dummy [0.01 h] → Dummy [0.02 h] |
| A26800 | Ceramina y guarda escobas | 2027-07-08 → 2027-07-21 (+13d) | 2027-07-21 → 2027-08-04 (+14d) | 8d → 10d | 133.4d → 112d | resources Dummy [0.01 h] → Dummy [0.02 h] |
| A26810 | Instalacion materas | 2027-07-21 → 2027-08-04 (+14d) | 2027-08-02 → 2027-08-19 (+17d) | 8d → 10d | 133.4d → 112d |  |
| A26820 | Inst cableado elec-com | 2027-08-02 → 2027-08-19 (+17d) | 2027-08-12 → 2027-09-02 (+21d) | 8d → 10d | 133.4d → 112d |  |
| A26830 | Inst apa elec-com | 2027-08-12 → 2027-09-02 (+21d) | 2027-08-25 → 2027-09-16 (+22d) | 8d → 10d | 133.4d → 112d |  |
| A26840 | Carpinteria metalica | 2027-08-25 → 2027-09-16 (+22d) | 2027-09-06 → 2027-09-30 (+24d) | 8d → 10d | 133.4d → 112d | resources Dummy [0.02 h] → Dummy [0.03 h] |
| A26850 | Tercera mano | 2027-08-23 → 2027-09-16 (+24d) | 2027-09-02 → 2027-09-30 (+28d) | 8d → 10d | 133.4d → 112d |  |
| A26860 | Detallado PF | 2027-08-27 → 2027-09-24 (+28d) | 2027-09-08 → 2027-10-08 (+30d) | 8d → 10d | 133.4d → 112d | resources Dummy [0.02 h] → Dummy [0.03 h] |
| A26870 | Aseo | 2027-09-08 → 2027-10-08 (+30d) | 2027-09-20 → 2027-10-25 (+35d) | 8d → 10d | 133.4d → 112d | resources Dummy [0.01 h] → Dummy [0.02 h] |
| P11 | **Piso 11** | 2027-06-08 → 2027-06-14 (+6d) | 2027-10-15 → 2027-12-01 (+47d) |  |  |  |
| A26880 | Estuco y primera mano | 2027-06-08 → 2027-06-14 (+6d) | 2027-06-18 → 2027-06-28 (+10d) | 8d → 10d | 19.4d → -8.7d | resources Dummy [0.05 h] → Dummy [0.06 h] |
| A26890 | Estructura cielo rasos | 2027-06-18 → 2027-06-28 (+10d) | 2027-06-30 → 2027-07-13 (+13d) | 8d → 10d | 19.4d → -8.7d | resources Dummy [0.01 h] → Dummy [0.02 h] |
| A26900 | Dinteles borde losa | 2027-06-30 → 2027-07-13 (+13d) | 2027-07-13 → 2027-07-28 (+15d) | 8d → 10d | 19.4d → -8.7d | resources Dummy [0.01 h] → Dummy [0.02 h] |
| A26910 | Inst lamina y pintura cielos rasos u muros | 2027-07-13 → 2027-07-28 (+15d) | 2027-07-26 → 2027-08-11 (+16d) | 8d → 10d | 114.4d → 87d | resources Dummy [0.01 h] → Dummy [0.02 h] |
| A26920 | Segunda mano | 2027-07-26 → 2027-08-11 (+16d) | 2027-08-05 → 2027-08-26 (+21d) | 8d → 10d | 114.4d → 87d | resources Dummy [0.01 h] → Dummy [0.02 h] |
| A26930 | Ceramina y guarda escobas | 2027-08-05 → 2027-08-26 (+21d) | 2027-08-18 → 2027-09-09 (+22d) | 8d → 10d | 114.4d → 87d | resources Dummy [0.01 h] → Dummy [0.02 h] |
| A26940 | Instalacion materas | 2027-08-18 → 2027-09-09 (+22d) | 2027-08-30 → 2027-09-23 (+24d) | 8d → 10d | 114.4d → 87d |  |
| A26950 | Inst cableado elec-com | 2027-08-30 → 2027-09-23 (+24d) | 2027-09-09 → 2027-10-07 (+28d) | 8d → 10d | 114.4d → 87d |  |
| A26960 | Inst apa elec-com | 2027-09-09 → 2027-10-07 (+28d) | 2027-09-21 → 2027-10-22 (+31d) | 8d → 10d | 114.4d → 87d |  |
| A26970 | Carpinteria metalica | 2027-09-21 → 2027-10-22 (+31d) | 2027-10-01 → 2027-11-08 (+38d) | 8d → 10d | 114.4d → 87d | resources Dummy [0.02 h] → Dummy [0.03 h] |
| A26980 | Tercera mano | 2027-09-17 → 2027-10-22 (+35d) | 2027-09-29 → 2027-11-08 (+40d) | 8d → 10d | 114.4d → 87d |  |
| A26990 | Detallado PF | 2027-09-23 → 2027-11-02 (+40d) | 2027-10-05 → 2027-11-17 (+43d) | 8d → 10d | 114.4d → 87d | resources Dummy [0.02 h] → Dummy [0.03 h] |
| A27000 | Aseo | 2027-10-05 → 2027-11-17 (+43d) | 2027-10-15 → 2027-12-01 (+47d) | 8d → 10d | 114.4d → 87d | resources Dummy [0.01 h] → Dummy [0.02 h] |
| P12 | **Piso 12** | 2027-07-06 → 2027-07-21 (+15d) | 2027-11-16 → 2028-01-24 (+69d) |  |  |  |
| A27010 | Estuco y primera mano | 2027-07-06 → 2027-07-21 (+15d) | 2027-07-16 → 2027-08-04 (+19d) | 8d → 10d | 19.4d → -8.7d | resources Dummy [0.05 h] → Dummy [0.06 h] |
| A27020 | Estructura cielo rasos | 2027-07-16 → 2027-08-04 (+19d) | 2027-07-29 → 2027-08-19 (+21d) | 8d → 10d | 19.4d → -8.7d | resources Dummy [0.01 h] → Dummy [0.02 h] |
| A27030 | Dinteles borde losa | 2027-07-29 → 2027-08-19 (+21d) | 2027-08-10 → 2027-09-02 (+23d) | 8d → 10d | 19.4d → -8.7d | resources Dummy [0.01 h] → Dummy [0.02 h] |
| A27040 | Inst lamina y pintura cielos rasos u muros | 2027-08-10 → 2027-09-02 (+23d) | 2027-08-23 → 2027-09-16 (+24d) | 8d → 10d | 95.4d → -8.7d | resources Dummy [0.01 h] → Dummy [0.02 h] |
| A27050 | Segunda mano | 2027-08-23 → 2027-09-16 (+24d) | 2027-09-02 → 2027-09-30 (+28d) | 8d → 10d | 95.4d → -8.7d | resources Dummy [0.01 h] → Dummy [0.02 h] |
| A27060 | Ceramina y guarda escobas | 2027-09-02 → 2027-09-30 (+28d) | 2027-09-14 → 2027-10-14 (+30d) | 8d → 10d | 95.4d → -8.7d | resources Dummy [0.01 h] → Dummy [0.02 h] |
| A27070 | Instalacion materas | 2027-09-14 → 2027-10-14 (+30d) | 2027-09-24 → 2027-10-29 (+35d) | 8d → 10d | 95.4d → -8.7d |  |
| A27080 | Inst cableado elec-com | 2027-09-24 → 2027-10-29 (+35d) | 2027-10-06 → 2027-11-16 (+41d) | 8d → 10d | 95.4d → -8.7d |  |
| A27090 | Inst apa elec-com | 2027-10-06 → 2027-11-16 (+41d) | 2027-10-19 → 2027-11-30 (+42d) | 8d → 10d | 95.4d → -8.7d |  |
| A27100 | Carpinteria metalica | 2027-10-19 → 2027-11-30 (+42d) | 2027-10-29 → 2027-12-15 (+47d) | 8d → 10d | 95.4d → 62d | resources Dummy [0.02 h] → Dummy [0.03 h] |
| A27110 | Tercera mano | 2027-10-14 → 2027-11-30 (+47d) | 2027-10-27 → 2027-12-15 (+49d) | 8d → 10d | 95.4d → 62d |  |
| A27120 | Detallado PF | 2027-10-21 → 2027-12-09 (+49d) | 2027-11-03 → 2027-12-23 (+50d) | 8d → 10d | 95.4d → 62d | resources Dummy [0.02 h] → Dummy [0.03 h] |
| A27130 | Aseo | 2027-11-03 → 2027-12-23 (+50d) | 2027-11-16 → 2028-01-24 (+69d) | 8d → 10d | 95.4d → 62d | resources Dummy [0.01 h] → Dummy [0.02 h] |

| ID | Task | Start | Finish | Duration | Total float | Other |
| --- | --- | --- | --- | --- | --- | --- |
| P13 | **Piso 13** | 2027-08-03 → 2027-08-26 (+23d) | 2027-12-14 → 2028-02-28 (+76d) |  |  |  |
| A27140 | Estuco y primera mano | 2027-08-03 → 2027-08-26 (+23d) | 2027-08-13 → 2027-09-09 (+27d) | 8d → 10d | 19.4d → 0d | resources Dummy [0.05 h] → Dummy [0.06 h] |
| A27150 | Estructura cielo rasos | 2027-08-13 → 2027-09-09 (+27d) | 2027-08-26 → 2027-09-23 (+28d) | 8d → 10d | 19.4d → 0d | resources Dummy [0.01 h] → Dummy [0.02 h] |
| A27160 | Dinteles borde losa | 2027-08-26 → 2027-09-23 (+28d) | 2027-09-07 → 2027-10-07 (+30d) | 8d → 10d | 19.4d → 0d | resources Dummy [0.01 h] → Dummy [0.02 h] |
| A27170 | Inst lamina y pintura cielos rasos u muros | 2027-09-07 → 2027-10-07 (+30d) | 2027-09-17 → 2027-10-22 (+35d) | 8d → 10d | 76.4d → 37d | resources Dummy [0.01 h] → Dummy [0.02 h] |
| A27180 | Segunda mano | 2027-09-17 → 2027-10-22 (+35d) | 2027-09-29 → 2027-11-08 (+40d) | 8d → 10d | 76.4d → 37d | resources Dummy [0.01 h] → Dummy [0.02 h] |
| A27190 | Ceramina y guarda escobas | 2027-09-29 → 2027-11-08 (+40d) | 2027-10-11 → 2027-11-23 (+43d) | 8d → 10d | 76.4d → 37d | resources Dummy [0.01 h] → Dummy [0.02 h] |
| A27200 | Instalacion materas | 2027-10-11 → 2027-11-23 (+43d) | 2027-10-22 → 2027-12-07 (+46d) | 8d → 10d | 76.4d → 37d |  |
| A27210 | Inst cableado elec-com | 2027-10-22 → 2027-12-07 (+46d) | 2027-11-04 → 2027-12-22 (+48d) | 8d → 10d | 76.4d → 37d |  |
| A27220 | Inst apa elec-com | 2027-11-04 → 2027-12-22 (+48d) | 2027-11-17 → 2028-01-21 (+65d) | 8d → 10d | 76.4d → 37d |  |
| A27230 | Carpinteria metalica | 2027-11-17 → 2028-01-21 (+65d) | 2027-11-29 → 2028-02-04 (+67d) | 8d → 10d | 76.4d → 37d | resources Dummy [0.02 h] → Dummy [0.03 h] |
| A27240 | Tercera mano | 2027-11-12 → 2028-01-21 (+70d) | 2027-11-25 → 2028-02-04 (+71d) | 8d → 10d | 76.4d → 37d |  |
| A27250 | Detallado PF | 2027-11-19 → 2028-01-31 (+73d) | 2027-12-01 → 2028-02-14 (+75d) | 8d → 10d | 76.4d → 37d | resources Dummy [0.02 h] → Dummy [0.03 h] |
| A27260 | Aseo | 2027-12-01 → 2028-02-14 (+75d) | 2027-12-14 → 2028-02-28 (+76d) | 8d → 10d | 76.4d → 37d | resources Dummy [0.01 h] → Dummy [0.02 h] |
| P14 | **Piso 14** | 2027-08-31 → 2027-09-30 (+30d) | 2028-01-26 → 2028-02-25 (+30d) |  |  |  |
| A27270 | Estuco y primera mano | 2027-08-31 → 2027-09-30 (+30d) | 2027-09-10 → 2027-10-12 (+32d) |  | 19.4d → 0d |  |
| A27280 | Estructura cielo rasos | 2027-09-10 → 2027-10-12 (+32d) | 2027-09-22 → 2027-10-25 (+33d) |  | 19.4d → 0d |  |
| A27290 | Dinteles borde losa | 2027-09-22 → 2027-10-25 (+33d) | 2027-10-04 → 2027-11-05 (+32d) |  | 19.4d → 0d |  |
| A27300 | Inst lamina y pintura cielos rasos u muros | 2027-10-04 → 2027-11-05 (+32d) | 2027-10-14 → 2027-11-18 (+35d) |  | 57.4d → 38d |  |
| A27310 | Segunda mano | 2027-10-14 → 2027-11-18 (+35d) | 2027-10-27 → 2027-11-30 (+34d) |  | 57.4d → 38d |  |
| A27320 | Ceramina y guarda escobas | 2027-10-27 → 2027-11-30 (+34d) | 2027-11-09 → 2027-12-13 (+34d) |  | 57.4d → 38d |  |
| A27330 | Instalacion materas | 2027-11-09 → 2027-12-13 (+34d) | 2027-11-22 → 2027-12-23 (+31d) |  | 57.4d → 38d |  |
| A27340 | Inst cableado elec-com | 2027-11-22 → 2027-12-23 (+31d) | 2027-12-02 → 2028-01-20 (+49d) |  | 57.4d → 38d |  |
| A27350 | Inst apa elec-com | 2027-12-02 → 2028-01-20 (+49d) | 2027-12-15 → 2028-02-01 (+48d) |  | 57.4d → 38d |  |
| A27370 | Tercera mano | 2027-12-13 → 2028-01-28 (+46d) | 2027-12-23 → 2028-02-09 (+48d) |  | 57.4d → 38d |  |
| A27360 | Carpinteria metalica | 2027-12-15 → 2028-02-01 (+48d) | 2028-01-12 → 2028-02-11 (+30d) |  | 57.4d → 38d |  |
| A27380 | Detallado PF | 2027-12-17 → 2028-02-03 (+48d) | 2028-01-14 → 2028-02-15 (+32d) |  | 57.4d → 38d |  |
| A27390 | Aseo | 2028-01-14 → 2028-02-15 (+32d) | 2028-01-26 → 2028-02-25 (+30d) |  | 57.4d → 38d |  |
| P15 | **Piso 15** | 2027-09-27 → 2027-10-28 (+31d) | 2028-02-22 → 2028-03-24 (+31d) |  |  |  |
| A27400 | Estuco y primera mano | 2027-09-27 → 2027-10-28 (+31d) | 2027-10-07 → 2027-11-10 (+34d) |  | 19.4d → 0d |  |
| A27410 | Estructura cielo rasos | 2027-10-07 → 2027-11-10 (+34d) | 2027-10-20 → 2027-11-23 (+34d) |  | 19.4d → 0d |  |
| A27420 | Dinteles borde losa | 2027-10-20 → 2027-11-23 (+34d) | 2027-11-02 → 2027-12-03 (+31d) |  | 19.4d → 0d |  |
| A27430 | Inst lamina y pintura cielos rasos u muros | 2027-11-02 → 2027-12-03 (+31d) | 2027-11-12 → 2027-12-16 (+34d) |  | 38.4d → 19d |  |
| A27440 | Segunda mano | 2027-11-12 → 2027-12-16 (+34d) | 2027-11-25 → 2028-01-13 (+49d) |  | 38.4d → 19d |  |
| A27450 | Ceramina y guarda escobas | 2027-11-25 → 2028-01-13 (+49d) | 2027-12-07 → 2028-01-25 (+49d) |  | 38.4d → 19d |  |
| A27460 | Instalacion materas | 2027-12-07 → 2028-01-25 (+49d) | 2027-12-20 → 2028-02-04 (+46d) |  | 38.4d → 19d |  |
| A27470 | Inst cableado elec-com | 2027-12-20 → 2028-02-04 (+46d) | 2028-01-17 → 2028-02-16 (+30d) |  | 38.4d → 19d |  |
| A27480 | Inst apa elec-com | 2028-01-17 → 2028-02-16 (+30d) | 2028-01-27 → 2028-02-28 (+32d) |  | 38.4d → 19d |  |
| A27500 | Tercera mano | 2028-01-25 → 2028-02-24 (+30d) | 2028-02-04 → 2028-03-07 (+32d) |  | 38.4d → 19d |  |
| A27490 | Carpinteria metalica | 2028-01-27 → 2028-02-28 (+32d) | 2028-02-08 → 2028-03-09 (+30d) |  | 38.4d → 19d |  |
| A27510 | Detallado PF | 2028-01-31 → 2028-03-01 (+30d) | 2028-02-10 → 2028-03-13 (+32d) |  | 38.4d → 19d |  |
| A27520 | Aseo | 2028-02-10 → 2028-03-13 (+32d) | 2028-02-22 → 2028-03-24 (+31d) |  | 38.4d → 19d |  |
| P16 | **Piso 16** | 2027-10-25 → 2027-11-26 (+32d) | 2028-03-21 → 2028-04-27 (+37d) |  |  |  |
| A27530 | Estuco y primera mano | 2027-10-25 → 2027-11-26 (+32d) | 2027-11-05 → 2027-12-09 (+34d) |  | 19.4d → 0d |  |
| A27540 | Estructura cielo rasos | 2027-11-05 → 2027-12-09 (+34d) | 2027-11-18 → 2027-12-21 (+33d) |  | 19.4d → 0d |  |
| A27550 | Dinteles borde losa | 2027-11-18 → 2027-12-21 (+33d) | 2027-11-30 → 2028-01-18 (+49d) |  | 19.4d → 0d |  |
| A27560 | Inst lamina y pintura cielos rasos u muros | 2027-11-30 → 2028-01-18 (+49d) | 2027-12-13 → 2028-01-28 (+46d) |  | 19.4d → 0d |  |
| A27570 | Segunda mano | 2027-12-13 → 2028-01-28 (+46d) | 2027-12-23 → 2028-02-09 (+48d) |  | 19.4d → 0d |  |
| A27580 | Ceramina y guarda escobas | 2027-12-23 → 2028-02-09 (+48d) | 2028-01-20 → 2028-02-21 (+32d) |  | 19.4d → 0d |  |
| A27590 | Instalacion materas | 2028-01-20 → 2028-02-21 (+32d) | 2028-02-01 → 2028-03-02 (+30d) |  | 19.4d → 0d |  |
| A27600 | Inst cableado elec-com | 2028-02-01 → 2028-03-02 (+30d) | 2028-02-11 → 2028-03-14 (+32d) |  | 19.4d → 0d |  |
| A27610 | Inst apa elec-com | 2028-02-11 → 2028-03-14 (+32d) | 2028-02-23 → 2028-03-27 (+33d) |  | 19.4d → 0d |  |
| A27630 | Tercera mano | 2028-02-21 → 2028-03-23 (+31d) | 2028-03-02 → 2028-04-04 (+33d) |  | 19.4d → 0d |  |
| A27620 | Carpinteria metalica | 2028-02-23 → 2028-03-27 (+33d) | 2028-03-06 → 2028-04-06 (+31d) |  | 19.4d → 0d |  |
| A27640 | Detallado PF | 2028-02-25 → 2028-03-29 (+33d) | 2028-03-08 → 2028-04-17 (+40d) |  | 19.4d → 0d |  |
| A27650 | Aseo | 2028-03-08 → 2028-04-17 (+40d) | 2028-03-21 → 2028-04-27 (+37d) |  | 19.4d → 0d |  |
| 12ASC | **09. Ascensor** | 2027-04-01 → 2027-01-15 (-76d) | 2028-02-07 → 2027-11-10 (-89d) |  |  |  |
| 01Fos | **01. Foso** | 2027-04-01 → 2027-01-15 (-76d) | 2027-11-24 → 2027-09-13 (-72d) |  |  |  |
| A14030 | Resane interno foso | 2027-04-01 → 2027-01-15 (-76d) | 2027-04-29 → 2027-02-12 (-76d) |  | 49.9d → 34.15d |  |
| A14040 | Mochetas y dinteles entrada de ascensores | 2027-04-29 → 2027-02-12 (-76d) | 2027-05-28 → 2027-03-12 (-77d) |  | 49.9d → 34.15d |  |
| A14050 | Pintura blanca foso | 2027-05-28 → 2027-03-12 (-77d) | 2027-06-29 → 2027-04-16 (-74d) |  | 49.9d → 34.15d |  |
| A14060 | Inst. electricas | 2027-06-29 → 2027-04-16 (-74d) | 2027-07-29 → 2027-05-17 (-73d) |  | 49.9d → 34.15d |  |
| A14070 | Impermeabilizacion de PIT | 2027-07-29 → 2027-05-17 (-73d) | 2027-08-27 → 2027-06-16 (-72d) |  | 49.9d → 34.15d |  |
| A14080 | Montaje plataforma de proteccion foso | 2027-08-27 → 2027-06-16 (-72d) | 2027-09-24 → 2027-07-15 (-71d) |  | 49.9d → 34.15d |  |
| A14090 | Verificaciones generales de foso | 2027-09-24 → 2027-07-15 (-71d) | 2027-10-25 → 2027-08-13 (-73d) |  | 49.9d → 34.15d |  |
| A14100 | Punto de elevacion de carga y certificado de capacidad | 2027-10-25 → 2027-08-13 (-73d) | 2027-11-24 → 2027-09-13 (-72d) |  | 49.9d → 34.15d |  |
| 02Inst_Asc | **02. Instalacion Ascensor** | 2027-11-24 → 2027-09-13 (-72d) | 2028-02-07 → 2027-11-10 (-89d) |  |  |  |
| A14110 | Inst. vigas y rieles fosos | 2027-11-24 → 2027-09-13 (-72d) | 2027-12-01 → 2027-09-20 (-72d) |  | 49.9d → 34.15d |  |
| A14120 | Izaje de cabina de ascensores | 2027-12-01 → 2027-09-20 (-72d) | 2027-12-09 → 2027-09-27 (-73d) |  | 49.9d → 100.85d |  |
| A14130 | Inst. marcos entrada | 2027-12-09 → 2027-09-27 (-73d) | 2027-12-16 → 2027-10-04 (-73d) |  | 49.9d → 100.85d |  |

| ID | Task | Start | Finish | Total float | Predecessors |
| --- | --- | --- | --- | --- | --- |
| A14140 | Entradas en superboard | 2027-12-16 → 2027-10-04 (-73d) | 2027-12-23 → 2027-10-11 (-73d) | 49.9d → 100.85d |  |
| A14150 | Inst. accesorios de cabina y cables traccion | 2027-12-23 → 2027-10-11 (-73d) | 2028-01-17 → 2027-10-19 (-90d) | 49.9d → 100.85d |  |
| A14160 | Inst. elementos en el pozo y PIT | 2028-01-17 → 2027-10-19 (-90d) | 2028-01-24 → 2027-10-26 (-90d) | 49.9d → 100.85d |  |
| A14170 | Acabados, aseo y pint. general | 2028-01-24 → 2027-10-26 (-90d) | 2028-01-31 → 2027-11-03 (-89d) | 49.9d → 100.85d |  |
| A14180 | Inspeccion general de instalacion | 2028-01-31 → 2027-11-03 (-89d) | 2028-02-07 → 2027-11-10 (-89d) | 49.9d → 100.85d |  |
| 13CAL | **10. Entregas Calidad** | 2028-02-21 → 2027-12-06 (-77d) | 2028-04-24 → 2028-03-01 (-54d) |  |  |
| P03 | **Piso 03** | 2028-02-21 → 2027-12-06 (-77d) | 2028-03-10 → 2028-01-12 (-58d) |  |  |
| A14250 | Aseo Final | 2028-02-21 → 2027-12-06 (-77d) | 2028-02-25 → 2027-12-13 (-74d) | 25d → 69.7d | A1530, A22080 → A1530 FS-10d, A22080 |
| A14260 | Entrega a Calidad para Observaciones | 2028-03-06 → 2027-12-21 (-76d) | 2028-03-10 → 2028-01-12 (-58d) | 25d → 69.7d |  |
| P04 | **Piso 04** | 2028-02-21 → 2027-12-06 (-77d) | 2028-03-17 → 2028-01-19 (-58d) |  |  |
| A14270 | Aseo Final | 2028-02-21 → 2027-12-06 (-77d) | 2028-03-03 → 2027-12-20 (-74d) | 20d → 64.7d | A1530, A22120 → A1530 FS-10d, A22120 |
| A14280 | Entrega a Calidad para Observaciones | 2028-03-06 → 2027-12-21 (-76d) | 2028-03-17 → 2028-01-19 (-58d) | 20d → 64.7d |  |
| P05 | **Piso 05** | 2028-02-21 → 2027-12-06 (-77d) | 2028-03-27 → 2028-01-26 (-61d) |  |  |
| A14290 | Aseo Final | 2028-02-21 → 2027-12-06 (-77d) | 2028-03-03 → 2027-12-20 (-74d) | 15d → 59.7d | A1530, A22140 → A1530 FS-10d, A22140 |
| A14300 | Entrega a Calidad para Observaciones | 2028-03-13 → 2028-01-13 (-60d) | 2028-03-27 → 2028-01-26 (-61d) | 15d → 59.7d |  |
| P06 | **Piso 06** | 2028-02-21 → 2027-12-06 (-77d) | 2028-03-30 → 2028-01-31 (-59d) |  |  |
| A14310 | Aseo Final | 2028-02-21 → 2027-12-06 (-77d) | 2028-03-03 → 2027-12-20 (-74d) | 12d → 56.7d | A1530, A22160 → A1530 FS-10d, A22160 |
| A14320 | Entrega a Calidad para Observaciones | 2028-03-16 → 2028-01-18 (-58d) | 2028-03-30 → 2028-01-31 (-59d) | 12d → 56.7d |  |
| P07 | **Piso 07** | 2028-02-21 → 2027-12-21 (-62d) | 2028-04-05 → 2028-02-18 (-47d) |  |  |
| A14330 | Aseo Final | 2028-02-21 → 2027-12-21 (-62d) | 2028-03-03 → 2028-01-19 (-44d) | 8d → 42.7d | A1530, A22180 → A1530, A22180 FS-10d |
| A14340 | Entrega a Calidad para Observaciones | 2028-03-23 → 2028-02-07 (-45d) | 2028-04-05 → 2028-02-18 (-47d) | 8d → 42.7d |  |
| P08 | **Piso 08** | 2028-02-21 → 2027-12-06 (-77d) | 2028-03-17 → 2028-01-19 (-58d) |  |  |
| A14350 | Aseo Final | 2028-02-21 → 2027-12-06 (-77d) | 2028-03-03 → 2027-12-20 (-74d) | 20d → 64.7d | A22200, A1530 → A1530 FS-10d, A22200 |
| A14360 | Entrega a Calidad para Observaciones | 2028-03-06 → 2027-12-21 (-76d) | 2028-03-17 → 2028-01-19 (-58d) | 20d → 64.7d |  |
| P09 | **Piso 09** | 2028-02-21 → 2027-12-06 (-77d) | 2028-03-17 → 2028-01-19 (-58d) |  |  |
| A14370 | Aseo Final | 2028-02-21 → 2027-12-06 (-77d) | 2028-03-03 → 2027-12-20 (-74d) | 20d → 64.7d | A1530, A22220 FS+5d → A1530 FS-10d, A22220 FS+5d |
| A14380 | Entrega a Calidad para Observaciones | 2028-03-06 → 2027-12-21 (-76d) | 2028-03-17 → 2028-01-19 (-58d) | 20d → 64.7d |  |
| P10 | **Piso 10** | 2028-02-21 → 2027-12-07 (-76d) | 2028-03-17 → 2028-01-21 (-56d) |  |  |
| A14390 | Aseo Final | 2028-02-21 → 2027-12-07 (-76d) | 2028-03-03 → 2027-12-22 (-72d) | 20d → 63.06d | A1530, A22240 → A1530 FS-10d, A22240 |
| A14400 | Entrega a Calidad para Observaciones | 2028-03-06 → 2027-12-22 (-75d) | 2028-03-17 → 2028-01-21 (-56d) | 20d → 63.06d |  |
| P11 | **Piso 11** | 2028-02-21 → 2027-12-20 (-63d) | 2028-03-17 → 2028-02-02 (-44d) |  |  |
| A14410 | Aseo Final | 2028-02-21 → 2027-12-20 (-63d) | 2028-03-03 → 2028-01-19 (-44d) | 0d → 35.06d | A1530, A22260 FS+5d → A1530 FS-10d, A22260 FS+5d |
| A14420 | Entrega a Calidad para Observaciones | 2028-03-06 → 2028-01-19 (-47d) | 2028-03-17 → 2028-02-02 (-44d) | 20d → 55.06d |  |
| P12 | **Piso 12** | 2028-03-06 → 2028-01-19 (-47d) | 2028-03-17 → 2028-02-02 (-44d) |  |  |
| A14430 | Aseo Final | 2028-03-06 → 2028-01-19 (-47d) | 2028-03-10 → 2028-01-26 (-44d) | 0d → 35.06d | A1530, A14410 → A1530 FS-10d, A14410 |
| A14440 | Entrega a Calidad para Observaciones | 2028-03-13 → 2028-01-26 (-47d) | 2028-03-17 → 2028-02-02 (-44d) | 20d → 55.06d |  |
| P13 | **Piso 13** | 2028-03-13 → 2028-01-26 (-47d) | 2028-03-27 → 2028-02-09 (-47d) |  |  |
| A14450 | Aseo Final | 2028-03-13 → 2028-01-26 (-47d) | 2028-03-17 → 2028-02-02 (-44d) | 0d → 35.06d | A14430, A1530 → A1530 FS-10d, A14430 |
| A14460 | Entrega a Calidad para Observaciones | 2028-03-21 → 2028-02-02 (-48d) | 2028-03-27 → 2028-02-09 (-47d) | 15d → 50.06d |  |
| P14 | **Piso 14** | 2028-03-21 → 2028-02-02 (-48d) | 2028-04-03 → 2028-02-16 (-47d) |  |  |
| A14470 | Aseo Final | 2028-03-21 → 2028-02-02 (-48d) | 2028-03-27 → 2028-02-09 (-47d) | 0d → 35.06d | A1530, A14450 → A1530 FS-10d, A14450 |
| A14480 | Entrega a Calidad para Observaciones | 2028-03-28 → 2028-02-09 (-48d) | 2028-04-03 → 2028-02-16 (-47d) | 10d → 45.06d |  |
| P15 | **Piso 15** | 2028-03-28 → 2028-02-09 (-48d) | 2028-04-24 → 2028-03-01 (-54d) |  |  |
| A14490 | Aseo Final | 2028-03-28 → 2028-02-09 (-48d) | 2028-04-03 → 2028-02-16 (-47d) | 0d → 35.06d | A1530, A14470 → A1530 FS-10d, A14470 |
| A14500 | Entrega a Calidad para Observaciones | 2028-04-18 → 2028-02-23 (-55d) | 2028-04-24 → 2028-03-01 (-54d) | 0d → 35.06d |  |
| P16 | **Piso 16** | 2028-04-04 → 2028-02-16 (-48d) | 2028-04-24 → 2028-03-01 (-54d) |  |  |
| A14510 | Aseo Final | 2028-04-04 → 2028-02-16 (-48d) | 2028-04-17 → 2028-02-23 (-54d) | 0d → 35.06d | A1530, A14490 → A1530 FS-10d, A14490 |
| A14520 | Entrega a Calidad para Observaciones | 2028-04-18 → 2028-02-23 (-55d) | 2028-04-24 → 2028-03-01 (-54d) | 0d → 35.06d |  |
| 14CTO | **11.CTO** | 2027-01-26 → 2026-11-26 (-61d) | 2027-02-09 → 2026-12-11 (-60d) |  |  |
| A14190 | Inicio CTO | 2027-01-26 → 2026-11-26 (-61d) | 2027-02-02 → 2026-12-03 (-61d) | 281.9d → 312.85d |  |
| A14200 | Entrega CTO | 2027-02-02 → 2026-12-03 (-61d) | 2027-02-09 → 2026-12-11 (-60d) | 281.9d → 312.85d |  |
